# CPMEIProjects-Temp

Schedule from MS Project, 2009-07-01 to 2009-07-22.
Aurovision

## Calendars

- Standard: Mon-Fri 08:00-12:00, 13:00-17:00; Sat-Sun off.

## Resources

| Resource | Unit |
| --- | --- |
| Project Manager |  |
| Business Analyst |  |
| Developer |  |
| Tester |  |
| Content Writer |  |
| Configuration Manager |  |
| Client |  |
| Backup Tapes | PCS |
| Test Server |  |
| Architect |  |
| Tech Lead |  |
| Program Manager |  |
| Peer Developer |  |
| System Admin |  |
| Auditor |  |
| Project Team |  |

## Schedule

| ID | WBS | Task | Duration | Start | Finish | Predecessors | Total slack | Free slack | Resources | Work |
| --- | --- | --- | --- | --- | --- | --- | --- | --- | --- | --- |
| 1 | 1 | **WebPortal** | 15d? | 2009-07-01 10:00 | 2009-07-22 10:00 |  | 0d |  |  | 314h |
| 2 | 1.1 | **Project Management** | 4.25d | 2009-07-01 10:00 | 2009-07-07 12:00 |  | 0d |  |  | 98h |
| 3 | 1.1.1 | Project Kickoff | 1d | 2009-07-01 10:00 | 2009-07-02 10:00 |  | 0d |  | Project Manager; Project Team [800%] | 72h |
| 4 | 1.1.2 | Estimation Size/Efforts | 0.5d | 2009-07-02 10:00 | 2009-07-02 15:00 | 3 | 10.75d | 0d | Project Manager | 4h |
| 5 | 1.1.3 | Review Estimate | 0.25d | 2009-07-02 15:00 | 2009-07-02 17:00 | 4 | 10.75d | 0d | Program Manager | 2h |
| 6 | 1.1.4 | Develop Project Schedule | 0.5d | 2009-07-03 08:00 | 2009-07-03 12:00 | 5 | 10.75d | 0d | Project Manager | 4h |
| 7 | 1.1.5 | Develop Project Plan | 1d | 2009-07-03 13:00 | 2009-07-06 12:00 | 6 | 10.75d | 0d | Project Manager | 8h |
| 8 | 1.1.6 | Review Project Plan | 1d | 2009-07-06 13:00 | 2009-07-07 12:00 | 7 | 10.75d |  | Program Manager | 8h |
| 9 | 1.2 | **Software Engineering** | 14d? | 2009-07-02 10:00 | 2009-07-22 10:00 |  | 0d |  |  | 192h |
| 10 | 1.2.1 | Develop SRS | 8d? | 2009-07-02 10:00 | 2009-07-14 10:00 | 3 | 0d |  | Business Analyst | 64h |
| 11 | 1.2.2 | Review & Approve Requirements | 1d? | 2009-07-16 10:00 | 2009-07-17 10:00 | 10FS+2d | 3d |  | Client [0.1%] |  |
| 12 | 1.2.3 | Develop Architecture | 4d? | 2009-07-10 10:00 | 2009-07-16 10:00 | 10FS-2d | 0d |  | Architect | 32h |
| 13 | 1.2.4 | Develop Design | 6d? | 2009-07-14 10:00 | 2009-07-22 10:00 | 12SS+2d | 0d |  | Architect; Tech Lead | 96h |
| 14 | 1.3 | **Support Activity** | 1.5d? | 2009-07-01 10:00 | 2009-07-02 15:00 |  | 13.5d |  |  | 24h |
| 15 | 1.3.1 | Setup Development Environment | 1d? | 2009-07-01 10:00 | 2009-07-02 10:00 |  | 14d |  | System Admin | 8h |
| 16 | 1.3.2 | Acqiuire Test Server | 1d? | 2009-07-01 10:00 | 2009-07-02 10:00 |  | 13.5d | 0d | Project Manager; Test Server [0.1%] | 8h |
| 17 | 1.3.3 | Setup Testing Environment | 0.5d? | 2009-07-02 10:00 | 2009-07-02 15:00 | 16 | 13.5d |  | Tester; System Admin | 8h |
