# CPMEIProjects-Temp

Schedule from MS Project, 2009-07-01 to 2009-08-19.
Aurovision

## Calendars

- Standard: Mon-Fri 08:00-12:00, 13:00-17:00; Sat-Sun off.

## Resources

| Resource | Unit |
| --- | --- |
| Project Manager |  |
| Business Analyst |  |
| Developer |  |
| Tester |  |
| Content Writer |  |
| Configuration Manager |  |
| Client |  |
| Backup Tapes | PCS |
| Test Server |  |
| Architect |  |
| Tech Lead |  |
| Program Manager |  |
| Peer Developer |  |
| System Admin |  |
| Auditor |  |
| Project Team |  |

## Schedule

| ID | WBS | Task | Duration | Start | Finish | Total slack | Constraint | Resources | Work |
| --- | --- | --- | --- | --- | --- | --- | --- | --- | --- |
| 1 | 1 | **WebPortal** | 35d | 2009-07-01 10:00 | 2009-08-19 10:00 | 0d |  |  | 122h |
| 2 | 1.1 | **Monitor & Control** | 35d | 2009-07-01 10:00 | 2009-08-19 10:00 | 0d |  |  | 114h |
| 3 | 1.1.1 | **Weekly Review with Program Manager** | 10.25d | 2009-07-06 10:00 | 2009-07-20 12:00 | 21.75d |  |  | 18h |
| 4 | 1.1.1.1 | Weekly Review with Program Manager 1 | 2h | 2009-07-06 10:00 | 2009-07-06 12:00 | 31.75d | start no earlier than 2009-07-06 10:00 | Project Manager; Tech Lead; Program Manager | 6h |
| 5 | 1.1.1.2 | Weekly Review with Program Manager 2 | 2h | 2009-07-13 10:00 | 2009-07-13 12:00 | 26.75d | start no earlier than 2009-07-13 10:00 | Project Manager; Tech Lead; Program Manager | 6h |
| 6 | 1.1.1.3 | Weekly Review with Program Manager 3 | 2h | 2009-07-20 10:00 | 2009-07-20 12:00 | 21.75d | start no earlier than 2009-07-20 10:00 | Project Manager; Tech Lead; Program Manager | 6h |
| 7 | 1.1.2 | **Biweeklyy Review with Customer** | 31d | 2009-07-07 10:00 | 2009-08-19 10:00 | 0d |  |  | 64h |
| 8 | 1.1.2.1 | Fortnightly Review with Customer 1 | 1d | 2009-07-07 10:00 | 2009-07-08 10:00 | 30d | start no earlier than 2009-07-07 10:00 | Project Manager; Program Manager; Client [0.1%] | 16h |
| 9 | 1.1.2.2 | Fortnightly Review with Customer 2 | 1d | 2009-07-21 10:00 | 2009-07-22 10:00 | 20d | start no earlier than 2009-07-21 10:00 | Project Manager; Program Manager; Client [0.1%] | 16h |
| 10 | 1.1.2.3 | Fortnightly Review with Customer 3 | 1d | 2009-08-04 10:00 | 2009-08-05 10:00 | 10d | start no earlier than 2009-08-04 10:00 | Project Manager; Program Manager; Client [0.1%] | 16h |
| 11 | 1.1.2.4 | Fortnightly Review with Customer 4 | 1d | 2009-08-18 10:00 | 2009-08-19 10:00 | 0d | start no earlier than 2009-08-18 10:00 | Project Manager; Program Manager; Client [0.1%] | 16h |
| 12 | 1.1.3 | **Monthly Process Quality Audit** | 26d | 2009-07-01 10:00 | 2009-08-06 10:00 | 9d |  |  | 32h |
| 13 | 1.1.3.1 | Monthly Process Quality Audit 1 | 1d | 2009-07-01 10:00 | 2009-07-02 10:00 | 34d | start no earlier than 2009-07-01 10:00 | Project Manager; Auditor | 16h |
| 14 | 1.1.3.2 | Monthly Process Quality Audit 2 | 1d | 2009-08-05 10:00 | 2009-08-06 10:00 | 9d | start no earlier than 2009-08-05 10:00 | Project Manager; Auditor | 16h |
| 15 | 1.2 | **Support Activity** | 15.25d | 2009-07-03 10:00 | 2009-07-24 12:00 | 17.75d |  |  | 8h |
| 16 | 1.2.1 | **Regular Back & Archival** | 15.25d | 2009-07-03 10:00 | 2009-07-24 12:00 | 17.75d |  |  | 8h |
| 17 | 1.2.1.1 | Regular Back & Archival 1 | 2h | 2009-07-03 10:00 | 2009-07-03 12:00 | 32.75d | start no earlier than 2009-07-03 10:00 | System Admin; Backup Tapes [1 PCS] | 2h |
| 18 | 1.2.1.2 | Regular Back & Archival 2 | 2h | 2009-07-10 10:00 | 2009-07-10 12:00 | 27.75d | start no earlier than 2009-07-10 10:00 | System Admin; Backup Tapes [1 PCS] | 2h |
| 19 | 1.2.1.3 | Regular Back & Archival 3 | 2h | 2009-07-17 10:00 | 2009-07-17 12:00 | 22.75d | start no earlier than 2009-07-17 10:00 | System Admin; Backup Tapes [1 PCS] | 2h |
| 20 | 1.2.1.4 | Regular Back & Archival 4 | 2h | 2009-07-24 10:00 | 2009-07-24 12:00 | 17.75d | start no earlier than 2009-07-24 10:00 | System Admin; Backup Tapes [1 PCS] | 2h |
