# CPMEIProjects-Temp

Schedule from MS Project, 2009-07-01 to 2009-08-19.
Aurovision

## Calendars

- Standard: Mon-Fri 08:00-12:00, 13:00-17:00; Sat-Sun off.

## Resources

| Resource | Unit |
| --- | --- |
| Project Manager |  |
| Business Analyst |  |
| Developer |  |
| Tester |  |
| Content Writer |  |
| Configuration Manager |  |
| Client |  |
| Backup Tapes | PCS |
| Test Server |  |
| Architect |  |
| Tech Lead |  |
| Program Manager |  |
| Peer Developer |  |
| System Admin |  |
| Auditor |  |
| Project Team |  |

## Schedule

| ID | WBS | Task | Duration | Start | Finish | Predecessors | Total slack | Free slack | Constraint | Resources | Work |
| --- | --- | --- | --- | --- | --- | --- | --- | --- | --- | --- | --- |
| 1 | 1 | **WebPortal** | 35d? | 2009-07-01 10:00 | 2009-08-19 10:00 |  | 0d |  |  |  | 436h |
| 2 | 1.1 | **Project Management** | 4.25d | 2009-07-01 10:00 | 2009-07-07 12:00 |  | 20d |  |  |  | 98h |
| 3 | 1.1.1 | Project Kickoff | 1d | 2009-07-01 10:00 | 2009-07-02 10:00 |  | 20d | 0d |  | Project Manager; Project Team [800%] | 72h |
| 4 | 1.1.2 | Estimation Size/Efforts | 0.5d | 2009-07-02 10:00 | 2009-07-02 15:00 | 3 | 30.75d | 0d |  | Project Manager | 4h |
| 5 | 1.1.3 | Review Estimate | 0.25d | 2009-07-02 15:00 | 2009-07-02 17:00 | 4 | 30.75d | 0d |  | Program Manager | 2h |
| 6 | 1.1.4 | Develop Project Schedule | 0.5d | 2009-07-03 08:00 | 2009-07-03 12:00 | 5 | 30.75d | 0d |  | Project Manager | 4h |
| 7 | 1.1.5 | Develop Project Plan | 1d | 2009-07-03 13:00 | 2009-07-06 12:00 | 6 | 30.75d | 0d |  | Project Manager | 8h |
| 8 | 1.1.6 | Review Project Plan | 1d | 2009-07-06 13:00 | 2009-07-07 12:00 | 7 | 30.75d |  |  | Program Manager | 8h |
| 9 | 1.2 | **Monitor & Control** | 35d | 2009-07-01 10:00 | 2009-08-19 10:00 |  | 0d |  |  |  | 114h |
| 10 | 1.2.1 | **Weekly Review with Program Manager** | 10.25d | 2009-07-06 10:00 | 2009-07-20 12:00 |  | 21.75d |  |  |  | 18h |
| 11 | 1.2.1.1 | Weekly Review with Program Manager 1 | 2h | 2009-07-06 10:00 | 2009-07-06 12:00 |  | 31.75d |  | start no earlier than 2009-07-06 10:00 | Project Manager; Tech Lead; Program Manager | 6h |
| 12 | 1.2.1.2 | Weekly Review with Program Manager 2 | 2h | 2009-07-13 10:00 | 2009-07-13 12:00 |  | 26.75d |  | start no earlier than 2009-07-13 10:00 | Project Manager; Tech Lead; Program Manager | 6h |
| 13 | 1.2.1.3 | Weekly Review with Program Manager 3 | 2h | 2009-07-20 10:00 | 2009-07-20 12:00 |  | 21.75d |  | start no earlier than 2009-07-20 10:00 | Project Manager; Tech Lead; Program Manager | 6h |
| 14 | 1.2.2 | **Biweeklyy Review with Customer** | 31d | 2009-07-07 10:00 | 2009-08-19 10:00 |  | 0d |  |  |  | 64h |
| 15 | 1.2.2.1 | Fortnightly Review with Customer 1 | 1d | 2009-07-07 10:00 | 2009-07-08 10:00 |  | 30d |  | start no earlier than 2009-07-07 10:00 | Project Manager; Program Manager; Client [0.1%] | 16h |
| 16 | 1.2.2.2 | Fortnightly Review with Customer 2 | 1d | 2009-07-21 10:00 | 2009-07-22 10:00 |  | 20d |  | start no earlier than 2009-07-21 10:00 | Project Manager; Program Manager; Client [0.1%] | 16h |
| 17 | 1.2.2.3 | Fortnightly Review with Customer 3 | 1d | 2009-08-04 10:00 | 2009-08-05 10:00 |  | 10d |  | start no earlier than 2009-08-04 10:00 | Project Manager; Program Manager; Client [0.1%] | 16h |
| 18 | 1.2.2.4 | Fortnightly Review with Customer 4 | 1d | 2009-08-18 10:00 | 2009-08-19 10:00 |  | 0d |  | start no earlier than 2009-08-18 10:00 | Project Manager; Program Manager; Client [0.1%] | 16h |
| 19 | 1.2.3 | **Monthly Process Quality Audit** | 26d | 2009-07-01 10:00 | 2009-08-06 10:00 |  | 9d |  |  |  | 32h |
| 20 | 1.2.3.1 | Monthly Process Quality Audit 1 | 1d | 2009-07-01 10:00 | 2009-07-02 10:00 |  | 34d |  | start no earlier than 2009-07-01 10:00 | Project Manager; Auditor | 16h |
| 21 | 1.2.3.2 | Monthly Process Quality Audit 2 | 1d | 2009-08-05 10:00 | 2009-08-06 10:00 |  | 9d |  | start no earlier than 2009-08-05 10:00 | Project Manager; Auditor | 16h |
| 22 | 1.3 | **Software Engineering** | 14d? | 2009-07-02 10:00 | 2009-07-22 10:00 |  | 20d |  |  |  | 192h |
| 23 | 1.3.1 | Develop SRS | 8d? | 2009-07-02 10:00 | 2009-07-14 10:00 | 3 | 20d | 0d |  | Business Analyst | 64h |
| 24 | 1.3.2 | Review & Approve Requirements | 1d? | 2009-07-16 10:00 | 2009-07-17 10:00 | 23FS+2d | 23d |  |  | Client [0.1%] |  |
| 25 | 1.3.3 | Develop Architecture | 4d? | 2009-07-10 10:00 | 2009-07-16 10:00 | 23FS-2d | 20d | 0d |  | Architect | 32h |
| 26 | 1.3.4 | Develop Design | 6d? | 2009-07-14 10:00 | 2009-07-22 10:00 | 25SS+2d | 20d |  |  | Architect; Tech Lead | 96h |

| ID | WBS | Task | Duration | Start | Finish | Predecessors | Total slack | Free slack | Constraint | Resources | Work |
| --- | --- | --- | --- | --- | --- | --- | --- | --- | --- | --- | --- |
| 27 | 1.4 | **Support Activity** | 17.25d? | 2009-07-01 10:00 | 2009-07-24 12:00 |  | 17.75d |  |  |  | 32h |
| 28 | 1.4.1 | Setup Development Environment | 1d? | 2009-07-01 10:00 | 2009-07-02 10:00 |  | 34d |  |  | System Admin | 8h |
| 29 | 1.4.2 | **Regular Back & Archival** | 15.25d | 2009-07-03 10:00 | 2009-07-24 12:00 |  | 17.75d |  |  |  | 8h |
| 30 | 1.4.2.1 | Regular Back & Archival 1 | 2h | 2009-07-03 10:00 | 2009-07-03 12:00 |  | 32.75d |  | start no earlier than 2009-07-03 10:00 | System Admin | 2h |
| 31 | 1.4.2.2 | Regular Back & Archival 2 | 2h | 2009-07-10 10:00 | 2009-07-10 12:00 |  | 27.75d |  | start no earlier than 2009-07-10 10:00 | System Admin | 2h |
| 32 | 1.4.2.3 | Regular Back & Archival 3 | 2h | 2009-07-17 10:00 | 2009-07-17 12:00 |  | 22.75d |  | start no earlier than 2009-07-17 10:00 | System Admin | 2h |
| 33 | 1.4.2.4 | Regular Back & Archival 4 | 2h | 2009-07-24 10:00 | 2009-07-24 12:00 |  | 17.75d |  | start no earlier than 2009-07-24 10:00 | System Admin | 2h |
| 34 | 1.4.3 | Acqiuire Test Server | 1d? | 2009-07-01 10:00 | 2009-07-02 10:00 |  | 33.5d | 0d |  | Project Manager; Test Server [0.1%] | 8h |
| 35 | 1.4.4 | Setup Testing Environment | 0.5d? | 2009-07-02 10:00 | 2009-07-02 15:00 | 34 | 33.5d |  |  | Tester; System Admin | 8h |
