# CaseStudy

Schedule from MS Project, 2009-07-01 to 2009-08-25, A marks actual dates.
Aurovision

## Calendars

- Standard: Mon-Fri 08:00-12:00, 13:00-17:00; Sat-Sun off.

## Resources

| Resource | Unit |
| --- | --- |
| Project Manager |  |
| Business Analyst |  |
| Developer |  |
| Tester |  |
| Content Writer |  |
| Configuration Manager |  |
| Client |  |
| Backup Tapes | PCS |
| Test Server |  |
| Architect |  |
| Tech Lead |  |
| Program Manager |  |
| Peer Developer |  |
| System Admin |  |
| Auditor |  |
| Project Team |  |

## Schedule

| ID | WBS | Task | Type | Duration | Start | Finish | Predecessors | Complete | Remaining | Baseline start | Baseline finish | Baseline duration | Total slack | Constraint | Resources | Work | Actual work |
| --- | --- | --- | --- | --- | --- | --- | --- | --- | --- | --- | --- | --- | --- | --- | --- | --- | --- |
| 1 | 1 | **WebPortal** |  | 39d? | 2009-07-01 A | 2009-08-25 |  | 6% | 36.65d? | 2009-07-01 | 2009-08-21 | 37d? | 0d |  |  | 804h | 98h |
| 2 | 1.1 | **Project Management** |  | 5.25d? | 2009-07-01 A | 2009-07-08 |  | 81% | 1d? | 2009-07-01 | 2009-07-07 | 4.25d | 33.75d |  |  | 98h | 98h |
| 3 | 1.1.1 | Project Kickoff |  | 1d | 2009-07-01 A | 2009-07-02 A |  | 100% |  | 2009-07-01 | 2009-07-02 | 1d |  |  | Project Manager; Project Team [800%] | 72h | 72h |
| 4 | 1.1.2 | Estimation Size/Efforts |  | 0.5d | 2009-07-02 A | 2009-07-02 A | 3 | 100% |  | 2009-07-02 | 2009-07-02 | 0.5d |  |  | Project Manager | 4h | 4h |
| 5 | 1.1.3 | Review Estimate |  | 0.25d | 2009-07-02 A | 2009-07-02 A | 4 | 100% |  | 2009-07-02 | 2009-07-02 | 0.25d |  |  | Program Manager | 2h | 2h |
| 6 | 1.1.4 | Develop Project Schedule |  | 0.5d | 2009-07-03 A | 2009-07-03 A | 5 | 100% |  | 2009-07-03 | 2009-07-03 | 0.5d |  |  | Project Manager | 4h | 4h |
| 7 | 1.1.5 | Develop Project Plan |  | 1d | 2009-07-03 A | 2009-07-06 A | 6 | 100% |  | 2009-07-03 | 2009-07-06 | 1d |  |  | Project Manager | 8h | 8h |
| 8 | 1.1.6 | Review Project Plan |  | 1d | 2009-07-06 A | 2009-07-07 A | 7 | 100% |  | 2009-07-06 | 2009-07-07 | 1d |  |  | Program Manager | 8h | 8h |
| 9 | 1.1.7 | Approv Project Plan | milestone | 1d? | 2009-07-07 | 2009-07-08 | 8 |  |  |  |  |  | 31.75d |  | Client [0.1%] |  |  |
| 10 | 1.2 | **Monitor & Control** |  | 35d | 2009-07-01 | 2009-08-19 |  |  |  | 2009-07-01 | 2009-08-19 | 35d | 2d |  |  | 114h |  |
| 11 | 1.2.1 | **Weekly Review with Program Manager** |  | 10.25d | 2009-07-06 | 2009-07-20 |  |  |  | 2009-07-06 | 2009-07-20 | 10.25d | 23.75d |  |  | 18h |  |
| 12 | 1.2.1.1 | Weekly Review with Program Manager 1 |  | 2h | 2009-07-06 | 2009-07-06 |  |  |  | 2009-07-06 | 2009-07-06 | 2h | 33.75d | start no earlier than 2009-07-06 | Project Manager; Tech Lead; Program Manager | 6h |  |
| 13 | 1.2.1.2 | Weekly Review with Program Manager 2 |  | 2h | 2009-07-13 | 2009-07-13 |  |  |  | 2009-07-13 | 2009-07-13 | 2h | 28.75d | start no earlier than 2009-07-13 | Project Manager; Tech Lead; Program Manager | 6h |  |
| 14 | 1.2.1.3 | Weekly Review with Program Manager 3 |  | 2h | 2009-07-20 | 2009-07-20 |  |  |  | 2009-07-20 | 2009-07-20 | 2h | 23.75d | start no earlier than 2009-07-20 | Project Manager; Tech Lead; Program Manager | 6h |  |
| 15 | 1.2.2 | **Biweeklyy Review with Customer** |  | 31d | 2009-07-07 | 2009-08-19 |  |  |  | 2009-07-07 | 2009-08-19 | 31d | 2d |  |  | 64h |  |
| 16 | 1.2.2.1 | Fortnightly Review with Customer 1 |  | 1d | 2009-07-07 | 2009-07-08 |  |  |  | 2009-07-07 | 2009-07-08 | 1d | 32d | start no earlier than 2009-07-07 | Project Manager; Program Manager; Client [0.1%] | 16h |  |
| 17 | 1.2.2.2 | Fortnightly Review with Customer 2 |  | 1d | 2009-07-21 | 2009-07-22 |  |  |  | 2009-07-21 | 2009-07-22 | 1d | 22d | start no earlier than 2009-07-21 | Project Manager; Program Manager; Client [0.1%] | 16h |  |
| 18 | 1.2.2.3 | Fortnightly Review with Customer 3 |  | 1d | 2009-08-04 | 2009-08-05 |  |  |  | 2009-08-04 | 2009-08-05 | 1d | 12d | start no earlier than 2009-08-04 | Project Manager; Program Manager; Client [0.1%] | 16h |  |
| 19 | 1.2.2.4 | Fortnightly Review with Customer 4 |  | 1d | 2009-08-18 | 2009-08-19 |  |  |  | 2009-08-18 | 2009-08-19 | 1d | 2d | start no earlier than 2009-08-18 | Project Manager; Program Manager; Client [0.1%] | 16h |  |
| 20 | 1.2.3 | **Monthly Process Quality Audit** |  | 26d | 2009-07-01 | 2009-08-06 |  |  |  | 2009-07-01 | 2009-08-06 | 26d | 11d |  |  | 32h |  |
| 21 | 1.2.3.1 | Monthly Process Quality Audit 1 |  | 1d | 2009-07-01 | 2009-07-02 |  |  |  | 2009-07-01 | 2009-07-02 | 1d | 36d | start no earlier than 2009-07-01 | Project Manager; Auditor | 16h |  |
| 22 | 1.2.3.2 | Monthly Process Quality Audit 2 |  | 1d | 2009-08-05 | 2009-08-06 |  |  |  | 2009-08-05 | 2009-08-06 | 1d | 11d | start no earlier than 2009-08-05 | Project Manager; Auditor | 16h |  |
| 23 | 1.3 | **Software Engineering** |  | 14d? | 2009-07-02 | 2009-07-22 |  |  |  | 2009-07-02 | 2009-07-22 | 14d? | 0d |  |  | 192h |  |
| 24 | 1.3.1 | Develop SRS |  | 8d? | 2009-07-02 | 2009-07-14 | 3 |  |  | 2009-07-02 | 2009-07-14 | 8d? | 0d |  | Business Analyst | 64h |  |
| 25 | 1.3.2 | Review Requirement Document |  | 1d? | 2009-07-16 | 2009-07-17 | 24FS+2d |  |  | 2009-07-16 | 2009-07-17 | 1d? | 24d |  | Client [0.1%] |  |  |
| 26 | 1.3.3 | Requirements Freezed/Approved | milestone | 1d? | 2009-07-17 | 2009-07-20 | 25 |  |  |  |  |  | 24d |  | Client [0.1%] |  |  |
| 27 | 1.3.4 | Develop Architecture |  | 4d? | 2009-07-10 | 2009-07-16 | 24FS-2d |  |  | 2009-07-10 | 2009-07-16 | 4d? | 0d |  | Architect | 32h |  |
| 28 | 1.3.5 | Develop Design |  | 6d? | 2009-07-14 | 2009-07-22 | 27SS+2d |  |  | 2009-07-14 | 2009-07-22 | 6d? | 0d |  | Architect; Tech Lead | 96h |  |
| 29 | 1.3.6 | Approve Design & Architecture | milestone | 1d? | 2009-07-16 | 2009-07-17 | 27 |  |  |  |  |  | 25d |  | Client [0.1%] |  |  |

| ID | WBS | Task | Type | Duration | Start | Finish | Predecessors | Baseline start | Baseline finish | Baseline duration | Total slack | Constraint | Resources | Work |
| --- | --- | --- | --- | --- | --- | --- | --- | --- | --- | --- | --- | --- | --- | --- |
| 30 | 1.4 | **Support Activity** |  | 19.5d? | 2009-07-01 | 2009-07-28 |  | 2009-07-01 | 2009-07-28 | 19.5d? | 13d |  |  | 32h |
| 31 | 1.4.1 | Setup Development Environment |  | 1d? | 2009-07-01 | 2009-07-02 |  | 2009-07-01 | 2009-07-02 | 1d? | 13d |  | System Admin | 8h |
| 32 | 1.4.2 | **Regular Back & Archival** |  | 15.25d | 2009-07-03 | 2009-07-24 |  | 2009-07-03 | 2009-07-24 | 15.25d | 19.75d |  |  | 8h |
| 33 | 1.4.2.1 | Regular Back & Archival 1 |  | 2h | 2009-07-03 | 2009-07-03 |  | 2009-07-03 | 2009-07-03 | 2h | 34.75d | start no earlier than 2009-07-03 | System Admin | 2h |
| 34 | 1.4.2.2 | Regular Back & Archival 2 |  | 2h | 2009-07-10 | 2009-07-10 |  | 2009-07-10 | 2009-07-10 | 2h | 29.75d | start no earlier than 2009-07-10 | System Admin | 2h |
| 35 | 1.4.2.3 | Regular Back & Archival 3 |  | 2h | 2009-07-17 | 2009-07-17 |  | 2009-07-17 | 2009-07-17 | 2h | 24.75d | start no earlier than 2009-07-17 | System Admin | 2h |
| 36 | 1.4.2.4 | Regular Back & Archival 4 |  | 2h | 2009-07-24 | 2009-07-24 |  | 2009-07-24 | 2009-07-24 | 2h | 19.75d | start no earlier than 2009-07-24 | System Admin | 2h |
| 37 | 1.4.3 | Acqiuire Test Server |  | 1d? | 2009-07-27 | 2009-07-28 | 42FS-1d | 2009-07-27 | 2009-07-28 | 1d? | 17.5d |  | Project Manager; Test Server [0.1%] | 8h |
| 38 | 1.4.4 | Setup Testing Environment |  | 0.5d? | 2009-07-28 | 2009-07-28 | 37 | 2009-07-28 | 2009-07-28 | 0.5d? | 17.5d |  | Tester; System Admin | 8h |
| 39 | 1.5 | **Agile Iterations** |  | 25d? | 2009-07-21 | 2009-08-25 |  | 2009-07-21 | 2009-08-21 | 23d? | 0d |  |  | 368h |
| 40 | 1.5.1 | **Development- Sprint1** |  | 12.5d? | 2009-07-21 | 2009-08-06 |  | 2009-07-21 | 2009-08-05 | 11.5d? | 0d |  |  | 184h |
| 41 | 1.5.1.1 | Construction-1 |  | 4d? | 2009-07-21 | 2009-07-27 | 28FS-1d, 31 | 2009-07-21 | 2009-07-27 | 4d? | 0d |  | Developer [300%] | 96h |
| 42 | 1.5.1.2 | Unit Testing-1 |  | 4d? | 2009-07-22 | 2009-07-28 | 41SS+1d | 2009-07-22 | 2009-07-28 | 4d? | 0d |  | Peer Developer | 32h |
| 43 | 1.5.1.3 | Develop a Build and Release-11 |  | 1d? | 2009-07-28 | 2009-07-29 | 42 | 2009-07-28 | 2009-07-29 | 1d? | 0d |  | Tech Lead | 8h |
| 44 | 1.5.1.4 | System Testing-1 |  | 2d? | 2009-07-29 | 2009-07-31 | 43 | 2009-07-29 | 2009-07-31 | 2d? | 0d |  | Tester | 16h |
| 45 | 1.5.1.5 | Bug Fixing-1 |  | 2d? | 2009-07-29 | 2009-07-31 | 44SS+4h | 2009-07-29 | 2009-07-31 | 2d? | 0d |  | Peer Developer | 16h |
| 46 | 1.5.1.6 | Develop a Build and Release-12 |  | 1d? | 2009-07-31 | 2009-08-03 | 45 | 2009-07-31 | 2009-08-03 | 1d? | 0d |  | Tech Lead | 8h |
| 47 | 1.5.1.7 | System Testing-1 |  | 1d? | 2009-08-03 | 2009-08-04 | 46 | 2009-08-03 | 2009-08-04 | 1d? | 0d |  | Tester | 8h |
| 48 | 1.5.1.8 | UAT-1 |  | 1d? | 2009-08-04 | 2009-08-05 | 47 | 2009-08-04 | 2009-08-05 | 1d? | 0d |  | Client [0.1%] |  |
| 49 | 1.5.1.9 | Module1 Complete | milestone | 1d? | 2009-08-05 | 2009-08-06 | 48 |  |  |  | 0d |  | Client [0.1%] |  |
| 50 | 1.5.2 | **Development- Sprint2** |  | 12.5d? | 2009-08-06 | 2009-08-25 |  | 2009-08-05 | 2009-08-21 | 11.5d? | 0d |  |  | 184h |
| 51 | 1.5.2.1 | Construction-2 |  | 4d? | 2009-08-06 | 2009-08-12 | 49, 48 | 2009-08-05 | 2009-08-11 | 4d? | 0d |  | Developer [300%] | 96h |
| 52 | 1.5.2.2 | Unit Testing-2 |  | 4d? | 2009-08-07 | 2009-08-13 | 51SS+1d | 2009-08-06 | 2009-08-12 | 4d? | 0d |  | Peer Developer | 32h |
| 53 | 1.5.2.3 | Develop a Build and Release-21 |  | 1d? | 2009-08-13 | 2009-08-14 | 52 | 2009-08-12 | 2009-08-13 | 1d? | 0d |  | Tech Lead | 8h |
| 54 | 1.5.2.4 | System Testing-2 |  | 2d? | 2009-08-14 | 2009-08-18 | 53 | 2009-08-13 | 2009-08-17 | 2d? | 0d |  | Tester | 16h |
| 55 | 1.5.2.5 | Bug Fixing-2 |  | 2d? | 2009-08-17 | 2009-08-19 | 54SS+4h | 2009-08-14 | 2009-08-18 | 2d? | 0d |  | Peer Developer | 16h |
| 56 | 1.5.2.6 | Develop a Build and Release-22 |  | 1d? | 2009-08-19 | 2009-08-20 | 55 | 2009-08-18 | 2009-08-19 | 1d? | 0d |  | Tech Lead | 8h |
| 57 | 1.5.2.7 | System Testing-2 |  | 1d? | 2009-08-20 | 2009-08-21 | 56 | 2009-08-19 | 2009-08-20 | 1d? | 0d |  | Tester | 8h |
| 58 | 1.5.2.8 | UAT-2 |  | 1d? | 2009-08-21 | 2009-08-24 | 57 | 2009-08-20 | 2009-08-21 | 1d? | 0d |  | Client [0.1%] |  |
| 59 | 1.5.2.9 | Module 2 Complete | milestone | 1d? | 2009-08-24 | 2009-08-25 | 58 |  |  |  | 0d |  | Client [0.1%] |  |
