# Development Module

Schedule from MS Project, 2009-03-31 to 2009-06-08, costs in $.
CPMEI

## Calendars

- Standard: Mon-Fri 08:00-12:00, 13:00-17:00; Sat-Sun off.

## Resources

| Resource | Unit | Rate |
| --- | --- | --- |
| Vijay Kumar |  | 25 |
| Developer |  | 20 |
| Project Manager |  | 30 |
| Server |  | 10 |
| DVDs | DVD - RW- 4GB | 2 |
| Courier |  |  |
| Srinivas |  | 35 |
| Ramesh |  |  |
| Suresh |  |  |
| Nitesh |  |  |
| Development Budget |  |  |
| Testing Budget |  |  |
| Transport Budget |  |  |
| Contigency Budget |  |  |
| Recreation Budget |  |  |
| Stationary Budget | RIMS |  |
| Stationary Department | RIMS | 2 |
| Petrol |  | 45 |
| Diesel |  | 40 |
| Fuel Budget | Litter |  |

## Schedule

| ID | WBS | Task | Type | Duration | Start | Finish | Predecessors | Baseline start | Baseline finish | Baseline duration | Total slack | Free slack | Constraint | Resources | Work | Cost | Baseline cost |
| --- | --- | --- | --- | --- | --- | --- | --- | --- | --- | --- | --- | --- | --- | --- | --- | --- | --- |
| 1 | 1 | **Prepare Design** |  | 6.67d | 2009-04-06 08:00 | 2009-04-14 14:20 |  | 2009-04-06 08:00 | 2009-04-14 14:20 | 6.67d | 21.17d |  |  |  | 56h | 1,466.67 | 1,466.67 |
| 2 | 1.1 | Prepare Design Document |  | 5d | 2009-04-06 08:00 | 2009-04-10 17:00 |  | 2009-04-06 08:00 | 2009-04-10 17:00 | 5d | 21.17d | 0d |  | Vijay Kumar; Courier [0.1%] | 40h | 1,000 | 1,000 |
| 3 | 1.2 | Review Design Document |  | 0.67d | 2009-04-13 08:00 | 2009-04-13 14:20 | 2 | 2009-04-13 08:00 | 2009-04-13 14:20 | 0.67d | 21.17d | 0d |  | Project Manager [50%]; Srinivas | 8h | 266.67 | 266.67 |
| 4 | 1.3 | Rework Design Document |  | 1d | 2009-04-13 14:20 | 2009-04-14 14:20 | 3 | 2009-04-13 14:20 | 2009-04-14 14:20 | 1d | 21.17d | 0d |  | Vijay Kumar | 8h | 200 | 200 |
| 5 | 1.4 | Design Completed | milestone | 0d | 2009-04-14 14:20 | 2009-04-14 14:20 | 4 | 2009-04-14 14:20 | 2009-04-14 14:20 | 0d | 21.17d | 0d |  |  |  |  |  |
| 6 | 2 | **Development** |  | 17.67d | 2009-04-14 14:20 | 2009-05-08 10:40 |  | 2009-04-14 14:20 | 2009-05-08 10:40 | 17.67d | 21.17d |  |  |  | 296h | 6,240 | 6,240 |
| 7 | 2.1 | Prepare specifications |  | 5d | 2009-04-14 14:20 | 2009-04-21 14:20 | 5 | 2009-04-14 14:20 | 2009-04-21 14:20 | 5d | 21.17d | 0d |  | Vijay Kumar | 40h | 1,000 | 1,000 |
| 8 | 2.2 | Coding |  | 6.67d | 2009-04-21 14:20 | 2009-04-30 10:40 | 7 | 2009-04-21 14:20 | 2009-04-30 10:40 | 6.67d | 21.17d | 0d |  | Developer [300%] | 160h | 3,200 | 3,200 |
| 9 | 2.3 | Code Review |  | 3d | 2009-04-30 10:40 | 2009-05-05 10:40 | 8 | 2009-04-30 10:40 | 2009-05-05 10:40 | 3d | 21.17d | 0d |  | Vijay Kumar | 24h | 600 | 600 |
| 10 | 2.4 | Unit Testing |  | 2d | 2009-05-05 10:40 | 2009-05-07 10:40 | 9 | 2009-05-05 10:40 | 2009-05-07 10:40 | 2d | 21.17d | 0d |  | Developer [300%] | 48h | 960 | 960 |
| 11 | 2.5 | Code Rework |  | 1d | 2009-05-07 10:40 | 2009-05-08 10:40 | 10, 9 | 2009-05-07 10:40 | 2009-05-08 10:40 | 1d | 21.17d | 0d |  | Developer [300%] | 24h | 480 | 480 |
| 12 | 2.6 | Development Completed | milestone | 0d | 2009-05-08 10:40 | 2009-05-08 10:40 | 11 | 2009-05-08 10:40 | 2009-05-08 10:40 | 0d | 21.17d |  |  |  |  |  |  |
| 13 | 3 | **Migration** |  | 49.5d? | 2009-03-31 08:00 | 2009-06-08 12:00 |  | 2009-04-06 08:00 | 2009-06-08 12:00 | 45.5d? | 0d |  |  |  | 320h | 3,770 | 3,670 |
| 14 | 3.1 | Preparation of migration scripts |  | 5d | 2009-04-14 14:20 | 2009-04-21 14:20 | 5 | 2009-04-14 14:20 | 2009-04-21 14:20 | 5d | 25.33d | 0d |  | Developer | 40h | 800 | 800 |
| 15 | 3.2 | Copy old data (2004 to 2009) to DVDs |  | 15d? | 2009-04-21 14:20 | 2009-04-26 14:20 | 14 | 2009-04-21 14:20 | 2009-04-26 14:20 | 15d? | 25d | 0d |  | Server; DVDs [10 DVD - RW- 4GB] | 120h | 1,220 | 1,220 |
| 16 | 3.3 | Ship DVDs to new location |  | 1d | 2009-04-27 08:00 | 2009-04-27 17:00 | 15 | 2009-04-27 08:00 | 2009-04-27 17:00 | 1d | 25d | 0d |  | Courier [0.1%] |  | 50 | 50 |
| 17 | 3.4 | Copy data from DVDs to new system (2004 to 2009) |  | 20d | 2009-04-27 17:00 | 2009-05-04 09:00 | 16 | 2009-04-27 17:00 | 2009-05-04 09:00 | 20d | 25d | 0d |  | Server | 160h | 1,600 | 1,600 |
| 18 | 3.5 | Migration Completed | milestone | 0d | 2009-05-04 09:00 | 2009-05-04 09:00 | 17 | 2009-05-04 09:00 | 2009-05-04 09:00 | 0d | 25.38d |  |  |  |  |  |  |
| 19 | 3.6 | **Team Meeting** |  | 45.5d | 2009-04-06 08:00 | 2009-06-08 12:00 |  | 2009-04-06 08:00 | 2009-06-08 12:00 | 45.5d | 0d |  |  |  |  |  |  |
| 20 | 3.6.1 | Team Meeting 1 |  | 4h | 2009-04-06 08:00 | 2009-04-06 12:00 |  | 2009-04-06 08:00 | 2009-04-06 12:00 | 4h | 45d |  | start no earlier than 2009-04-06 08:00 |  |  |  |  |
| 21 | 3.6.2 | Team Meeting 2 |  | 4h | 2009-04-13 08:00 | 2009-04-13 12:00 |  | 2009-04-13 08:00 | 2009-04-13 12:00 | 4h | 40d |  | start no earlier than 2009-04-13 08:00 |  |  |  |  |
| 22 | 3.6.3 | Team Meeting 3 |  | 4h | 2009-04-20 08:00 | 2009-04-20 12:00 |  | 2009-04-20 08:00 | 2009-04-20 12:00 | 4h | 35d |  | start no earlier than 2009-04-20 08:00 |  |  |  |  |
| 23 | 3.6.4 | Team Meeting 4 |  | 4h | 2009-04-27 08:00 | 2009-04-27 12:00 |  | 2009-04-27 08:00 | 2009-04-27 12:00 | 4h | 30d |  | start no earlier than 2009-04-27 08:00 |  |  |  |  |
| 24 | 3.6.5 | Team Meeting 5 |  | 4h | 2009-05-04 08:00 | 2009-05-04 12:00 |  | 2009-05-04 08:00 | 2009-05-04 12:00 | 4h | 25d |  | start no earlier than 2009-05-04 08:00 |  |  |  |  |
| 25 | 3.6.6 | Team Meeting 6 |  | 4h | 2009-05-11 08:00 | 2009-05-11 12:00 |  | 2009-05-11 08:00 | 2009-05-11 12:00 | 4h | 20d |  | start no earlier than 2009-05-11 08:00 |  |  |  |  |
| 26 | 3.6.7 | Team Meeting 7 |  | 4h | 2009-05-18 08:00 | 2009-05-18 12:00 |  | 2009-05-18 08:00 | 2009-05-18 12:00 | 4h | 15d |  | start no earlier than 2009-05-18 08:00 |  |  |  |  |
| 27 | 3.6.8 | Team Meeting 8 |  | 4h | 2009-05-25 08:00 | 2009-05-25 12:00 |  | 2009-05-25 08:00 | 2009-05-25 12:00 | 4h | 10d |  | start no earlier than 2009-05-25 08:00 |  |  |  |  |
| 28 | 3.6.9 | Team Meeting 9 |  | 4h | 2009-06-01 08:00 | 2009-06-01 12:00 |  | 2009-06-01 08:00 | 2009-06-01 12:00 | 4h | 5d |  | start no earlier than 2009-06-01 08:00 |  |  |  |  |
| 29 | 3.6.10 | Team Meeting 10 |  | 4h | 2009-06-08 08:00 | 2009-06-08 12:00 |  | 2009-06-08 08:00 | 2009-06-08 12:00 | 4h | 0d |  | start no earlier than 2009-06-08 08:00 |  |  |  |  |
| 30 | 3.7 | Buy Stationary |  | 1d? | 2009-03-31 08:00 | 2009-03-31 17:00 |  |  |  |  | 48.5d |  |  | Stationary Department [50 RIMS] |  | 100 |  |
| 31 | 3.8 | Buy Petrol |  | 1d? | 2009-03-31 08:00 | 2009-03-31 17:00 |  |  |  |  | 48.5d |  |  |  |  |  |  |
