# Software System Implementation

Schedule from MS Project, 2010-01-20 to 2010-02-18, status date 2010-02-16, A marks actual dates.

## Calendars

- Standard: Mon-Fri 08:00-12:00, 13:00-17:00; Sat-Sun off.

## Resources

| Resource |
| --- |
| Management |
| Project Manager |
| Analyst |
| Developer |
| Tester |

## Schedule

| ID | WBS | Task | Type | Duration | Start | Finish | Predecessors | Complete | Remaining | Baseline start | Baseline finish | Baseline duration | Total slack | Free slack | Resources | Work | Actual work |
| --- | --- | --- | --- | --- | --- | --- | --- | --- | --- | --- | --- | --- | --- | --- | --- | --- | --- |
| 1 | 1 | **Build Project Plan** |  | 20d | 2010-01-20 A | 2010-02-16 A |  | 100% |  | 2010-01-20 | 2010-01-25 | 3.5d |  |  |  | 172h | 172h |
| 2 | 1.1 | Create Statement of Work |  | 4h | 2010-01-20 A | 2010-01-20 A |  | 100% |  | 2010-01-20 | 2010-01-20 | 4h |  |  | Management | 4h | 4h |
| 3 | 1.2 | Obtain Approval of Statement of Work |  | 1d | 2010-01-20 A | 2010-01-21 A | 2 | 100% |  | 2010-01-20 | 2010-01-21 | 1d |  |  | Management | 8h | 8h |
| 4 | 1.3 | Create Project Plan |  | 18.5d | 2010-01-21 A | 2010-02-16 A | 3 | 100% |  | 2010-01-21 | 2010-01-22 | 1d |  |  | Project Manager | 148h | 148h |
| 5 | 1.4 | Obtain Approval of Project Plan |  | 1d | 2010-01-22 A | 2010-01-25 A | 4 | 100% |  | 2010-01-22 | 2010-01-25 | 1d |  |  | Project Manager | 8h | 8h |
| 6 | 1.5 | Finalize project plan and definition |  | 0.5d | 2010-01-25 A | 2010-01-25 A | 5 | 100% |  | 2010-01-25 | 2010-01-25 | 0d |  |  |  | 4h | 4h |
| 7 | 2 | **Set Up System Environment** |  | 11.5d | 2010-01-25 A | 2010-02-09 |  | 72% | 3.25d | 2010-01-25 | 2010-02-09 | 11.5d | 6.75d |  |  | 96h | 66h |
| 8 | 2.1 | Test/Verify all Programs |  | 5d | 2010-01-25 A | 2010-02-01 A | 6 | 100% |  | 2010-01-25 | 2010-02-01 | 5d |  |  | Analyst | 40h | 40h |
| 9 | 2.2 | Run integrated processes on the Server |  | 3d | 2010-02-01 A | 2010-02-04 | 8 | 75% | 0.75d | 2010-02-01 | 2010-02-04 | 3d | 7.75d | 0d | Analyst | 24h | 18h |
| 10 | 2.3 | Install Printer Hardware |  | 2d | 2010-02-04 A | 2010-02-08 | 9 | 50% | 1d | 2010-02-04 | 2010-02-08 | 2d | 6.75d | 0d | Project Manager | 16h | 8h |
| 11 | 2.4 | Request Test file from integrator |  | 4h | 2010-02-08 | 2010-02-08 | 10 |  |  | 2010-02-08 | 2010-02-08 | 4h | 6.75d | 0d | Project Manager; Analyst | 8h |  |
| 12 | 2.5 | Test Printer Hardware with Test Files |  | 1d | 2010-02-09 | 2010-02-09 | 11 |  |  | 2010-02-09 | 2010-02-09 | 1d | 6.75d |  | Analyst | 8h |  |
| 13 | 3 | **Review Work Completed / In Progress** |  | 14d | 2010-01-20 A | 2010-02-08 |  | 79% | 3d | 2010-01-20 | 2010-02-08 | 14d | 7.75d |  |  | 112h | 88h |
| 14 | 3.1 | Verify Accuracy of Table Design and Entry |  | 2d | 2010-01-20 A | 2010-01-21 A |  | 100% |  | 2010-01-20 | 2010-01-21 | 2d |  |  | Analyst | 16h | 16h |
| 15 | 3.2 | Identify all Table Data |  | 5d | 2010-01-22 A | 2010-01-28 A | 14 | 100% |  | 2010-01-22 | 2010-01-28 | 5d |  |  | Analyst | 40h | 40h |
| 16 | 3.3 | Create and Enter all Table Data |  | 4d | 2010-01-29 A | 2010-02-03 A | 15 | 100% |  | 2010-01-29 | 2010-02-03 | 4d |  |  | Analyst | 32h | 32h |
| 17 | 3.4 | Verify Accuracy of all Data |  | 2d | 2010-02-04 | 2010-02-05 | 16 |  |  | 2010-02-04 | 2010-02-05 | 2d | 7.75d | 0d | Management | 16h |  |
| 18 | 3.5 | Identify Incomplete Table Data |  | 1d | 2010-02-08 | 2010-02-08 | 17 |  |  | 2010-02-08 | 2010-02-08 | 1d | 7.75d |  | Management | 8h |  |
| 19 | 4 | **Determine Additional Requirements** |  | 21.75d | 2010-01-20 A | 2010-02-18 |  | 43% | 12.36d | 2010-01-20 | 2010-02-18 | 21.75d | 0d |  |  | 264h | 114h |
| 20 | 4.1 | Finalize Additional session Scope |  | 1d | 2010-01-20 A | 2010-01-20 A |  | 100% |  | 2010-01-20 | 2010-01-20 | 1d |  |  | Developer | 8h | 8h |
| 21 | 4.2 | Communicate sessions to necessary attendees |  | 1d | 2010-01-21 A | 2010-01-21 A | 20 | 100% |  | 2010-01-21 | 2010-01-21 | 1d |  |  | Developer | 8h | 8h |
| 22 | 4.3 | Conduct Requirements Sessions |  | 1d | 2010-01-22 A | 2010-01-22 A | 21 | 100% |  | 2010-01-22 | 2010-01-22 | 1d |  |  | Developer | 8h | 8h |
| 23 | 4.4 | Document System Requirements |  | 15d | 2010-01-25 A | 2010-02-12 | 22 | 75% | 3.75d | 2010-01-25 | 2010-02-12 | 15d | 0d |  | Developer | 120h | 90h |
| 24 | 4.5 | Circulate initial requirements draft |  | 15d | 2010-01-28 | 2010-02-18 | 23FS-7.5% |  |  | 2010-01-28 | 2010-02-18 | 15d | 0d |  | Developer | 120h |  |
| 25 | 4.6 | Document Minutes from Sessions | milestone | 0d | 2010-02-18 | 2010-02-18 | 24 |  |  | 2010-02-18 | 2010-02-18 | 0d | 0d |  |  |  |  |

| ID | WBS | Task | Type | Duration | Start | Finish | Predecessors | Complete | Baseline start | Baseline finish | Baseline duration | Resources | Work | Actual work |
| --- | --- | --- | --- | --- | --- | --- | --- | --- | --- | --- | --- | --- | --- | --- |
| 26 | 5 | **Testing** |  | 4d? | 2010-01-20 A | 2010-01-25 A |  | 100% | 2010-01-20 | 2010-01-25 | 4d? |  | 64h | 64h |
| 27 | 5.1 | Develop test plans |  | 4d | 2010-01-20 A | 2010-01-25 A |  | 100% | 2010-01-20 | 2010-01-25 | 4d | Tester | 32h | 32h |
| 28 | 5.2 | Develop integration test plan |  | 4d | 2010-01-20 A | 2010-01-25 A |  | 100% | 2010-01-20 | 2010-01-25 | 4d | Tester | 32h | 32h |
| 29 | 5.3 | Unit Testing |  | 1d? | 2010-01-20 A | 2010-01-20 A |  | 100% | 2010-01-20 | 2010-01-20 | 1d? |  |  |  |
| 30 | 5.4 | Unit testing complete | milestone | 0d | 2010-01-20 A | 2010-01-20 A |  | 100% | 2010-01-20 | 2010-01-20 | 0d |  |  |  |
| 31 | 6 | **Rollout** |  | 3d | 2010-01-20 A | 2010-01-22 A |  | 100% | 2010-01-20 | 2010-01-22 | 3d |  |  |  |
| 32 | 6.1 | Develop rollout strategy |  | 1d | 2010-01-20 A | 2010-01-20 A |  | 100% | 2010-01-20 | 2010-01-20 | 1d |  |  |  |
| 33 | 6.2 | Develop rollout project plan methodology |  | 1d | 2010-01-21 A | 2010-01-21 A | 32 | 100% | 2010-01-21 | 2010-01-21 | 1d |  |  |  |
| 34 | 6.3 | Distribute software |  | 1d | 2010-01-22 A | 2010-01-22 A | 33 | 100% | 2010-01-22 | 2010-01-22 | 1d |  |  |  |
| 35 | 6.4 | Rollout complete | milestone | 0d | 2010-01-22 A | 2010-01-22 A | 34 | 100% | 2010-01-22 | 2010-01-22 | 0d |  |  |  |
