# Software System Implementation

Schedule from MS Project, 2010-01-20 to 2010-02-18, status date 2010-02-16, A marks actual dates.

## Calendars

- Standard: Mon-Fri 08:00-12:00, 13:00-17:00; Sat-Sun off.

## Resources

| Resource |
| --- |
| Management |
| Project Manager |
| Analyst |
| Developer |
| Tester |

## Schedule

| ID | WBS | Task | Type | Duration | Start | Finish | Predecessors | Complete | Remaining | Baseline start | Baseline finish | Baseline duration | Baseline 1 start | Baseline 1 finish | Total slack | Free slack | Resources | Work | Actual work |
| --- | --- | --- | --- | --- | --- | --- | --- | --- | --- | --- | --- | --- | --- | --- | --- | --- | --- | --- | --- |
| 1 | 1 | **Build Project Plan** |  | 3.5d | 2010-01-20 A | 2010-01-25 |  | 63% | 1.31d | 2006-09-26 | 2006-09-29 | 3.5d | 2010-01-20 | 2010-01-25 | 18.25d |  |  | 32h | 20h |
| 2 | 1.1 | Create Statement of Work |  | 8h | 2010-01-20 A | 2010-01-20 |  | 50% | 4h | 2006-09-26 | 2006-09-26 | 4h | 2010-01-20 | 2010-01-20 | 20.75d |  | Management | 8h | 4h |
| 3 | 1.2 | Obtain Approval of Statement of Work |  | 1d | 2010-01-20 A | 2010-01-21 A | 2 | 100% |  | 2006-09-26 | 2006-09-27 | 1d | 2010-01-20 | 2010-01-21 |  |  | Management | 8h | 8h |
| 4 | 1.3 | Create Project Plan |  | 1d | 2010-01-21 A | 2010-01-22 A | 3 | 100% |  | 2006-09-27 | 2006-09-28 | 1d | 2010-01-21 | 2010-01-22 |  |  | Project Manager | 8h | 8h |
| 5 | 1.4 | Obtain Approval of Project Plan |  | 1d | 2010-01-22 | 2010-01-25 | 4 |  |  | 2006-09-28 | 2006-09-29 | 1d | 2010-01-22 | 2010-01-25 | 6.75d | 0d | Project Manager | 8h |  |
| 6 | 1.5 | Finalize project plan and definition | milestone | 0d | 2010-01-25 | 2010-01-25 | 5 |  |  | 2006-09-29 | 2006-09-29 | 0d | 2010-01-25 | 2010-01-25 | 6.75d | 0d |  |  |  |
| 7 | 2 | **Set Up System Environment** |  | 11.5d | 2010-01-25 | 2010-02-09 |  |  |  | 2006-09-29 | 2006-10-16 | 11.5d | 2010-01-25 | 2010-02-09 | 6.75d |  |  | 96h |  |
| 8 | 2.1 | Test/Verify all Programs |  | 5d | 2010-01-25 | 2010-02-01 | 6 |  |  | 2006-09-29 | 2006-10-06 | 5d | 2010-01-25 | 2010-02-01 | 6.75d | 0d | Analyst | 40h |  |
| 9 | 2.2 | Run integrated processes on the Server |  | 3d | 2010-02-01 | 2010-02-04 | 8 |  |  | 2006-10-06 | 2006-10-11 | 3d | 2010-02-01 | 2010-02-04 | 6.75d | 0d | Analyst | 24h |  |
| 10 | 2.3 | Install Printer Hardware |  | 2d | 2010-02-04 | 2010-02-08 | 9 |  |  | 2006-10-11 | 2006-10-13 | 2d | 2010-02-04 | 2010-02-08 | 6.75d | 0d | Project Manager | 16h |  |
| 11 | 2.4 | Request Test file from integrator |  | 4h | 2010-02-08 | 2010-02-08 | 10 |  |  | 2006-10-13 | 2006-10-13 | 4h | 2010-02-08 | 2010-02-08 | 6.75d | 0d | Project Manager; Analyst | 8h |  |
| 12 | 2.5 | Test Printer Hardware with Test Files |  | 1d | 2010-02-09 | 2010-02-09 | 11 |  |  | 2006-10-16 | 2006-10-16 | 1d | 2010-02-09 | 2010-02-09 | 6.75d |  | Analyst | 8h |  |
| 13 | 3 | **Review Work Completed / In Progress** |  | 14d | 2010-01-20 A | 2010-02-08 |  | 79% | 3d | 2006-09-26 | 2006-10-13 | 14d | 2010-01-20 | 2010-02-08 | 7.75d |  |  | 112h | 88h |
| 14 | 3.1 | Verify Accuracy of Table Design and Entry |  | 2d | 2010-01-20 A | 2010-01-21 A |  | 100% |  | 2006-09-26 | 2006-09-27 | 2d | 2010-01-20 | 2010-01-21 |  |  | Analyst | 16h | 16h |
| 15 | 3.2 | Identify all Table Data |  | 5d | 2010-01-22 A | 2010-01-28 A | 14 | 100% |  | 2006-09-28 | 2006-10-04 | 5d | 2010-01-22 | 2010-01-28 |  |  | Analyst | 40h | 40h |
| 16 | 3.3 | Create and Enter all Table Data |  | 4d | 2010-01-29 A | 2010-02-03 A | 15 | 100% |  | 2006-10-05 | 2006-10-10 | 4d | 2010-01-29 | 2010-02-03 |  |  | Analyst | 32h | 32h |
| 17 | 3.4 | Verify Accuracy of all Data |  | 2d | 2010-02-04 | 2010-02-05 | 16 |  |  | 2006-10-11 | 2006-10-12 | 2d | 2010-02-04 | 2010-02-05 | 7.75d | 0d | Management | 16h |  |
| 18 | 3.5 | Identify Incomplete Table Data |  | 1d | 2010-02-08 | 2010-02-08 | 17 |  |  | 2006-10-13 | 2006-10-13 | 1d | 2010-02-08 | 2010-02-08 | 7.75d |  | Management | 8h |  |
| 19 | 4 | **Determine Additional Requirements** |  | 21.75d | 2010-01-20 A | 2010-02-18 |  | 99% | 0d | 2006-09-26 | 2006-10-25 | 21.75d | 2010-01-20 | 2010-02-18 | 0d |  |  | 264h | 264h |
| 20 | 4.1 | Finalize Additional session Scope |  | 1d | 2010-01-20 A | 2010-01-20 A |  | 100% |  | 2006-09-26 | 2006-09-26 | 1d | 2010-01-20 | 2010-01-20 |  |  | Developer | 8h | 8h |
| 21 | 4.2 | Communicate sessions to necessary attendees |  | 1d | 2010-01-21 A | 2010-01-21 A | 20 | 100% |  | 2006-09-27 | 2006-09-27 | 1d | 2010-01-21 | 2010-01-21 |  |  | Developer | 8h | 8h |
| 22 | 4.3 | Conduct Requirements Sessions |  | 1d | 2010-01-22 A | 2010-01-22 A | 21 | 100% |  | 2006-09-28 | 2006-09-28 | 1d | 2010-01-22 | 2010-01-22 |  |  | Developer | 8h | 8h |
| 23 | 4.4 | Document System Requirements |  | 15d | 2010-01-25 A | 2010-02-12 A | 22 | 100% |  | 2006-09-29 | 2006-10-19 | 15d | 2010-01-25 | 2010-02-12 |  |  | Developer | 120h | 120h |
| 24 | 4.5 | Circulate initial requirements draft |  | 15d | 2010-01-28 A | 2010-02-18 A | 23FS-7.5% | 100% |  | 2006-10-04 | 2006-10-25 | 15d | 2010-01-28 | 2010-02-18 |  |  | Developer | 120h | 120h |
| 25 | 4.6 | Document Minutes from Sessions | milestone | 0d | 2010-02-18 | 2010-02-18 | 24 |  |  | 2006-10-25 | 2006-10-25 | 0d | 2010-02-18 | 2010-02-18 | 0d |  |  |  |  |

| ID | WBS | Task | Type | Duration | Start | Finish | Predecessors | Complete | Baseline start | Baseline finish | Baseline duration | Baseline 1 start | Baseline 1 finish | Resources | Work | Actual work |
| --- | --- | --- | --- | --- | --- | --- | --- | --- | --- | --- | --- | --- | --- | --- | --- | --- |
| 26 | 5 | **Testing** |  | 4d? | 2010-01-20 A | 2010-01-25 A |  | 100% | 2006-09-26 | 2006-09-29 | 4d? | 2010-01-20 | 2010-01-25 |  | 64h | 64h |
| 27 | 5.1 | Develop test plans |  | 4d | 2010-01-20 A | 2010-01-25 A |  | 100% | 2006-09-26 | 2006-09-29 | 4d | 2010-01-20 | 2010-01-25 | Tester | 32h | 32h |
| 28 | 5.2 | Develop integration test plan |  | 4d | 2010-01-20 A | 2010-01-25 A |  | 100% | 2006-09-26 | 2006-09-29 | 4d | 2010-01-20 | 2010-01-25 | Tester | 32h | 32h |
| 29 | 5.3 | Unit Testing |  | 1d? | 2010-01-20 A | 2010-01-20 A |  | 100% | 2006-09-26 | 2006-09-26 | 1d? | 2010-01-20 | 2010-01-20 |  |  |  |
| 30 | 5.4 | Unit testing complete | milestone | 0d | 2010-01-20 A | 2010-01-20 A |  | 100% | 2006-09-26 | 2006-09-26 | 0d | 2010-01-20 | 2010-01-20 |  |  |  |
| 31 | 6 | **Rollout** |  | 3d | 2010-01-20 A | 2010-01-22 A |  | 100% | 2006-09-26 | 2006-09-28 | 3d | 2010-01-20 | 2010-01-22 |  |  |  |
| 32 | 6.1 | Develop rollout strategy |  | 1d | 2010-01-20 A | 2010-01-20 A |  | 100% | 2006-09-26 | 2006-09-26 | 1d | 2010-01-20 | 2010-01-20 |  |  |  |
| 33 | 6.2 | Develop rollout project plan methodology |  | 1d | 2010-01-21 A | 2010-01-21 A | 32 | 100% | 2006-09-27 | 2006-09-27 | 1d | 2010-01-21 | 2010-01-21 |  |  |  |
| 34 | 6.3 | Distribute software |  | 1d | 2010-01-22 A | 2010-01-22 A | 33 | 100% | 2006-09-28 | 2006-09-28 | 1d | 2010-01-22 | 2010-01-22 |  |  |  |
| 35 | 6.4 | Rollout complete | milestone | 0d | 2010-01-22 A | 2010-01-22 A | 34 | 100% | 2006-09-28 | 2006-09-28 | 0d | 2010-01-22 | 2010-01-22 |  |  |  |
