Schedule from MS Project, 2012-03-01 to 2012-12-04, status date 2012-10-01, costs in $, A marks actual dates.
Aurovision

## Calendars

- Standard: Mon-Fri 08:00-12:00, 13:00-17:00; Sat-Sun off.
- Sweet-Home-Construction-Calendar: Mon-Fri 08:00-12:00, 13:00-17:00; Sat-Sun off. Exceptions (off unless hours are given): 2012-03-08 (Holi).

## Resources

| Resource | Unit | Rate | Notes |
| --- | --- | --- | --- |
| Ruchi-G |  | 14 |  |
| Sandeep |  | 1 |  |
| Divya |  | 3 |  |
| Rahul |  | 4 |  |
| Ruchi-J |  | 5 |  |
| Prabhu |  | 6 |  |
| Gaurav |  | 7 | Table A for Tile Selection / B for Tile Design / C for Fixing |
| Ashish |  | 8 |  |
| Kanhaiya |  | 9 |  |
| Anudeep |  | 10 |  |
| Bricks | Units | 0.25 |  |
| Cement | Bag | 10 |  |
| Travel |  |  |  |
| Jaspreet |  | 15 |  |
| Arpit |  | 16 |  |
| Mixure |  | 20 |  |

## Schedule

| ID | WBS | Task | Duration | Start | Finish | Predecessors | Complete | Remaining | Baseline start | Baseline finish | Baseline duration | Total slack | Free slack | Constraint | Deadline | Calendar | Resources | Work | Actual work | Cost | Baseline cost | Actual cost |
| --- | --- | --- | --- | --- | --- | --- | --- | --- | --- | --- | --- | --- | --- | --- | --- | --- | --- | --- | --- | --- | --- | --- |
| 1 | 1 | **CSH** | 197.5d | 2012-03-01 A | 2012-12-04 |  | 5% | 187.84d | 2012-03-01 | 2012-11-29 | 194.5d | 0d |  |  |  |  |  | 1694h | 96h | 33,759.6 | 32,524.6 | 2,208 |
| 2 | 1.1 | **Work Inspection** | 2.12d | 2012-03-01 | 2012-03-05 |  |  |  | 2012-03-01 | 2012-04-19 | 34.12d | 195.38d |  |  |  |  |  | 2h |  | 30 | 435 |  |
| 3 | 1.1.1 | Work Inspection 1 | 1h | 2012-03-01 | 2012-03-01 |  |  |  | 2012-03-01 | 2012-03-01 | 1h | 197.38d |  | start no earlier than 2012-03-01 |  |  | Jaspreet | 1h |  | 15 | 15 |  |
| 4 | 1.1.2 | Work Inspection 2 | 1h | 2012-03-05 | 2012-03-05 |  |  |  | 2012-03-05 | 2012-03-05 | 1h | 195.38d |  | start no earlier than 2012-03-03 |  |  | Jaspreet | 1h |  | 15 | 15 |  |
| 5 | 1.2 | **Get Land** | 22.75d | 2012-03-01 | 2012-04-03 |  |  |  | 2012-03-01 | 2012-03-30 | 21d | -5.75d | 0d |  |  |  |  | 176h |  | 2,640 | 2,640 |  |
| 6 | 1.2.1 | Land Identification | 5d | 2012-03-01 | 2012-03-08 |  |  |  | 2012-03-01 | 2012-03-07 | 5d | -5.75d | 0d |  |  |  | Jaspreet | 40h |  | 600 | 600 |  |
| 7 | 1.2.2 | Loan Approval | 10d | 2012-03-08 | 2012-03-23 | 6 |  |  | 2012-03-08 | 2012-03-21 | 10d | -5.75d | 0d |  | 2012-03-19 |  | Jaspreet | 80h |  | 1,200 | 1,200 |  |
| 8 | 1.2.3 | Land Registration | 5d | 2012-03-23 | 2012-03-30 | 7 |  |  | 2012-03-22 | 2012-03-28 | 5d | -5.75d | 0d |  |  |  | Jaspreet | 40h |  | 600 | 600 |  |
| 9 | 1.2.4 | Map approval | 2d | 2012-03-30 | 2012-04-03 | 8 |  |  | 2012-03-29 | 2012-03-30 | 2d | -5.75d | 0d |  |  | Standard | Jaspreet | 16h |  | 240 | 240 |  |
| 10 | 1.3 | **House Construction** | 70.88d | 2012-04-03 | 2012-07-11 |  |  |  | 2012-04-02 | 2012-07-06 | 70d | -5.75d | 0d |  |  |  |  | 560h |  | 22,220 | 22,220 |  |
| 11 | 1.3.1 | Digging | 15d | 2012-04-03 | 2012-04-25 | 5 |  |  | 2012-04-02 | 2012-04-20 | 15d | -5.75d | 0d |  |  |  | Jaspreet | 120h |  | 1,800 | 1,800 |  |
| 12 | 1.3.2 | Pour Cement | 5d | 2012-04-25 | 2012-05-02 | 11 |  |  | 2012-04-23 | 2012-04-27 | 5d | -5.75d | 0d |  |  |  | Jaspreet | 40h |  | 600 | 600 |  |
| 13 | 1.3.3 | Dry Cement- Foundation | 10d | 2012-05-02 | 2012-05-16 | 12 |  |  | 2012-04-30 | 2012-05-11 | 10d | -5.75d | 0d |  |  |  | Jaspreet | 80h |  | 1,200 | 1,200 |  |
| 14 | 1.3.4 | Construction | 40d | 2012-05-16 | 2012-07-11 | 13 |  |  | 2012-05-14 | 2012-07-06 | 40d | -5.75d | 0d |  |  |  | Arpit; Bricks [50000 Units]; Cement [100 Bag] | 320h |  | 18,620 | 18,620 |  |
| 15 | 1.4 | **House Design** | 7d | 2012-07-11 | 2012-07-20 |  |  |  | 2012-07-09 | 2012-07-17 | 7d | -5.75d | 0d |  |  |  |  | 40h |  | 240 | 240 |  |
| 16 | 1.4.1 | Get CADD | 2d | 2012-07-11 | 2012-07-13 | 10 |  |  | 2012-07-09 | 2012-07-10 | 2d | -5.75d | 0d |  |  |  | Prabhu | 16h |  | 96 | 96 |  |
| 17 | 1.4.2 | Interior Plan | 2d | 2012-07-13 | 2012-07-17 | 16 |  |  | 2012-07-11 | 2012-07-12 | 2d | -5.75d | 0d |  |  |  | Prabhu | 16h |  | 96 | 96 |  |
| 18 | 1.4.3 | Selecting Colors | 1d | 2012-07-17 | 2012-07-18 | 17 |  |  | 2012-07-13 | 2012-07-13 | 1d | -5.75d | 0d |  |  |  | Prabhu | 8h |  | 48 | 48 |  |
| 19 | 1.4.4 | House Design Done | 2d | 2012-07-18 | 2012-07-20 | 18 |  |  | 2012-07-16 | 2012-07-17 | 2d | -5.75d | 0d |  |  |  |  |  |  |  |  |  |
| 20 | 1.5 | **Electrification** | 26d | 2012-07-20 | 2012-08-27 |  |  |  | 2012-07-18 | 2012-08-22 | 26d | -5.75d | 0d |  |  |  |  | 208h |  | 1,040 | 1,040 |  |
| 21 | 1.5.1 | Internal wiring layout | 10d | 2012-07-20 | 2012-08-03 | 15 |  |  | 2012-07-18 | 2012-07-31 | 10d | -5.75d | 0d |  |  |  | Ruchi-J | 80h |  | 400 | 400 |  |
| 22 | 1.5.2 | Selection of switches | 1d | 2012-08-03 | 2012-08-06 | 21 |  |  | 2012-08-01 | 2012-08-01 | 1d | -5.75d | 0d |  |  |  | Ruchi-J | 8h |  | 40 | 40 |  |
| 23 | 1.5.3 | Applying for electric connection | 3d | 2012-08-06 | 2012-08-09 | 22 |  |  | 2012-08-02 | 2012-08-06 | 3d | -5.75d | 0d |  |  |  | Ruchi-J | 24h |  | 120 | 120 |  |
| 24 | 1.5.4 | Elec-Fitting | 5d | 2012-08-09 | 2012-08-16 | 23 |  |  | 2012-08-07 | 2012-08-13 | 5d | -5.75d | 0d |  |  |  | Ruchi-J | 40h |  | 200 | 200 |  |
| 25 | 1.5.5 | Elec-Installation | 7d | 2012-08-16 | 2012-08-27 | 24 |  |  | 2012-08-14 | 2012-08-22 | 7d | -5.75d | 0d |  |  |  | Ruchi-J | 56h |  | 280 | 280 |  |

Notes:
- 9: Test server should be procured from HP

| ID | WBS | Task | Duration | Start | Finish | Predecessors | Complete | Baseline start | Baseline finish | Baseline duration | Total slack | Free slack | Constraint | Resources | Work | Actual work | Cost | Baseline cost | Actual cost |
| --- | --- | --- | --- | --- | --- | --- | --- | --- | --- | --- | --- | --- | --- | --- | --- | --- | --- | --- | --- |
| 26 | 1.6 | **Plumbing** | 12d | 2012-08-27 | 2012-09-12 |  |  | 2012-08-23 | 2012-09-07 | 12d | -5.75d | 0d |  |  | 96h |  | 288 | 288 |  |
| 27 | 1.6.1 | Putting water pipeline layout | 5d | 2012-08-27 | 2012-09-03 | 20 |  | 2012-08-23 | 2012-08-29 | 5d | -5.75d | 0d |  | Divya | 40h |  | 120 | 120 |  |
| 28 | 1.6.2 | Setting water pipeline | 3d | 2012-09-03 | 2012-09-06 | 27 |  | 2012-08-30 | 2012-09-03 | 3d | -5.75d | 0d |  | Divya | 24h |  | 72 | 72 |  |
| 29 | 1.6.3 | Applying water connection | 2d | 2012-09-06 | 2012-09-10 | 28 |  | 2012-09-04 | 2012-09-05 | 2d | -5.75d | 0d |  | Divya | 16h |  | 48 | 48 |  |
| 30 | 1.6.4 | Water-Fitting | 1d | 2012-09-10 | 2012-09-11 | 29 |  | 2012-09-06 | 2012-09-06 | 1d | -5.75d | 0d |  | Divya | 8h |  | 24 | 24 |  |
| 31 | 1.6.5 | Water-Installation | 1d | 2012-09-11 | 2012-09-12 | 30, 28 |  | 2012-09-07 | 2012-09-07 | 1d | -5.75d | 0d |  | Divya | 8h |  | 24 | 24 |  |
| 32 | 1.7 | **Woodwork** | 17.75d | 2012-09-05 | 2012-09-28 |  |  | 2012-09-05 | 2012-09-25 | 15d | 0d |  |  |  | 136h |  | 1,840 | 1,904 |  |
| 33 | 1.7.1 | Wood selection | 2d | 2012-09-05 | 2012-09-06 | 26 |  | 2012-09-10 | 2012-09-11 | 2d | -5.75d | 0d | start no later than 2012-09-05 | Ruchi-G | 16h |  | 224 | 224 |  |
| 34 | 1.7.2 | Door window layout | 2d | 2012-09-07 | 2012-09-11 | 26FS-3d |  | 2012-09-05 | 2012-09-06 | 2d | 46.75d | 0d |  | Anudeep | 16h |  | 160 | 224 |  |
| 35 | 1.7.3 | Door installation | 8d | 2012-09-11 | 2012-09-21 | 34 |  | 2012-09-07 | 2012-09-18 | 8d | 46.75d | 0d |  | Ruchi-G | 64h |  | 896 | 896 |  |
| 36 | 1.7.4 | Paiting doors | 5d | 2012-09-21 | 2012-09-28 | 35 |  | 2012-09-19 | 2012-09-25 | 5d | 46.75d |  |  | Ruchi-G | 40h |  | 560 | 560 |  |
| 37 | 1.8 | **Tiling** | 11.5d | 2012-09-26 A | 2012-10-11 A |  | 100% | 2012-09-26 | 2012-10-08 | 9d |  |  |  |  | 96h | 96h | 2,208 | 504 | 2,208 |
| 38 | 1.8.1 | Tile Selection | 1.5d | 2012-09-26 A | 2012-09-27 A | 32 | 100% | 2012-09-26 | 2012-09-27 | 2d |  |  |  | Gaurav [300%] | 24h | 24h | 168 | 112 | 168 |
| 39 | 1.8.2 | Tile Design | 3d | 2012-09-27 A | 2012-10-02 A | 38 | 100% | 2012-09-28 | 2012-10-01 | 2d |  |  |  | Gaurav | 24h | 24h | 240 | 112 | 240 |
| 40 | 1.8.3 | Tile Fixing | 6d | 2012-10-03 A | 2012-10-11 A | 39FS+1d | 100% | 2012-10-02 | 2012-10-08 | 5d |  |  |  | Gaurav | 48h | 48h | 1,800 | 280 | 1,800 |
| 41 | 1.9 | **Security Setup** | 7d | 2012-10-11 | 2012-10-22 |  |  | 2012-10-09 | 2012-10-17 | 7d | 0d |  |  |  | 28h |  | 33.6 | 33.6 |  |
| 42 | 1.9.1 | Purchase Locks | 1d | 2012-10-11 | 2012-10-12 | 37 |  | 2012-10-09 | 2012-10-09 | 1d | 0d |  |  | Sandeep [50%] | 4h |  | 4.8 | 4.8 |  |
| 43 | 1.9.2 | Purchase CCTV | 2d | 2012-10-12 | 2012-10-16 | 42 |  | 2012-10-10 | 2012-10-11 | 2d | 0d |  |  | Sandeep [50%] | 8h |  | 9.6 | 9.6 |  |
| 44 | 1.9.3 | Identify Technician | 2d | 2012-10-16 | 2012-10-18 | 43 |  | 2012-10-12 | 2012-10-15 | 2d | 0d |  |  | Sandeep [50%] | 8h |  | 9.6 | 9.6 |  |
| 45 | 1.9.4 | Security-Installation | 2d | 2012-10-18 | 2012-10-22 | 44 |  | 2012-10-16 | 2012-10-17 | 2d | 0d |  |  | Sandeep [50%] | 8h |  | 9.6 | 9.6 |  |
| 46 | 1.10 | **Lanter** | 3.5d | 2012-10-22 | 2012-10-25 |  |  | 2012-10-18 | 2012-10-23 | 3.5d | 0d |  |  |  | 32h |  | 360 | 360 |  |
| 47 | 1.10.1 | Buy Ironrods | 1d | 2012-10-22 | 2012-10-23 | 41 |  | 2012-10-18 | 2012-10-18 | 1d | 0d |  |  | Anudeep | 8h |  | 80 | 80 |  |
| 48 | 1.10.2 | Mortar Mixing Machine | 0.5d | 2012-10-23 | 2012-10-23 | 47 |  | 2012-10-19 | 2012-10-19 | 0.5d | 0d |  |  | Anudeep; Mixure | 8h |  | 120 | 120 |  |
| 49 | 1.10.3 | Hire mixture lifting machine | 1d | 2012-10-24 | 2012-10-24 | 48 |  | 2012-10-19 | 2012-10-22 | 1d | 0d |  |  | Anudeep | 8h |  | 80 | 80 |  |
| 50 | 1.10.4 | Pouring Water | 1d | 2012-10-25 | 2012-10-25 | 49 |  | 2012-10-22 | 2012-10-23 | 1d | 0d |  |  | Anudeep | 8h |  | 80 | 80 |  |

| ID | WBS | Task | Duration | Start | Finish | Predecessors | Baseline start | Baseline finish | Baseline duration | Total slack | Free slack | Resources | Work | Cost | Baseline cost |
| --- | --- | --- | --- | --- | --- | --- | --- | --- | --- | --- | --- | --- | --- | --- | --- |
| 51 | 1.11 | **Garden Setup** | 4.5d | 2012-10-26 | 2012-11-01 |  | 2012-10-23 | 2012-10-30 | 5d | 0d |  |  | 40h | 320 | 320 |
| 52 | 1.11.1 | Digging Garden Area | 0.5d | 2012-10-26 | 2012-10-26 | 46 | 2012-10-23 | 2012-10-24 | 1d | 0d |  | Ashish [200%] | 8h | 64 | 64 |
| 53 | 1.11.2 | Pour Seeds | 1d | 2012-10-26 | 2012-10-29 | 52 | 2012-10-24 | 2012-10-25 | 1d | 0d |  | Ashish | 8h | 64 | 64 |
| 54 | 1.11.3 | Pour Water | 1d | 2012-10-29 | 2012-10-30 | 53 | 2012-10-25 | 2012-10-26 | 1d | 0d |  | Ashish | 8h | 64 | 64 |
| 55 | 1.11.4 | Putting Fertilizer | 1d | 2012-10-30 | 2012-10-31 | 54 | 2012-10-26 | 2012-10-29 | 1d | 0d |  | Ashish | 8h | 64 | 64 |
| 56 | 1.11.5 | Fencing | 1d | 2012-10-31 | 2012-11-01 | 55 | 2012-10-29 | 2012-10-30 | 1d | 0d |  | Ashish | 8h | 64 | 64 |
| 57 | 1.12 | **White Wash** | 23d | 2012-11-01 | 2012-12-04 |  | 2012-10-30 | 2012-11-29 | 22d | 0d |  |  | 184h | 2,156 | 2,156 |
| 58 | 1.12.1 | Hire Painter | 1d | 2012-11-01 | 2012-11-02 | 51 | 2012-10-30 | 2012-10-31 | 1d | 0d |  | Kanhaiya | 8h | 72 | 72 |
| 59 | 1.12.2 | Color Selection | 1d | 2012-11-06 | 2012-11-07 | 58SS+3d | 2012-11-02 | 2012-11-05 | 1d | 19d |  | Kanhaiya | 8h | 72 | 72 |
| 60 | 1.12.3 | Buy Paint | 1d | 2012-11-02 | 2012-11-05 | 58 | 2012-10-31 | 2012-11-01 | 1d | 0d |  | Kanhaiya | 8h | 72 | 72 |
| 61 | 1.12.4 | Paiting | 20d | 2012-11-05 | 2012-12-04 | 58, 60 | 2012-11-01 | 2012-11-29 | 20d | 0d |  | Kanhaiya; Travel [0%] | 160h | 1,940 | 1,940 |
| 62 | 1.13 | **Network Setup** | 12d | 2012-09-12 | 2012-09-28 |  | 2012-09-10 | 2012-09-25 | 12d | 46.75d |  |  | 96h | 384 | 384 |
| 63 | 1.13.1 | Wiring of Network Cable | 5d | 2012-09-12 | 2012-09-19 | 26 | 2012-09-10 | 2012-09-14 | 5d | 46.75d | 0d | Rahul | 40h | 160 | 160 |
| 64 | 1.13.2 | Socket Selection | 1d | 2012-09-19 | 2012-09-20 | 63 | 2012-09-17 | 2012-09-17 | 1d | 46.75d | 0d | Rahul | 8h | 32 | 32 |
| 65 | 1.13.3 | Networking Fitting | 6d | 2012-09-20 | 2012-09-28 | 64 | 2012-09-18 | 2012-09-25 | 6d | 46.75d |  | Rahul | 48h | 192 | 192 |
