# NewOffice-IT-Mphasis

Schedule from MS Project, 2014-05-27 to 2014-07-17, status date 2014-05-28, costs in $.

## Calendars

- NewOffice-IT-JPM: Mon-Fri 08:00-12:00, 13:00-17:00; Sat-Sun off.

## Resources

| Resource | Unit | Rate |
| --- | --- | --- |
| Aditya |  | 10 |
| Tina |  | 20 |
| Aruna |  | 30 |
| Sindhu |  | 40 |
| Karthik |  | 50 |
| Rahul |  | 60 |
| Debasree |  | 70 |
| Sonal |  | 105 |
| Richard |  | 90 |
| Somaiah |  | 100 |
| Developer |  | 110 |
| Network Engineer |  | 120 |
| Switches | Units | 1000 |
| Routers | Units | 1500 |
| Servers | Units | 900 |
| Cables | Meters | 2 |
| Installation Charges |  |  |
| Local Travel |  |  |
| International Travel |  |  |
| Material Movment Cost |  |  |
| Budget.Engineering |  |  |
| Budget.Cables | Meters |  |
| SCM |  | 130 |
| Tyco | Nos | 15 |
| Cisco | Nos | 25 |
| Cabling Vendor |  |  |
| PM |  | 140 |
| Project Budget Cost |  |  |
| Budget.Travel |  |  |

## Schedule

| ID | WBS | Task | Type | Duration | Start | Finish | Predecessors | Total slack | Free slack | Deadline | Resources | Work | Cost |
| --- | --- | --- | --- | --- | --- | --- | --- | --- | --- | --- | --- | --- | --- |
| 1 | 1 | **Phase1 (Designing)** |  | 14.62d | 2014-05-27 | 2014-06-16 |  | 0d |  |  |  | 161h | 6,610 |
| 2 | 1.1 | **Floor Design** |  | 8.62d | 2014-05-27 | 2014-06-06 |  | 0d |  |  |  | 97h | 4,050 |
| 3 | 1.1.1 | **Furniture Layout Design** |  | 4d | 2014-05-27 | 2014-05-30 |  | 0d |  |  |  | 29h | 1,450 |
| 4 | 1.1.1.1 | Identify # of WS required |  | 2d | 2014-05-27 | 2014-05-28 |  | 0d |  | 2014-05-28 | Karthik | 18h | 900 |
| 5 | 1.1.1.2 | Identify WS size |  | 2d | 2014-05-29 | 2014-05-30 | 4 | 0d |  |  | Karthik | 11h | 550 |
| 6 | 1.1.2 | **Data Raceway** |  | 4.12d | 2014-06-02 | 2014-06-06 |  | 23.07d | 0.5d |  |  | 32h | 2,240 |
| 7 | 1.1.2.1 | Identify raceway type |  | 2d | 2014-06-02 | 2014-06-03 | 3 | 23.07d | 0d |  | Debasree | 16h | 1,120 |
| 8 | 1.1.2.2 | Identify path |  | 2.12d | 2014-06-04 | 2014-06-06 | 7 | 23.07d |  |  | Debasree | 16h | 1,120 |
| 9 | 1.1.3 | **Hubroom Layout** |  | 4.62d | 2014-06-02 | 2014-06-06 |  | 22.57d | 0d |  |  | 36h | 360 |
| 10 | 1.1.3.1 | Calculate # of rack required |  | 2d | 2014-06-02 | 2014-06-03 | 3 | 22.57d | 0d |  | Aditya | 15h | 150 |
| 11 | 1.1.3.2 | Calculate the hub room size |  | 2.62d | 2014-06-04 | 2014-06-06 | 10 | 22.57d |  |  | Aditya | 21h | 210 |
| 12 | 1.2 | **Network Design** |  | 10.62d | 2014-06-02 | 2014-06-16 |  | 0d |  |  |  | 64h | 2,560 |
| 13 | 1.2.1 | **Cabling Design** |  | 6d | 2014-06-06 | 2014-06-16 |  | 22.57d |  |  |  | 32h | 1,920 |
| 14 | 1.2.1.1 | Prepare BOM |  | 2d | 2014-06-06 | 2014-06-10 | 6, 9 | 22.57d | 0d |  | Rahul | 16h | 960 |
| 15 | 1.2.1.2 | Take BOM approval |  | 2d | 2014-06-10 | 2014-06-16 | 14 | 22.57d |  |  | Rahul | 16h | 960 |
| 16 | 1.2.2 | **LAN Design** |  | 4d | 2014-06-02 | 2014-06-05 |  | 0d |  |  |  | 32h | 640 |
| 17 | 1.2.2.1 | Prepare BOM of LAN Devices |  | 2d | 2014-06-02 | 2014-06-03 | 3 | 0d |  |  | Tina | 16h | 320 |
| 18 | 1.2.2.2 | Take approval of BOM of LAN devices |  | 2d | 2014-06-04 | 2014-06-05 | 17 | 0d |  |  | Tina | 16h | 320 |
| 19 | 1.2.3 | Floor Design Complete | milestone | 0d | 2014-06-05 | 2014-06-05 | 18 | 0d |  |  |  |  |  |
| 20 | 2 | **Phase2 (Procurement)** |  | 10d | 2014-06-06 | 2014-06-19 |  | 0d |  |  |  | 160h | 14,682 |
| 21 | 2.1 | **Quote** |  | 2d | 2014-06-06 | 2014-06-09 |  | 0d |  |  |  | 32h | 3,520 |
| 22 | 2.1.1 | Passive Cabling Quote |  | 2d | 2014-06-06 | 2014-06-09 | 19 | 0d |  |  | Richard | 16h | 1,440 |
| 23 | 2.1.2 | Active Device Quote |  | 2d | 2014-06-06 | 2014-06-09 | 19 | 2d | 0d |  | SCM | 16h | 2,080 |
| 24 | 2.2 | **Vendor Finalization** |  | 2d | 2014-06-10 | 2014-06-11 |  | 0d |  |  |  | 32h | 3,200 |
| 25 | 2.2.1 | Passive Cabling VF |  | 2d | 2014-06-10 | 2014-06-11 | 22 | 0d |  |  | Debasree | 16h | 1,120 |
| 26 | 2.2.2 | Active Device VF |  | 2d | 2014-06-10 | 2014-06-11 | 23 | 2d | 0d |  | SCM | 16h | 2,080 |

| ID | WBS | Task | Type | Duration | Start | Finish | Predecessors | Total slack | Free slack | Resources | Work | Cost |
| --- | --- | --- | --- | --- | --- | --- | --- | --- | --- | --- | --- | --- |
| 27 | 2.3 | **Order Material** |  | 4d | 2014-06-12 | 2014-06-17 |  | 0d |  |  | 64h | 4,480 |
| 28 | 2.3.1 | **Passive Cabling Order** |  | 4d | 2014-06-12 | 2014-06-17 |  | 0d |  |  | 32h | 3,040 |
| 29 | 2.3.1.1 | Raise procurment request of PD |  | 2d | 2014-06-12 | 2014-06-13 | 25 | 0d |  | Rahul | 16h | 960 |
| 30 | 2.3.1.2 | Relase PO of PD |  | 2d | 2014-06-16 | 2014-06-17 | 29 | 0d |  | SCM | 16h | 2,080 |
| 31 | 2.3.2 | **Active Device Order** |  | 4d | 2014-06-12 | 2014-06-17 |  | 2d |  |  | 32h | 1,440 |
| 32 | 2.3.2.1 | Raise procurment request of AD |  | 2d | 2014-06-12 | 2014-06-13 | 26 | 2d | 0d | Tina | 16h | 320 |
| 33 | 2.3.2.2 | Raise purpose order of AD |  | 2d | 2014-06-16 | 2014-06-17 | 32 | 2d | 0d | Debasree | 16h | 1,120 |
| 34 | 2.4 | **Delivery Material** |  | 2d | 2014-06-18 | 2014-06-19 |  | 0d |  |  | 32h | 3,482 |
| 35 | 2.4.1 | Passive Cabling Delivery of AD |  | 2d | 2014-06-18 | 2014-06-19 | 30 | 0d |  | Tyco [1 Nos]; Rahul; Material Movment Cost [0.1%] | 16h | 1,126 |
| 36 | 2.4.2 | Active Device Delivery of AD |  | 2d | 2014-06-18 | 2014-06-19 | 33 | 2d | 0d | Cisco [1 Nos]; SCM; Material Movment Cost [0.1%] | 16h | 2,356 |
| 37 | 2.5 | Procurement complete | milestone | 0d | 2014-06-19 | 2014-06-19 | 36 | 19.2d |  |  |  |  |
| 38 | 3 | **Phase3 (Implementation)** |  | 22d | 2014-05-27 | 2014-06-25 |  | 0d |  |  | 96h | 18,641 |
| 39 | 3.1 | Cabling Setup |  | 2d | 2014-06-20 | 2014-06-23 | 35 | 0d |  | Cabling Vendor [0.1%]; Debasree; Cables [100 Meters]; Installation Charges [0.1%] | 16h | 2,721 |
| 40 | 3.2 | LAN Setup |  | 2d | 2014-06-24 | 2014-06-25 | 36, 39 | 0d |  | Network Engineer; Routers [2 Units]; Servers [2 Units]; Switches [4 Units] | 16h | 10,720 |
| 41 | 3.3 | Testing |  | 2d | 2014-05-27 | 2014-05-28 |  | 20d | 0d | Aruna; Sonal; Somaiah; Richard | 64h | 5,200 |
| 42 | 3.4 | Implementation Complete | milestone | 0d | 2014-05-28 | 2014-05-28 | 41 | 20d | 0d |  |  |  |
| 43 | 4 | **Phase4 (Final Testing)** |  | 6d? | 2014-05-27 | 2014-06-03 |  | 31.2d |  |  | 96h | 7,360 |
| 44 | 4.1 | UAT |  | 2d | 2014-05-29 | 2014-05-30 | 42 | 31.2d | 0d | Aruna; Karthik; Somaiah; Richard | 64h | 4,320 |
| 45 | 4.2 | Troubleshoot |  | 2d | 2014-06-02 | 2014-06-03 | 44 | 31.2d |  | Debasree; Network Engineer | 32h | 3,040 |
| 46 | 4.3 | Testing Complete | milestone | 1d? | 2014-05-27 | 2014-05-27 |  | 36.2d |  |  |  |  |
| 47 | 5 | **Phase5 (Develop Ticketing System)** |  | 37.2d? | 2014-05-27 | 2014-07-17 |  | 0d |  |  | 154h | 13,260 |
| 48 | 5.1 | **Develop Complaint Entry Screen** |  | 6d | 2014-06-26 | 2014-07-03 |  | 0d |  |  | 48h | 5,520 |
| 49 | 5.1.1 | Develop DB for Complaint Screen |  | 3d | 2014-06-26 | 2014-06-30 | 38 | 0d |  | Sonal | 24h | 4,800 |
| 50 | 5.1.2 | Develop UI for Complaint Screen |  | 3d | 2014-07-01 | 2014-07-03 | 49 | 0d |  | Aruna | 24h | 720 |

| ID | WBS | Task | Type | Duration | Start | Finish | Predecessors | Total slack | Resources | Work | Cost |
| --- | --- | --- | --- | --- | --- | --- | --- | --- | --- | --- | --- |
| 51 | 5.2 | **Develop Alerts Workflow** |  | 4d | 2014-07-04 | 2014-07-09 |  | 0d |  | 32h | 2,080 |
| 52 | 5.2.1 | Design Workflow |  | 2d | 2014-07-04 | 2014-07-07 | 50 | 0d | Richard | 16h | 1,440 |
| 53 | 5.2.2 | Implement Workflow |  | 2d | 2014-07-08 | 2014-07-09 | 52 | 5.2d | Sindhu | 16h | 640 |
| 54 | 5.3 | **Devleop Severity Definition Screen** |  | 4d | 2014-07-04 | 2014-07-09 |  | 0d |  | 24h | 1,280 |
| 55 | 5.3.1 | Develop DB for Severity |  | 1d | 2014-07-04 | 2014-07-04 | 50 | 3d | Somaiah | 8h | 800 |
| 56 | 5.3.2 | Implement Severity Screen |  | 2d | 2014-07-08 | 2014-07-09 | 52 | 0d | Aruna | 16h | 480 |
| 57 | 5.4 | FT of System |  | 1.95d | 2014-07-10 | 2014-07-11 | 54 | 0d | Sonal | 16h | 1,680 |
| 58 | 5.5 | UAT |  | 3d | 2014-07-11 | 2014-07-16 | 57 | 0d | Karthik; International Travel [0.1%] | 24h | 2,400 |
| 59 | 5.6 | Production Golive |  | 0.25d | 2014-07-16 | 2014-07-17 | 58 | 0d | Aruna | 10h | 300 |
| 60 | 5.7 | Handover Complete | milestone | 1d? | 2014-05-27 | 2014-05-27 |  | 36.2d |  |  |  |
