# Etihad Airways - AirVision Cargo - Network Module Implementation

Schedule from MS Project, 2011-02-01 to 2014-06-11, A marks actual dates.
Release 2 - Etihad AirVision Cargo - Network Module Implementation
Sabre Inc.

## Calendars

- Standard: Mon-Fri 08:00-12:00, 13:00-17:00; Sat-Sun off. Exceptions (off unless hours are given): 2012-03-11 08:00-12:00, 13:00-17:00, 2012-11-26 to 2012-12-01, 2012-12-02 08:00-12:00, 13:00-17:00, 2012-12-21 to 2013-01-05, 2013-01-06 08:00-12:00, 13:00-17:00.

## Resources

| Resource |
| --- |
| Sabre SME |
| Sabre OR |
| Sabre PM |
| EY Business |
| EY Cargo |
| EY IT |
| Sabre PM & SME |
| EY Cargo & IT |
| CHAMP |
| Sabre Dev |
| All |
| Sabre Dec |
| Sabre Agile Customer |
| Pete Calloway |
| Sabre GTE |
| Sabre Adv Support |
| Sabre Tech SME |
| Sabre Cargo |
| Sabre IT |
| EY PM |
| EY IT PM |
| Sabre Dev Sabre GTE |
| Sabre Advance Support |
| Sabre SaaS |
| SaaS |
| SME Tech SME |
| Sabre Tech PM |
| Stakeholders |
| Sabre AD |
| Sabre Pgrm Mgr |
| Sabre Solutions |
| EY Caargo |
| EY Test |
| Sabre CC |
| Sabre |
| SabreSME |
| EY |
| IT |
| Sabre PM |

## Schedule

| ID | WBS | Task | Type | Duration | Start | Finish | Predecessors | Complete | Remaining | Total slack | Free slack | Constraint | Resources | Work | Actual work | Expected % Complete | Project Status Indicators | Overdue Flag | Life Cycle | Milestone ID |
| --- | --- | --- | --- | --- | --- | --- | --- | --- | --- | --- | --- | --- | --- | --- | --- | --- | --- | --- | --- | --- |
| 1 | 1 | **Release 2 - Etihad AirVision Cargo - Network Module Implementation** |  | 863.75d | 2011-02-01 A | 2014-06-11 |  | 25% | 645.49d | 0d |  |  |  | 11322.8h | 4184.26h | 100% | No BL | Overdue |  |  |
| 2 | 1.1 | **Release 2 Due Diligence** |  | 263d | 2011-02-01 A | 2012-02-02 A |  | 100% |  |  |  |  |  | 472h | 472h | 100% | Complete |  |  |  |
| 3 | 1.1.1 | Proof of Concept |  | 1d | 2011-02-01 A | 2011-02-01 A |  | 100% |  |  |  | start no earlier than 2011-02-01 | Sabre OR; EY Cargo; Sabre Cargo | 24h | 24h | 100% | Complete |  | Project Iniation |  |
| 4 | 1.1.2 | **Define Target Baseline Proof of Concept Accuracy** |  | 263d | 2011-02-01 A | 2012-02-02 A |  | 100% |  |  |  |  |  | 48h | 48h | 100% | Complete |  | Project Iniation |  |
| 5 | 1.1.2.1 | O&D Accuracy - 25% Error |  | 1d | 2011-02-01 A | 2011-02-01 A | 3 | 100% |  |  |  |  | Sabre OR; Sabre SME; EY Cargo | 24h | 24h | 100% | Complete |  | Project Iniation |  |
| 6 | 1.1.2.2 | Leg Accuracy - 12% Error |  | 1d | 2012-02-02 A | 2012-02-02 A | 3 | 100% |  |  |  |  | Sabre OR; Sabre SME; EY Cargo | 24h | 24h | 100% | Complete |  | Project Iniation |  |
| 7 | 1.1.3 | Inputs criteria complete |  | 28d | 2011-02-15 A | 2011-03-24 A | 4 | 100% |  |  |  |  |  |  |  | 100% | Complete |  | Project Iniation |  |
| 8 | 1.1.4 | Methodology acceptance |  | 1d | 2011-03-25 A | 2011-03-25 A | 7 | 100% |  |  |  |  | Sabre OR; Sabre SME; EY Cargo | 24h | 24h | 100% | Complete |  | Project Iniation |  |
| 9 | 1.1.5 | Perform Simluation of Network Module |  | 17d | 2011-03-27 A | 2011-04-19 A | 8 | 100% |  |  |  |  | Sabre OR | 136h | 136h | 100% | Complete |  | Project Iniation |  |
| 10 | 1.1.6 | Define to-be end-to-end business process |  | 3d | 2011-05-15 A | 2011-05-18 A | 3, 8, 9 | 100% |  |  |  |  | Sabre OR; Sabre SME; Sabre PM; EY Cargo; EY IT; CHAMP | 144h | 144h | 100% | Complete |  | Project Iniation |  |
| 11 | 1.1.7 | Define Acceptance Criteria for end to end |  | 3d | 2011-05-15 A | 2011-05-18 A | 10 | 100% |  |  |  |  | Sabre OR; Sabre SME; EY Cargo; EY IT | 96h | 96h | 100% | Complete |  | Project Iniation |  |
| 12 | 1.2 | **Release 2 - Re-Engagement (Initiation) Phase** |  | 520.75d | 2012-01-02 A | 2014-01-16 |  | 30% | 364.69d | 104d |  |  |  | 1480.4h | 1338.18h | 100% | No BL | Overdue | Project Iniation |  |
| 13 | 1.2.1 | **Perform Project Set-Up Activities** |  | 45d | 2012-01-02 A | 2012-03-02 |  | 98% | 0.7d | 579.75d | 475.75d |  |  | 960h | 950h | 100% | No BL | Overdue | Project Iniation |  |
| 14 | 1.2.1.1 | Establish Project/Accounting Codes in Central Systems |  | 15d | 2012-02-13 A | 2012-03-02 A |  | 100% |  |  |  |  | Sabre PM | 120h | 120h | 100% | Complete |  | Project Iniation |  |
| 15 | 1.2.1.2 | Create Project Definition Document |  | 20d | 2012-01-30 A | 2012-02-24 | 2 | 95% | 1d | 584.5d | 0d |  | Sabre PM & SME | 160h | 152h | 100% | No BL | Overdue | Project Iniation |  |
| 16 | 1.2.1.3 | Create Project Processes & Procedures Document |  | 5d | 2012-02-27 A | 2012-03-02 | 15 | 95% | 0.25d | 579.75d |  |  | Sabre PM & SME | 40h | 38h | 100% | No BL | Overdue | Project Iniation |  |
| 17 | 1.2.1.4 | Negotiate Development Commitments |  | 30d | 2012-01-02 A | 2012-02-10 A | 16 | 100% |  |  |  |  | Sabre Dev; Sabre PM | 480h | 480h | 100% | Complete |  | Project Iniation |  |
| 18 | 1.2.1.5 | Negotiate Testing Commitments |  | 10d | 2012-01-02 A | 2012-01-13 A | 16 | 100% |  |  |  |  | Sabre GTE; Sabre Dev | 160h | 160h | 100% | Complete |  | Project Iniation |  |
| 19 | 1.2.2 | **Create Project Schedule** |  | 497.75d | 2012-02-02 A | 2014-01-16 |  | 12% | 440.11d | 104d | 0d |  |  | 400.4h | 324.18h | 100% | No BL | Overdue | Project Iniation |  |
| 20 | 1.2.2.1 | Create High Level Initial Project Schedule |  | 5d | 2012-02-02 A | 2012-02-08 A | 17, 18 | 100% |  |  |  | start no earlier than 2012-02-02 | Sabre PM; Sabre Dev | 80h | 80h | 100% | Complete |  | Project Iniation |  |
| 21 | 1.2.2.2 | Perform Internal High-Level Project Schedule Review |  | 4d | 2012-02-16 A | 2012-02-21 A | 20 | 100% |  |  |  |  | Sabre PM [66.7%]; Sabre Dev [66.7%]; Sabre Pgrm Mgr [66.7%] | 16h | 16h | 100% | Complete |  | Project Iniation |  |
| 22 | 1.2.2.3 | Perform Client High-Level Project Schedule Review |  | 1d | 2012-02-22 A | 2012-02-22 A | 21 | 100% |  |  |  |  | Sabre PM; Sabre SME | 16h | 16h | 100% | Complete |  | Project Iniation |  |
| 23 | 1.2.2.4 | Confirm Client and Client Subcontractor Commitments |  | 22d | 2012-02-23 A | 2012-03-22 A | 22 | 100% |  |  |  |  | EY PM | 176h | 176h | 100% | Complete |  | Project Iniation |  |
| 24 | 1.2.2.5 | Finalize Project Schedule |  | 260.75d | 2012-03-23 A | 2013-04-11 | 23 | 1% | 258.5d | 104d | 0d |  | Sabre PM [67%]; Sabre Dev [67%]; Sabre Pgrm Mgr [67%] | 48.24h | 36.18h | 100% | No BL | Overdue | Project Iniation |  |
| 25 | 1.2.2.6 | Perform Internal Detail-Level Project Schedule Review |  | 2d | 2013-04-12 | 2013-04-16 | 24 |  |  | 104d | 0d |  | Sabre PM [67%]; Sabre Dev [67%]; Sabre Pgrm Mgr [67%] | 32.16h |  | 100% | No BL | Overdue | Project Iniation |  |
| 26 | 1.2.2.7 | Perform Client Detail-Level Project Schedule Review |  | 1d | 2014-01-15 | 2014-01-16 | 25 |  |  | 104d | 0d |  | Sabre PM; Sabre Pgrm Mgr; EY Cargo; EY IT | 32h |  | 100% | No BL | Overdue | Project Iniation |  |
| 27 | 1.2.2.8 | Baseline Project Schedule | milestone | 0d | 2014-01-16 | 2014-01-16 | 26 |  |  | 104d |  |  | Sabre PM; EY PM |  |  | 100% | No BL | Overdue | Project Iniation | S88000 |

| ID | WBS | Task | Type | Duration | Start | Finish | Predecessors | Complete | Remaining | Total slack | Free slack | Constraint | Resources | Work | Actual work | Expected % Complete | Project Status Indicators | Overdue Flag | Life Cycle | Milestone ID |
| --- | --- | --- | --- | --- | --- | --- | --- | --- | --- | --- | --- | --- | --- | --- | --- | --- | --- | --- | --- | --- |
| 28 | 1.2.3 | **Perform Project Kick-Off** |  | 326.75d | 2012-01-23 A | 2013-05-10 |  | 25% | 245.06d | 283d | 179d |  |  | 120h | 64h | 100% | No BL | Overdue | Project Iniation |  |
| 29 | 1.2.3.1 | **Plan and Perform Customer Project Kick-Off** |  | 326.75d | 2012-01-23 A | 2013-05-10 |  | 25% | 245.06d | 283d |  |  |  | 120h | 64h | 100% | No BL | Overdue | Project Iniation |  |
| 30 | 1.2.3.1.1 | Plan and Perform Customer Project Kick-Off |  | 1d | 2012-01-23 A | 2012-01-23 A | 11 | 100% |  |  |  | start no earlier than 2012-01-23 | Sabre PM; Sabre SME | 16h | 16h | 100% | Complete |  | Project Iniation |  |
| 31 | 1.2.3.1.2 | Communicate to Stakeholders |  | 1d | 2012-01-23 A | 2012-01-23 A | 30SS | 100% |  |  |  |  | Sabre SME; Sabre PM; EY Cargo; EY IT; EY IT PM; Stakeholders | 48h | 48h | 100% | Complete |  | Project Iniation |  |
| 32 | 1.2.3.1.3 | Establish Initial Customer Access to Community Portal |  | 5d | 2013-05-03 | 2013-05-10 |  |  |  | 283d |  | start no earlier than 2012-03-19 | Sabre PM | 40h |  | 100% | No BL | Overdue | Project Iniation |  |
| 33 | 1.2.3.1.4 | Create Communication Plan |  | 1d | 2013-05-02 | 2013-05-03 |  |  |  | 288d |  | start no earlier than 2012-02-29 | Sabre PM; EY PM | 16h |  | 100% | No BL | Overdue | Project Iniation |  |
| 34 | 1.3 | Project Re-Engagement Complete | milestone | 0d | 2014-01-16 | 2014-01-16 | 28, 19, 13 |  |  | 104d |  |  |  |  |  | 100% | No BL | Overdue | Project Iniation | S88005 |
| 35 | 1.4 | **Release 2 - Interactive Pilot Phase** |  | 562.75d | 2012-01-16 A | 2014-03-31 |  | 69% | 174.18d | 52d |  |  |  | 2768h | 1792h | 100% | No BL | Overdue | Interave Pilot |  |
| 36 | 1.4.1 | **Perform Interactive Pilot Assessment** |  | 8d | 2012-01-24 A | 2012-02-02 A |  | 100% |  |  |  |  |  | 256h | 256h | 100% | Complete |  | Interactive Pilot |  |
| 37 | 1.4.1.1 | Perform Data Collection |  | 8d | 2012-01-24 A | 2012-02-02 A | 29 | 100% |  |  |  | finish no earlier than 2012-02-02 | Sabre SME; Sabre OR | 128h | 128h | 100% | Complete |  | Interactive Pilot |  |
| 38 | 1.4.1.2 | Plan and Perform Interactive Pilot Assessment |  | 8d | 2012-01-24 A | 2012-02-02 A | 30 | 100% |  |  |  | start no earlier than 2012-01-18 | Sabre PM; Sabre SME | 128h | 128h | 100% | Complete |  | Interactive Pilot |  |
| 39 | 1.4.2 | **Plan Interactive Pilot Workshops** |  | 5d | 2012-01-16 A | 2012-01-20 A |  | 100% |  |  |  |  |  | 80h | 80h | 100% | Complete |  | Interactive Pilot |  |
| 40 | 1.4.2.1 | Plan and Schedule Interactive Pilot Workshops |  | 2d | 2012-01-16 A | 2012-01-17 A | 29 | 100% |  |  |  | start no earlier than 2012-01-16 | Sabre PM; Sabre SME | 32h | 32h | 100% | Complete |  | Interactive Pilot |  |
| 41 | 1.4.2.2 | Prepare Interactive Pilot Workshop Components |  | 3d | 2012-01-18 A | 2012-01-20 A | 40 | 100% |  |  |  |  | Sabre PM; Sabre SME | 48h | 48h | 100% | Complete |  | Interactive Pilot |  |
| 42 | 1.4.3 | **Conduct Initial Training** |  | 4d | 2014-01-31 | 2014-02-06 |  |  |  | 89d |  |  |  | 192h |  | 100% | No BL | Overdue | Interactive Pilot |  |
| 43 | 1.4.3.1 | Conduct Initial Training (Key User / Train the Trainer) |  | 4d | 2014-01-31 | 2014-02-06 | 22 |  |  | 89d |  |  | Sabre PM; Sabre SME; Sabre Solutions; EY Cargo; EY IT; CHAMP | 192h |  | 100% | No BL | Overdue | Interactive Pilot |  |
| 44 | 1.4.4 | **Perform Interactive Pilot Workshops** |  | 9d | 2012-01-23 A | 2012-02-02 A |  | 100% |  |  |  |  |  | 448h | 448h | 100% | Complete |  | Interactive Pilot |  |
| 45 | 1.4.4.1 | Perform Interactive Pilot Workshops |  | 7d | 2012-01-25 A | 2012-02-02 A | 29 | 100% |  |  |  | start no earlier than 2012-01-25 | Sabre PM; Sabre SME; EY Cargo | 168h | 168h | 100% | Complete |  | Interactive Pilot |  |
| 46 | 1.4.4.2 | Finalize Interactive Pilot Workshops |  | 1d | 2012-02-02 A | 2012-02-02 A | 29 | 100% |  |  |  | start no earlier than 2012-02-02 | Sabre PM; Sabre SME; EY Cargo; EY PM | 32h | 32h | 100% | Complete |  | Interactive Pilot |  |
| 47 | 1.4.4.3 | **Interactive Pilot Workshops** |  | 9d | 2012-01-23 A | 2012-02-02 A |  | 100% |  |  |  |  |  | 248h | 248h | 100% | Complete |  | Interactive Pilot |  |
| 48 | 1.4.4.3.1 | BRD Review Session |  | 2d | 2012-01-23 A | 2012-01-24 A | 45 | 100% |  |  |  | start no earlier than 2012-01-23 | Sabre PM; Sabre SME; EY Cargo; EY PM | 64h | 64h | 100% | Complete |  | Interactive Pilot |  |
| 49 | 1.4.4.3.2 | Scenario based process wak-throughs |  | 5d | 2012-01-25 A | 2012-01-31 A | 48 | 100% |  |  |  |  | Sabre PM [75%]; Sabre SME [75%]; EY Cargo [75%]; CHAMP [75%] | 120h | 120h | 100% | Complete |  | Interactive Pilot |  |
| 50 | 1.4.4.3.3 | Risk Register Creation |  | 1d | 2012-02-01 A | 2012-02-01 A | 49 | 100% |  |  |  |  | Sabre PM; Sabre SME; EY Cargo; EY PM | 32h | 32h | 100% | Complete |  | Interactive Pilot |  |
| 51 | 1.4.4.3.4 | Deliverable Definition |  | 1d | 2012-02-02 A | 2012-02-02 A | 50 | 100% |  |  |  | start no earlier than 2012-01-03 | Sabre PM; Sabre SME; EY Cargo; EY PM | 32h | 32h | 100% | Complete |  | Interactive Pilot |  |
| 52 | 1.4.5 | Create IPA Report |  | 36d | 2012-02-06 A | 2012-03-23 A | 47, 38, 37 | 100% |  |  |  |  | Sabre PM; Sabre SME | 576h | 576h | 100% | Complete |  | Interactive Pilot |  |
| 53 | 1.4.6 | Present IPA Report |  | 1d | 2012-03-26 A | 2012-03-26 A | 52 | 100% |  |  |  |  | Sabre PM; Sabre SME | 16h | 16h | 100% | Complete |  | Interactive Pilot |  |
| 54 | 1.4.7 | Joint Review of IPA Report |  | 2d | 2012-03-27 A | 2012-03-28 A | 53 | 100% |  |  |  |  | Sabre PM; Sabre SME; EY Cargo; EY PM | 64h | 64h | 100% | Complete |  | Interactive Pilot |  |
| 55 | 1.4.8 | Publish Final Version of IPA Report |  | 1d | 2012-03-29 A | 2012-03-29 A | 54 | 100% |  |  |  |  | Sabre PM; EY PM | 16h | 16h | 100% | Complete |  | Interactive Pilot |  |

Notes:
- 43: This step was satisifed by process walkthroughs the weeks of 29 Jan and 27 Feb 2012
- 49: The output of this task was the final BRD versions

| ID | WBS | Task | Type | Duration | Start | Finish | Predecessors | Complete | Remaining | Total slack | Free slack | Constraint | Resources | Work | Actual work | Expected % Complete | Project Status Indicators | Overdue Flag | Life Cycle | Milestone ID |
| --- | --- | --- | --- | --- | --- | --- | --- | --- | --- | --- | --- | --- | --- | --- | --- | --- | --- | --- | --- | --- |
| 56 | 1.4.9 | **Consulting Activites** |  | 516.75d | 2012-02-01 A | 2014-02-11 |  | 45% | 285.73d | 20d | 0d |  |  | 1088h | 336h | 100% | No BL | Overdue | Interactive Pilot |  |
| 57 | 1.4.9.1 | On-site Interviews with Pricing Analyst |  | 1d | 2012-02-01 A | 2012-02-01 A | 46 | 100% |  |  |  | start no earlier than 2012-02-01 | Sabre SME; EY Cargo | 16h | 16h | 100% | Complete |  | Interactive Pilot |  |
| 58 | 1.4.9.2 | Create Organization, Functional and Policy & Procedures recommendations based on Network Module |  | 34d | 2012-02-09 A | 2012-03-26 A | 57, 47, 37 | 100% |  |  |  |  | Sabre SME | 272h | 272h | 100% | Complete |  | Interactive Pilot |  |
| 59 | 1.4.9.3 | Reivew Recommendations with Etihad Cargo |  | 2d | 2012-03-27 A | 2012-03-28 A | 58 | 100% |  |  |  |  | Sabre SME; EY Cargo | 32h | 32h | 100% | Complete |  | Interactive Pilot |  |
| 60 | 1.4.9.4 | Pulbish Final Recommendations |  | 1d | 2012-03-29 A | 2012-03-29 A | 59 | 100% |  |  |  |  | Sabre PM; EY PM | 16h | 16h | 100% | Complete |  | Interactive Pilot |  |
| 61 | 1.4.9.5 | Create KPI's for Network Module |  | 37d | 2013-11-22 | 2014-01-14 | 57, 47, 37 |  |  | 20d | 0d |  | Sabre SME; EY Cargo | 592h |  | 100% | No BL | Overdue | Interactive Pilot |  |
| 62 | 1.4.9.6 | Review and Finalize KPI's for Network Module |  | 3d | 2014-02-06 | 2014-02-11 | 61 |  |  | 20d |  |  | Sabre SME; EY Cargo | 48h |  | 100% | No BL | Overdue | Interactive Pilot |  |
| 63 | 1.4.9.7 | Determine Make-up of Standard Performance Reports |  | 5d | 2014-01-14 | 2014-01-21 | 61FF |  |  | 33d | 0d |  | Sabre SME; EY Caargo | 80h |  | 100% | No BL | Overdue | Interactive Pilot |  |
| 64 | 1.4.9.8 | Review KPI's and Standard Performance Reports with EY |  | 2d | 2014-01-21 | 2014-01-23 | 63 |  |  | 33d | 0d |  | Sabre SME; EY Cargo | 32h |  | 100% | No BL | Overdue | Interactive Pilot |  |
| 65 | 1.4.10 | Perform the Interactive Pilot End-of-Phase Review |  | 1d | 2014-03-28 | 2014-03-31 | 64 |  |  | 52d | 0d |  | Sabre PM; Sabre SME; EY Cargo; EY PM | 32h |  | 100% | No BL | Overdue | Interactive Pilot |  |
| 66 | 1.5 | Release 2 - Interactive Pilot Phase Complete | milestone | 0d | 2014-03-31 | 2014-03-31 | 65 |  |  | 52d |  |  | Sabre PM |  |  | 100% | No BL | Overdue | Interactive Pilot | S88010 |
| 67 | 1.6 | **Release 2 - Solution Adoption Phase** |  | 588.75d | 2012-01-24 A | 2014-05-14 |  | 13% | 511.44d | 20d |  |  |  | 2568h | 582.08h | 100% | No BL | Overdue | Solution Adoption |  |
| 68 | 1.6.1 | **Support Solution Definition and Design** |  | 27d | 2012-01-24 A | 2012-02-29 A |  | 100% |  |  |  |  |  | 56h | 56h | 100% | Complete |  | Solution Adoption |  |
| 69 | 1.6.1.1 | Support Detailed Solution Definition |  | 1d | 2012-02-29 A | 2012-02-29 A | 47, 2 | 100% |  |  |  |  | EY Cargo & IT; Sabre Cargo | 16h | 16h | 100% | Complete |  | Solution Adoption |  |
| 70 | 1.6.1.2 | **Support Detailed Solution Design** |  | 3d | 2012-01-24 A | 2012-01-26 A |  | 100% |  |  |  |  |  | 40h | 40h | 100% | Complete |  | Solution Adoption |  |
| 71 | 1.6.1.2.1 | Determine New GUI Screen Field Details |  | 2d | 2012-01-24 A | 2012-01-25 A | 46 | 100% |  |  |  | start no earlier than 2012-01-24 | EY Cargo & IT; Sabre Cargo | 32h | 32h | 100% | Complete |  | Solution Adoption |  |
| 72 | 1.6.1.2.2 | Signoff from customer on GUI Fields |  | 1d | 2012-01-26 A | 2012-01-26 A | 71 | 100% |  |  |  |  | EY Cargo | 8h | 8h | 100% | Complete |  | Solution Adoption |  |
| 73 | 1.6.2 | **Support Solution Build-Out** |  | 495.75d | 2012-03-01 A | 2014-02-11 |  | 13% | 429.44d | 86d |  |  |  | 1896h | 526.08h | 100% | No BL | Overdue | Solution Adoption |  |
| 74 | 1.6.2.1 | **Support Iteration Planning** |  | 265d | 2012-03-01 A | 2013-03-25 |  | 28% | 190.8d | 316.75d |  |  |  | 200h | 56h | 100% | No BL | Overdue | Solution Adoption |  |
| 75 | 1.6.2.1.1 | Support Iteration Planning 1 |  | 1d | 2012-03-01 A | 2012-03-01 A |  | 100% |  |  |  | start no earlier than 2012-03-01 | Sabre Agile Customer | 8h | 8h | 100% | Complete |  | Solution Adoption |  |
| 76 | 1.6.2.1.2 | Support Iteration Planning 2 |  | 1d | 2012-03-15 A | 2012-03-15 A | 75FS+10d | 100% |  |  |  | start no earlier than 2012-03-01 | Sabre Agile Customer | 8h | 8h | 100% | Complete |  | Solution Adoption |  |
| 77 | 1.6.2.1.3 | Support Iteration Planning 3 |  | 1d | 2012-03-30 A | 2012-03-30 A | 76FS+10d | 100% |  |  |  | start no earlier than 2012-03-01 | Sabre Agile Customer | 8h | 8h | 100% | Complete |  | Solution Adoption |  |
| 78 | 1.6.2.1.4 | Support Iteration Planning 4 |  | 1d | 2012-04-16 A | 2012-04-16 A | 77FS+10d | 100% |  |  |  | start no earlier than 2012-03-01 | Sabre Agile Customer | 8h | 8h | 100% | Complete |  | Solution Adoption |  |
| 79 | 1.6.2.1.5 | Support Iteration Planning 5 |  | 1d | 2012-05-01 A | 2012-05-01 A | 78FS+10d | 100% |  |  |  | start no earlier than 2012-03-01 | Sabre Agile Customer | 8h | 8h | 100% | Complete |  | Solution Adoption |  |
| 80 | 1.6.2.1.6 | Support Iteration Planning 6 |  | 1d | 2012-05-16 A | 2012-05-16 A | 79FS+10d | 100% |  |  |  | start no earlier than 2012-03-01 | Sabre Agile Customer | 8h | 8h | 100% | Complete |  | Solution Adoption |  |
| 81 | 1.6.2.1.7 | Support Iteration Planning 7 |  | 1d | 2012-05-31 A | 2012-05-31 A | 80FS+10d | 100% |  |  |  | start no earlier than 2012-03-01 | Sabre Agile Customer | 8h | 8h | 100% | Complete |  | Solution Adoption |  |
| 82 | 1.6.2.1.8 | Support Iteration Planning 8 |  | 1d | 2012-06-15 | 2012-06-15 | 81FS+10d |  |  | 316.75d | 0d | start no earlier than 2012-03-01 | Sabre Agile Customer | 8h |  | 100% | No BL | Overdue | Solution Adoption |  |
| 83 | 1.6.2.1.9 | Support Iteration Planning 9 |  | 1d | 2012-07-02 | 2012-07-02 | 82FS+10d |  |  | 316.75d | 0d | start no earlier than 2012-03-01 | Sabre Agile Customer | 8h |  | 100% | No BL | Overdue | Solution Adoption |  |
| 84 | 1.6.2.1.10 | Support Iteration Planning 10 |  | 1d | 2012-07-17 | 2012-07-17 | 83FS+10d |  |  | 316.75d | 0d | start no earlier than 2012-03-01 | Sabre Agile Customer | 8h |  | 100% | No BL | Overdue | Solution Adoption |  |
| 85 | 1.6.2.1.11 | Support Iteration Planning 11 |  | 1d | 2012-08-01 | 2012-08-01 | 84FS+10d |  |  | 316.75d | 0d | start no earlier than 2012-03-01 | Sabre Agile Customer | 8h |  | 100% | No BL | Overdue | Solution Adoption |  |
| 86 | 1.6.2.1.12 | Support Iteration Planning 12 |  | 1d | 2012-08-16 | 2012-08-16 | 85FS+10d |  |  | 316.75d | 0d | start no earlier than 2012-03-01 | Sabre Agile Customer | 8h |  | 100% | No BL | Overdue | Solution Adoption |  |
| 87 | 1.6.2.1.13 | Support Iteration Planning 13 |  | 1d | 2012-08-31 | 2012-08-31 | 86FS+10d |  |  | 316.75d | 0d | start no earlier than 2012-03-01 | Sabre Agile Customer | 8h |  | 100% | No BL | Overdue | Solution Adoption |  |
| 88 | 1.6.2.1.14 | Support Iteration Planning 14 |  | 1d | 2012-09-17 | 2012-09-17 | 87FS+10d |  |  | 316.75d | 0d | start no earlier than 2012-03-01 | Sabre Agile Customer | 8h |  | 100% | No BL | Overdue | Solution Adoption |  |
| 89 | 1.6.2.1.15 | Support Iteration Planning 15 |  | 1d | 2012-10-02 | 2012-10-02 | 88FS+10d |  |  | 316.75d | 0d | start no earlier than 2012-03-01 | Sabre Agile Customer | 8h |  | 100% | No BL | Overdue | Solution Adoption |  |
| 90 | 1.6.2.1.16 | Support Iteration Planning 16 |  | 1d | 2012-10-17 | 2012-10-17 | 89FS+10d |  |  | 316.75d | 0d | start no earlier than 2012-03-01 | Sabre Agile Customer | 8h |  | 100% | No BL | Overdue | Solution Adoption |  |
| 91 | 1.6.2.1.17 | Support Iteration Planning 17 |  | 1d | 2012-11-01 | 2012-11-01 | 90FS+10d |  |  | 316.75d | 0d | start no earlier than 2012-03-01 | Sabre Agile Customer | 8h |  | 100% | No BL | Overdue | Solution Adoption |  |
| 92 | 1.6.2.1.18 | Support Iteration Planning 18 |  | 1d | 2012-11-16 | 2012-11-16 | 91FS+10d |  |  | 316.75d | 0d | start no earlier than 2012-03-01 | Sabre Agile Customer | 8h |  | 100% | No BL | Overdue | Solution Adoption |  |
| 93 | 1.6.2.1.19 | Support Iteration Planning 19 |  | 1d | 2012-12-07 | 2012-12-07 | 92FS+10d |  |  | 316.75d | 0d | start no earlier than 2012-03-01 | Sabre Agile Customer | 8h |  | 100% | No BL | Overdue | Solution Adoption |  |
| 94 | 1.6.2.1.20 | Support Iteration Planning 20 |  | 1d | 2013-01-07 | 2013-01-07 | 93FS+10d |  |  | 316.75d | 0d | start no earlier than 2012-03-01 | Sabre Agile Customer | 8h |  | 100% | No BL | Overdue | Solution Adoption |  |
| 95 | 1.6.2.1.21 | Support Iteration Planning 21 |  | 1d | 2013-01-22 | 2013-01-22 | 94FS+10d |  |  | 316.75d | 0d | start no earlier than 2012-03-01 | Sabre Agile Customer | 8h |  | 100% | No BL | Overdue | Solution Adoption |  |
| 96 | 1.6.2.1.22 | Support Iteration Planning 22 |  | 1d | 2013-02-06 | 2013-02-06 | 95FS+10d |  |  | 316.75d | 0d | start no earlier than 2012-03-01 | Sabre Agile Customer | 8h |  | 100% | No BL | Overdue | Solution Adoption |  |
| 97 | 1.6.2.1.23 | Support Iteration Planning 23 |  | 1d | 2013-02-21 | 2013-02-21 | 96FS+10d |  |  | 316.75d | 0d | start no earlier than 2012-03-01 | Sabre Agile Customer | 8h |  | 100% | No BL | Overdue | Solution Adoption |  |
| 98 | 1.6.2.1.24 | Support Iteration Planning 24 |  | 1d | 2013-03-08 | 2013-03-08 | 97FS+10d |  |  | 316.75d | 0d | start no earlier than 2012-03-01 | Sabre Agile Customer | 8h |  | 100% | No BL | Overdue | Solution Adoption |  |
| 99 | 1.6.2.1.25 | Support Iteration Planning 25 |  | 1d | 2013-03-25 | 2013-03-25 | 98FS+10d |  |  | 316.75d |  | start no earlier than 2012-03-01 | Sabre Agile Customer | 8h |  | 100% | No BL | Overdue | Solution Adoption |  |
| 100 | 1.6.2.2 | Support Iteration and Release Planning | milestone | 0d | 2012-03-01 | 2012-03-01 | 47 |  |  | 581.75d | 0d | start no earlier than 2012-03-01 | Sabre Agile Customer |  |  | 100% | No BL | Overdue | Solution Adoption | S88015 |
| 101 | 1.6.2.3 | Support Iteration Development / Testing | milestone | 0d | 2012-03-01 | 2012-03-01 | 100 |  |  | 581.75d |  |  | Sabre Agile Customer; Sabre GTE |  |  | 100% | No BL | Overdue | Solution Adoption | S88020 |

Notes:
- 69: Final Solution Definition was created during the IPA Workshops Task 71

| ID | WBS | Task | Type | Duration | Start | Finish | Predecessors | Complete | Remaining | Total slack | Free slack | Constraint | Resources | Work | Actual work | Expected % Complete | Project Status Indicators | Overdue Flag | Life Cycle | Milestone ID |
| --- | --- | --- | --- | --- | --- | --- | --- | --- | --- | --- | --- | --- | --- | --- | --- | --- | --- | --- | --- | --- |
| 102 | 1.6.2.4 | **Air Vision Cargo Network Module Development Work** |  | 367.75d | 2012-03-12 A | 2013-08-27 |  | 13% | 320.83d | 5d |  |  |  | 1696h | 470.08h | 100% | No BL | Overdue | Solution Adoption |  |
| 103 | 1.6.2.4.1 | **GUI Design and Cost Module Changes pt I** |  | 277.12d | 2012-03-12 A | 2013-04-23 |  | 9% | 252.41d | 7.63d |  |  |  | 640h | 238.08h | 100% | No BL | Overdue | Solution Adoption |  |
| 104 | 1.6.2.4.1.1 | Design GUI Screens |  | 34d | 2012-06-20 | 2012-08-06 |  |  |  | 178.75d |  | start no earlier than 2012-03-01 | Sabre Dev | 272h |  | 100% | No BL | Overdue | Solution Adoption |  |
| 105 | 1.6.2.4.1.2 | Cost Module Changes pt I |  | 277.12d | 2012-03-12 A | 2013-04-23 |  | 2% | 271.24d | 7.63d |  | start no earlier than 2012-03-12 | EY Cargo; Sabre Cargo | 224h | 94.08h | 100% | No BL | Overdue | Solution Adoption |  |
| 106 | 1.6.2.4.1.3 | Booking evaluation changes |  | 9d | 2012-03-30 A | 2012-04-11 A | 105 | 100% |  |  |  |  |  |  |  | 100% | Complete |  | Solution Adoption |  |
| 107 | 1.6.2.4.1.4 | Request build and internal testing |  | 14d | 2012-04-12 A | 2012-05-01 A | 106 | 100% |  |  |  |  | Sabre Dev | 112h | 112h | 100% | Complete |  | Solution Adoption |  |
| 108 | 1.6.2.4.1.5 | Workshop to demo new screens |  | 1d | 2012-05-02 A | 2012-05-02 A | 107, 104 | 100% |  |  |  |  | EY Cargo; Sabre PM; Sabre SME; Sabre Dev | 32h | 32h | 100% | Complete |  | Solution Adoption |  |
| 109 | 1.6.2.4.1.6 | New Screen Demonstration to Etihad | milestone | 0d | 2012-05-02 A | 2012-05-02 A | 108SS | 100% |  |  |  |  |  |  |  | 100% | Complete |  | Solution Adoption | S88025 |
| 110 | 1.6.2.4.1.7 | Give: Etihad Screen Shot and Cost Module Screen Demos screenshots | milestone | 0d | 2012-05-02 A | 2012-05-02 A | 109 | 100% |  |  |  |  | Sabre PM |  |  | 100% | Complete |  | Solution Adoption | S88030 |
| 111 | 1.6.2.4.1.8 | Get: Etihad sign off on screen design | milestone | 0d | 2012-05-08 A | 2012-05-08 A | 110FS+5d | 100% |  |  |  |  | EY Cargo |  |  | 100% | Complete |  | Solution Adoption | S88035 |
| 112 | 1.6.2.4.2 | **Cost Module Changes pt II** |  | 45d | 2012-04-12 A | 2012-06-13 |  | 99% | 0d | 216.75d |  |  |  | 232h | 232h | 100% | No BL | Overdue | Solution Adoption |  |
| 113 | 1.6.2.4.2.1 | Cost Module Changes pt II |  | 12d | 2012-04-12 A | 2012-04-27 A | 106 | 100% |  |  |  |  | Sabre Dev | 96h | 96h | 100% | Complete |  | Solution Adoption |  |
| 114 | 1.6.2.4.2.2 | Booking Evaluation changes |  | 14d | 2012-04-30 A | 2012-05-17 A | 113 | 100% |  |  |  |  |  |  |  | 100% | Complete |  | Solution Adoption |  |
| 115 | 1.6.2.4.2.3 | Request Build and internal testing |  | 14d | 2012-05-18 A | 2012-06-06 A | 114 | 100% |  |  |  |  | Sabre Dev | 112h | 112h | 100% | Complete |  | Solution Adoption |  |
| 116 | 1.6.2.4.2.4 | Workshop to demo Cost Module changes |  | 1d | 2012-06-07 A | 2012-06-07 A | 115 | 100% |  |  |  |  | Sabre Dev; Sabre PM; EY Cargo | 24h | 24h | 100% | Complete |  | Solution Adoption |  |
| 117 | 1.6.2.4.2.5 | Cost Module Demonstration | milestone | 0d | 2012-06-07 A | 2012-06-07 A | 116SS | 100% |  |  |  |  |  |  |  | 100% | Complete |  | Solution Adoption | S88040 |
| 118 | 1.6.2.4.2.6 | Give: Etihad Cost Module Screen Changes pt II screen shots | milestone | 0d | 2012-06-07 | 2012-06-07 | 117 |  |  | 216.75d | 0d |  | Sabre PM |  |  | 100% | No BL | Overdue | Solution Adoption | S88045 |
| 119 | 1.6.2.4.2.7 | Get: Etihad sign off on cost module screen designs and calcuatlations | milestone | 0d | 2012-06-13 | 2012-06-13 | 118FS+5d |  |  | 216.75d |  |  | EY Cargo |  |  | 100% | No BL | Overdue | Solution Adoption | S88050 |
| 120 | 1.6.2.4.3 | **Network Module Booking Evaluation & Cost Module pt III** |  | 235.75d | 2012-05-18 A | 2013-05-02 |  | 5% | 224.55d | 0d |  |  |  | 224h |  | 100% | No BL | Overdue | Solution Adoption |  |
| 121 | 1.6.2.4.3.1 | Cost Module changes pt III |  | 12d | 2012-05-18 A | 2012-06-04 | 114 | 40% | 7.2d | 0d |  |  |  |  |  | 100% | No BL | Overdue | Solution Adoption |  |
| 122 | 1.6.2.4.3.2 | Modify internal booking evaluation processes |  | 8d | 2012-06-08 | 2012-06-19 | 121 |  |  | 0d |  |  | Sabre Dev | 64h |  | 100% | No BL | Overdue | Solution Adoption |  |
| 123 | 1.6.2.4.3.3 | Modifed Bid Price Find Screen |  | 16d | 2012-06-20 | 2012-07-11 | 122 |  |  | 0d |  |  |  |  |  | 100% | No BL | Overdue | Solution Adoption |  |
| 124 | 1.6.2.4.3.4 | Request build and internal testing |  | 16d | 2012-08-07 | 2012-08-28 | 123 |  |  | 0d |  |  | Sabre Dev | 128h |  | 100% | No BL | Overdue | Solution Adoption |  |
| 125 | 1.6.2.4.3.5 | Workshop to demo Booking evaluation changes |  | 1d | 2013-04-23 | 2013-04-24 | 124 |  |  | 0d |  |  | Sabre Dev; Sabre SME; Sabre PM; EY Cargo | 32h |  | 100% | No BL | Overdue | Solution Adoption |  |
| 126 | 1.6.2.4.3.6 | Booking Evaluatoin Demonstration | milestone | 0d | 2013-04-23 | 2013-04-23 | 125SS |  |  | 0d |  |  |  |  |  | 100% | No BL | Overdue | Solution Adoption | S88055 |
| 127 | 1.6.2.4.3.7 | Give: Etihad recording of Booking Evaluation changes demon for signoff | milestone | 0d | 2013-04-23 | 2013-04-23 | 126 |  |  | 0d |  |  | Sabre |  |  | 100% | No BL | Overdue | Solution Adoption | S88060 |
| 128 | 1.6.2.4.3.8 | Get: Etihad signoff on booking evaluation process changes | milestone | 0d | 2013-05-02 | 2013-05-02 | 127FS+7d |  |  | 0d |  |  | EY Cargo & IT |  |  | 100% | No BL | Overdue | Solution Adoption | S88065 |

| ID | WBS | Task | Type | Duration | Start | Finish | Predecessors | Total slack | Free slack | Constraint | Resources | Work | Expected % Complete | Project Status Indicators | Overdue Flag | Life Cycle | Milestone ID |
| --- | --- | --- | --- | --- | --- | --- | --- | --- | --- | --- | --- | --- | --- | --- | --- | --- | --- |
| 129 | 1.6.2.4.3.9 | **Cost Module and Network Module GUI** |  | 47d | 2012-07-12 | 2012-09-14 |  | 130d |  |  |  |  | 100% | No BL | Overdue | Solution Adoption |  |
| 130 | 1.6.2.4.3.9.1 | Cost Module pt IV |  | 23d | 2012-07-12 | 2012-08-13 | 123 | 130d | 0d |  |  |  | 100% | No BL | Overdue | Solution Adoption |  |
| 131 | 1.6.2.4.3.9.2 | Network Module GUI |  | 10d | 2012-08-14 | 2012-08-27 | 130 | 130d | 0d |  |  |  | 100% | No BL | Overdue | Solution Adoption |  |
| 132 | 1.6.2.4.3.9.3 | Request build and internal testing |  | 14d | 2012-08-28 | 2012-09-14 | 131 | 139.75d | 0d |  |  |  | 100% | No BL | Overdue | Solution Adoption |  |
| 133 | 1.6.2.4.3.10 | Workshop to demo Cost Module and GUI changes |  | 1d | 2012-09-17 | 2012-09-17 | 132 | 139.75d | 0d |  |  |  | 100% | No BL | Overdue | Solution Adoption |  |
| 134 | 1.6.2.4.3.11 | Cost Module Demonstration | milestone | 0d | 2012-09-17 | 2012-09-17 | 133SS | 139.75d | 0d |  |  |  | 100% | No BL | Overdue | Solution Adoption | S88070 |
| 135 | 1.6.2.4.3.12 | Give: Etihad Cost and GUI Screen Changes | milestone | 0d | 2012-09-17 | 2012-09-17 | 134 | 149.75d |  |  |  |  | 100% | No BL | Overdue | Solution Adoption | S88075 |
| 136 | 1.6.2.4.3.13 | Get: Etihad signoff on cost module and NM GUI changes | milestone | 0d | 2012-09-28 | 2012-09-28 | 134FS+10d | 139.75d |  |  |  |  | 100% | No BL | Overdue | Solution Adoption | S88080 |
| 137 | 1.6.2.4.4 | **Network Module Interfaces and Technology Changes** |  | 33d | 2012-08-29 | 2012-10-12 |  | 129.75d |  |  |  | 280h | 100% | No BL | Overdue | Solution Adoption |  |
| 138 | 1.6.2.4.4.1 | Create Booking Evaluation Interfaces |  | 19d | 2012-08-29 | 2012-09-24 | 131 | 129.75d | 0d |  | Sabre Dev | 152h | 100% | No BL | Overdue | Solution Adoption |  |
| 139 | 1.6.2.4.4.2 | Get: Sample "Booking Evaluation Call" and "Request for Additional Call" messages from CHAMP | milestone | 0d | 2012-09-24 | 2012-09-24 | 138 | 129.75d | 0d |  | Sabre Dev; CHAMP |  | 100% | No BL | Overdue | Solution Adoption | S88085 |
| 140 | 1.6.2.4.4.3 | Test sample messages received from CHAMP |  | 2d | 2012-09-25 | 2012-09-26 | 139 | 129.75d | 0d |  | Sabre Dev; Sabre GTE | 32h | 100% | No BL | Overdue | Solution Adoption |  |
| 141 | 1.6.2.4.4.4 | Air Vision Cargo Technology changes (does not include Oracle changes) |  | 4d | 2012-09-27 | 2012-10-02 | 140 | 129.75d | 0d |  | Sabre Dev | 32h | 100% | No BL | Overdue | Solution Adoption |  |
| 142 | 1.6.2.4.4.5 | Final build and fixes prior to GTE |  | 8d | 2012-10-03 | 2012-10-12 | 141 | 129.75d |  |  | Sabre Dev | 64h | 100% | No BL | Overdue | Solution Adoption |  |
| 143 | 1.6.2.4.5 | Code Complete | milestone | 0d | 2013-05-02 | 2013-05-02 | 103, 112, 120, 137 | 0d |  |  |  |  | 100% | No BL | Overdue | Solution Adoption | S88090 |
| 144 | 1.6.2.4.6 | **Internal Testing by GTE team** |  | 30d | 2013-05-02 | 2013-06-13 |  | 0d |  |  |  | 320h | 100% | No BL | Overdue | Solution Adoption |  |
| 145 | 1.6.2.4.6.1 | Pass 1 |  | 10d | 2013-05-02 | 2013-05-16 | 143 | 0d |  |  | Sabre GTE | 80h | 100% | No BL | Overdue | Solution Adoption |  |
| 146 | 1.6.2.4.6.2 | Pass 2 |  | 10d | 2013-05-16 | 2013-05-30 | 145 | 0d |  |  | Sabre GTE [50%]; EY Test [50%] | 80h | 100% | No BL | Overdue | Solution Adoption |  |
| 147 | 1.6.2.4.6.3 | Pass 3 |  | 10d | 2013-05-30 | 2013-06-13 | 146 | 0d |  |  | Sabre GTE; EY Test | 160h | 100% | No BL | Overdue | Solution Adoption |  |
| 148 | 1.6.2.4.7 | Network Module Development and GTE Testing Complete | milestone | 0d | 2013-06-13 | 2013-06-13 | 144 | 0d |  |  |  |  | 100% | No BL | Overdue | Solution Adoption | S88095 |
| 149 | 1.6.2.4.8 | **Split shipment BRID** |  | 53d | 2013-06-13 | 2013-08-27 |  | 5d |  |  |  |  | 100% | No BL | Overdue |  |  |
| 150 | 1.6.2.4.8.1 | Split shipment handling coding |  | 22d | 2013-06-13 | 2013-07-15 | 147 | 5d | 0d |  |  |  | 100% | No BL | Overdue |  |  |
| 151 | 1.6.2.4.8.2 | Request build and internal testing |  | 1d | 2013-07-15 | 2013-07-16 | 150 | 5d | 0d | start no earlier than 2012-11-01 |  |  | 100% | No BL | Overdue |  |  |
| 152 | 1.6.2.4.8.3 | GTE Pass 1 |  | 10d | 2013-07-16 | 2013-07-30 | 151 | 5d | 0d |  |  |  | 100% | No BL | Overdue |  |  |
| 153 | 1.6.2.4.8.4 | GTE Pass 2 |  | 10d | 2013-07-30 | 2013-08-13 | 152 | 5d | 0d |  |  |  | 100% | No BL | Overdue |  |  |
| 154 | 1.6.2.4.8.5 | GTE Pass 3 |  | 10d | 2013-08-13 | 2013-08-27 | 153 | 5d | 0d |  |  |  | 100% | No BL | Overdue |  |  |
| 155 | 1.6.2.4.9 | Split shipment handling coding complete | milestone | 0d | 2013-08-27 | 2013-08-27 | 154 | 5d |  |  |  |  | 100% | No BL | Overdue |  |  |
| 156 | 1.6.2.5 | Support On_site Customer Collaboration | milestone | 0d | 2013-06-13 | 2013-06-13 | 144 | 193d | 173d |  | Sabre SME; Sabre PM |  | 100% | No BL | Overdue | Solution Adoption | S88100 |
| 157 | 1.6.2.6 | Support Business Process Improvements | milestone | 0d | 2014-02-11 | 2014-02-11 | 56, 156 | 20d | 0d |  | Sabre SME |  | 100% | No BL | Overdue | Solution Adoption | S88105 |

Notes:
- 139: This is required to perform unit testing of the incoming messages before a build is requested. Manually pushing the sample messages through the system will ensure the messages can be consumed correctly prior to GTE testing
- 145: Pass 1 includes 3 days for initial code check in and build request
- 146: A more robust until test will be performed using sample messages from CHAMP in the Dev environment. Full integration testing will take place during UVT

| ID | WBS | Task | Type | Duration | Start | Finish | Predecessors | Total slack | Free slack | Resources | Work | Expected % Complete | Project Status Indicators | Overdue Flag | Life Cycle | Milestone ID |
| --- | --- | --- | --- | --- | --- | --- | --- | --- | --- | --- | --- | --- | --- | --- | --- | --- |
| 158 | 1.6.3 | **Support Solution Validation and Installation** |  | 5d | 2013-06-13 | 2013-06-20 |  | 0d |  |  | 80h | 100% | No BL | Overdue | Solution Adoption |  |
| 159 | 1.6.3.1 | Plan and Perform the Installation (For Each Environment As Needed: Training, Validation, etc.) |  | 5d | 2013-06-13 | 2013-06-20 | 148 | 0d |  | Sabre PM; Sabre Tech SME | 80h | 100% | No BL | Overdue | Solution Adoption |  |
| 160 | 1.6.4 | System deployed and available for local training | milestone | 0d | 2013-06-20 | 2013-06-20 | 159 | 254d |  |  |  | 100% | No BL | Overdue | Solution Adoption | S88110 |
| 161 | 1.6.5 | **Consulting Activities** |  | 66d | 2014-02-11 | 2014-05-14 |  | 20d |  |  | 512h | 100% | No BL | Overdue | Solution Adoption |  |
| 162 | 1.6.5.1 | Implement agreed recommended processess and practices | milestone | 0d | 2014-02-11 | 2014-02-11 | 157 | 86d |  | Sabre SME; EY Cargo |  | 100% | No BL | Overdue | Solution Adoption |  |
| 163 | 1.6.5.2 | Implementation of Organization structures related to Network Module |  | 30d | 2014-03-31 | 2014-05-12 | 56, 148 | 22d |  | Sabre SME; EY Cargo | 480h | 100% | No BL | Overdue | Solution Adoption |  |
| 164 | 1.6.5.3 | Business Training on how KPI's and Standard Performance Reports will be used |  | 2d | 2014-05-12 | 2014-05-14 | 56, 156, 157 | 20d |  | Sabre SME; EY Cargo | 32h | 100% | No BL | Overdue | Solution Adoption |  |
| 165 | 1.6.6 | Perform the Solution Adoption End-of-Phase Review |  | 1d | 2014-02-11 | 2014-02-12 | 158FS+1d, 148, 157, 156 | 85d | 0d | Sabre Cargo; EY Cargo; EY PM | 24h | 100% | No BL | Overdue | Solution Adoption |  |
| 166 | 1.6.7 | Release 2 - Solution Adoption Phase Complete | milestone | 0d | 2014-02-12 | 2014-02-12 | 165 | 85d |  |  |  | 100% | No BL | Overdue | Solution Adoption | S88115 |
| 167 | 1.7 | **Release 2 - Project Transition Phase** |  | 295d | 2013-04-24 | 2014-06-11 |  | 0d |  |  | 4034.4h | 100% | No BL | Overdue | Project Transistion |  |
| 168 | 1.7.1 | **Perform Customer Validation and Training** |  | 295d | 2013-04-24 | 2014-06-11 |  | 0d |  |  | 3106.4h | 100% | No BL | Overdue | Project Transistion |  |
| 169 | 1.7.1.1 | Support Customer Validation |  | 10d | 2014-05-14 | 2014-05-28 | 158 | 10d |  | Sabre Tech SME; Sabre SME; Sabre OR | 240h | 100% | No BL | Overdue | Project Transistion |  |
| 170 | 1.7.1.2 | **Build Deployment and Soak (End to End) Testing** |  | 122d | 2013-04-24 | 2013-10-11 |  | 6d |  |  | 2386.4h | 100% | No BL | Overdue | Project Transistion |  |
| 171 | 1.7.1.2.1 | Calibration Exercise |  | 30d | 2013-04-24 | 2013-06-05 | 145FS-30d | 6d |  | Sabre OR; Sabre SME; EY Cargo | 720h | 100% | No BL | Overdue | Project Transistion |  |
| 172 | 1.7.1.2.2 | Load Calibration and Cost data in EY Test build |  | 2d | 2013-06-20 | 2013-06-24 | 171, 159SS | 0d |  | EY IT [50%]; Sabre Adv Support [50%]; Sabre Tech SME [50%] | 24h | 100% | No BL | Overdue | Project Transistion |  |
| 173 | 1.7.1.2.3 | GET: CHAMP has deployed build into EY Test Environment | milestone | 0d | 2013-06-17 | 2013-06-17 | 159SS+2d | 5d |  | EY IT; Sabre PM |  | 100% | No BL | Overdue | Project Transistion | S88120 |
| 174 | 1.7.1.2.4 | Train the Trainer classroom training for testers |  | 5d | 2013-06-24 | 2013-07-01 | 173, 172 | 0d |  | Sabre SME; EY Cargo | 80h | 100% | No BL | Overdue | Project Transistion |  |
| 175 | 1.7.1.2.5 | **Customer UVT** |  | 74d | 2013-07-01 | 2013-10-11 |  | 0d |  |  | 1562.4h | 100% | No BL | Overdue | Project Transistion |  |
| 176 | 1.7.1.2.5.1 | UVT Base System Begin | milestone | 0d | 2013-07-01 | 2013-07-01 | 177SS | 247d |  |  |  | 100% | No BL | Overdue | Project Transistion | S88125 |
| 177 | 1.7.1.2.5.2 | Air Vision Cargo Interface Integration Testing with Cargospot |  | 10d | 2013-07-01 | 2013-07-15 | 159, 172, 173, 174 | 0d |  | EY Cargo; EY IT [50%]; CHAMP [75%]; Sabre SME | 260h | 100% | No BL | Overdue | Project Transistion |  |
| 178 | 1.7.1.2.5.3 | Soak Test - Parallel run (Test and Prod) |  | 36d | 2013-07-15 | 2013-09-03 | 177 | 0d |  | Sabre SME [23.6%]; EY Cargo [59.1%]; EY IT [23.6%]; CHAMP [23.6%] | 374.4h | 100% | No BL | Overdue | Project Transistion |  |
| 179 | 1.7.1.2.5.4 | **Split Shipment Handling Code deployment** |  | 28d | 2013-09-03 | 2013-10-11 | 178 | 0d |  |  | 928h | 100% | No BL | Overdue |  |  |
| 180 | 1.7.1.2.5.4.1 | Plan and Perform Split Shipment Handling code deployment |  | 5d | 2013-09-03 | 2013-09-10 | 155 | 0d |  | Sabre SME; EY IT | 80h | 100% | No BL | Overdue |  |  |
| 181 | 1.7.1.2.5.4.2 | Validate build successfully deployed |  | 1d | 2013-09-10 | 2013-09-11 | 180 | 0d |  | Sabre SME; EY IT | 16h | 100% | No BL | Overdue |  |  |
| 182 | 1.7.1.2.5.4.3 | Train the trainer classroom training for testers |  | 2d | 2013-09-11 | 2013-09-13 | 181 | 0d |  | Sabre SME; EY Cargo | 32h | 100% | No BL | Overdue |  |  |
| 183 | 1.7.1.2.5.4.4 | Soak Test - Parallel run (Test and Prod) |  | 20d | 2013-09-13 | 2013-10-11 | 182 | 0d |  | EY Cargo; EY; IT; Sabre SME; Sabre PM | 800h | 100% | No BL | Overdue |  |  |
| 184 | 1.7.1.2.5.5 | UVT Base System End | milestone | 0d | 2013-10-11 | 2013-10-11 | 177, 183 | 0d |  |  |  | 100% | No BL | Overdue | Project Transistion | S88130 |
| 185 | 1.7.1.2.6 | Go/No Go for Production Deployment | milestone | 0d | 2013-10-11 | 2013-10-11 | 184 | 48d | 30d | Sabre Cargo; EY Cargo; EY IT |  | 100% | No BL | Overdue | Project Transistion | S88135 |
| 186 | 1.7.1.3 | Perform End-User Training |  | 5d | 2013-10-11 | 2013-10-18 | 184FS-10d | 0d |  | Sabre SME; EY Cargo | 80h | 100% | No BL | Overdue | Project Transistion |  |

Notes:
- 162: This task does not make logical sense to implement prior to user training and system rollout. This will be performed during the consulting activities in the Project Transition Phase (Task 168)
- 172: This task will be carried out in conjunction with Task 145 Plan and Perform Deployment
- 173: The CHAMP system is required to be deployed no later than 11/23/12 to ensure training and testnig can proceed. During the installation phase connectivity will be tested between the systems but actual interface testing will be covered as part of UVT

| ID | WBS | Task | Type | Duration | Start | Finish | Predecessors | Complete | Remaining | Total slack | Free slack | Constraint | Resources | Work | Actual work | Expected % Complete | Project Status Indicators | Overdue Flag | Life Cycle | Milestone ID |
| --- | --- | --- | --- | --- | --- | --- | --- | --- | --- | --- | --- | --- | --- | --- | --- | --- | --- | --- | --- | --- |
| 187 | 1.7.1.4 | **Consulting Activities** |  | 168d | 2013-10-18 | 2014-06-11 |  |  |  | 0d |  |  |  | 400h |  | 100% | No BL | Overdue | Project Transistion |  |
| 188 | 1.7.1.4.1 | Implement KPI monitoring and utliziation of Standard Performance Reports |  | 10d | 2013-10-18 | 2013-11-01 | 186 |  |  | 93d | 0d |  | Sabre SME; EY Cargo | 160h |  | 100% | No BL | Overdue | Project Transistion |  |
| 189 | 1.7.1.4.2 | Begin Performance Monitoring | milestone | 0d | 2013-12-13 | 2013-12-13 | 188FS+30d |  |  | 93d | 0d |  | Sabre SME; EY Cargo |  |  | 100% | No BL | Overdue | Project Transistion | S88140 |
| 190 | 1.7.1.4.3 | Implement agree recommended processes and practices |  | 10d | 2014-05-28 | 2014-06-11 | 186 |  |  | 0d |  |  | Sabre SME; EY Cargo | 160h |  | 100% | No BL | Overdue | Project Transistion |  |
| 191 | 1.7.1.4.4 | End Performance Monitoring | milestone | 0d | 2014-01-24 | 2014-01-24 | 189FS+30d |  |  | 93d | 0d |  | SabreSME |  |  | 100% | No BL | Overdue | Project Transistion | S88145 |
| 192 | 1.7.1.4.5 | Present Performance Monitoring Results to Etihad |  | 5d | 2014-01-24 | 2014-01-31 | 191 |  |  | 93d |  |  | Sabre SME; EY Cargo | 80h |  | 100% | No BL | Overdue | Project Transistion |  |
| 193 | 1.7.2 | **Perform Production Cutover and Support** |  | 102d | 2013-11-01 | 2014-03-25 |  |  |  | 18d |  |  |  | 736h |  | 100% | No BL | Overdue | Project Transistion |  |
| 194 | 1.7.2.1 | Plan Production Cutover |  | 15d | 2013-11-01 | 2013-11-22 | 184FS-15d |  |  | 18d | 0d |  | Sabre Tech SME; Sabre PM; EY IT; EY Cargo | 480h |  | 100% | No BL | Overdue | Project Transistion |  |
| 195 | 1.7.2.2 | Perform Production Cutover |  | 1d | 2013-11-22 | 2013-11-25 | 194, 185 |  |  | 18d | 0d |  | Sabre Tech SME; EY IT | 16h |  | 100% | No BL | Overdue | Project Transistion |  |
| 196 | 1.7.2.3 | Cutover to Production | milestone | 0d | 2013-11-25 | 2013-11-25 | 195 |  |  | 18d | 0d |  |  |  |  | 100% | No BL | Overdue | Project Transistion | S88150 |
| 197 | 1.7.2.4 | Perform Post-Cutover Customer Support |  | 30d | 2014-02-11 | 2014-03-25 | 196 |  |  | 18d | 0d |  | Sabre SME | 240h |  | 100% | No BL | Overdue | Project Transistion |  |
| 198 | 1.7.3 | **Transition to Customer Care** |  | 38d | 2013-11-22 | 2014-01-15 |  |  |  | 65.25d |  |  |  | 72h |  | 100% | No BL | Overdue | Project Transistion |  |
| 199 | 1.7.3.1 | Plan Customer Care Transition |  | 5d | 2013-11-22 | 2013-11-29 | 194 |  |  | 65.25d | 0d |  | Sabre PM | 40h |  | 100% | No BL | Overdue | Project Transistion |  |
| 200 | 1.7.3.2 | Perform Customer Care Transition |  | 1d | 2014-01-14 | 2014-01-15 | 199 |  |  | 67d | 49d |  | Sabre PM; Sabre CC; EY Cargo; EY IT | 32h |  | 100% | No BL | Overdue | Project Transistion |  |
| 201 | 1.7.4 | **Perform Project Close-Out and Review** |  | 38d | 2014-03-25 | 2014-05-16 |  |  |  | 18d |  |  |  | 120h |  | 100% | No BL | Overdue | Project Transistion |  |
| 202 | 1.7.4.1 | Perform Project Close-Out |  | 3d | 2014-03-25 | 2014-03-28 | 196, 197, 200 |  |  | 18d | 0d |  | Sabre PM; EY PM; EY Cargo | 72h |  | 100% | No BL | Overdue | Project Transistion |  |
| 203 | 1.7.4.2 | Perform Post-Project Review |  | 2d | 2014-05-14 | 2014-05-16 | 202 |  |  | 18d | 0d |  | Sabre PM; EY PM; EY Cargo | 48h |  | 100% | No BL | Overdue | Project Transistion |  |
| 204 | 1.7.5 | Release 2 - Project Transition Phase Complete | milestone | 0d | 2014-05-16 | 2014-05-16 | 202, 203 |  |  | 18d |  |  |  |  |  | 100% | No BL | Overdue | Project Transistion | S88155 |
| 205 | 2 | **Project Management** |  | 598.75d | 2012-01-12 A | 2014-05-16 |  | 4% | 575.36d | 18d |  |  |  | 13648h | 120h | 100% | No BL | Overdue | Project Management |  |
| 206 | 2.1 | Project Planning |  | 5d | 2012-01-12 A | 2012-01-18 A |  | 100% |  |  |  |  | Sabre PM; EY PM; Sabre SME | 120h | 120h | 100% | Complete |  | Project Management |  |
| 207 | 2.2 | **Project Execution and Control** |  | 293.75d | 2012-02-29 | 2013-05-02 |  |  |  | 289d |  |  |  | 13528h |  | 100% | No BL | Overdue | Project Management |  |
| 208 | 2.2.1 | Manage Project Scope |  | 1d | 2013-04-16 | 2013-04-17 |  |  |  | 300d |  | start no earlier than 2012-01-23 | Sabre PM; EY PM | 16h |  | 100% | No BL | Overdue | Project Management |  |
| 209 | 2.2.2 | Manage Project Schedule |  | 1d | 2013-04-17 | 2013-04-18 |  |  |  | 299d |  | start no earlier than 2012-01-23 | Sabre PM; EY PM | 16h |  | 100% | No BL | Overdue | Project Management |  |
| 210 | 2.2.3 | Manage Project Issues |  | 1d | 2013-04-18 | 2013-04-19 |  |  |  | 298d |  | start no earlier than 2012-01-23 | Sabre PM; EY PM | 16h |  | 100% | No BL | Overdue | Project Management |  |
| 211 | 2.2.4 | Manage Project Risks |  | 1d | 2013-04-19 | 2013-04-22 |  |  |  | 297d |  | start no earlier than 2012-01-23 | Sabre PM; EY PM | 16h |  | 100% | No BL | Overdue | Project Management |  |
| 212 | 2.2.5 | Manage Project Quality |  | 1d | 2013-04-22 | 2013-04-23 |  |  |  | 296d |  | start no earlier than 2012-01-23 | Sabre PM; EY PM | 16h |  | 100% | No BL | Overdue | Project Management |  |

Notes:
- 190: This is when task 146 Consulting Activities will actually be performed and not as listed in the WO
- 191: The will be a recurring activity. Only the first instance is covered in this project schedule
- 206: Components defined as part of this PM Phase are as defined in the contract.

| ID | WBS | Task | Duration | Start | Finish | Total slack | Constraint | Resources | Work | Expected % Complete | Project Status Indicators | Overdue Flag | Life Cycle |
| --- | --- | --- | --- | --- | --- | --- | --- | --- | --- | --- | --- | --- | --- |
| 213 | 2.2.6 | **Manage Project Scope, Schedule, Issues & Risks** | 278d | 2012-02-29 | 2013-04-10 | 304.75d |  | Sabre PM; EY PM; EY Cargo | 6672h | 100% | No BL | Overdue | Project Management |
| 214 | 2.2.6.1 | Manage Project Scope, Schedule, Issues & Risks 1 | 1d | 2012-02-29 | 2012-02-29 | 581.75d | start no earlier than 2012-02-29 |  |  | 100% | No BL | Overdue | Project Management |
| 215 | 2.2.6.2 | Manage Project Scope, Schedule, Issues & Risks 2 | 1d | 2012-03-07 | 2012-03-07 | 576.75d | start no earlier than 2012-03-07 |  |  | 100% | No BL | Overdue | Project Management |
| 216 | 2.2.6.3 | Manage Project Scope, Schedule, Issues & Risks 3 | 1d | 2012-03-14 | 2012-03-14 | 570.75d | start no earlier than 2012-03-14 |  |  | 100% | No BL | Overdue | Project Management |
| 217 | 2.2.6.4 | Manage Project Scope, Schedule, Issues & Risks 4 | 1d | 2012-03-21 | 2012-03-21 | 565.75d | start no earlier than 2012-03-21 |  |  | 100% | No BL | Overdue | Project Management |
| 218 | 2.2.6.5 | Manage Project Scope, Schedule, Issues & Risks 5 | 1d | 2012-03-28 | 2012-03-28 | 560.75d | start no earlier than 2012-03-28 |  |  | 100% | No BL | Overdue | Project Management |
| 219 | 2.2.6.6 | Manage Project Scope, Schedule, Issues & Risks 6 | 1d | 2012-04-04 | 2012-04-04 | 555.75d | start no earlier than 2012-04-04 |  |  | 100% | No BL | Overdue | Project Management |
| 220 | 2.2.6.7 | Manage Project Scope, Schedule, Issues & Risks 7 | 1d | 2012-04-11 | 2012-04-11 | 550.75d | start no earlier than 2012-04-11 |  |  | 100% | No BL | Overdue | Project Management |
| 221 | 2.2.6.8 | Manage Project Scope, Schedule, Issues & Risks 8 | 1d | 2012-04-18 | 2012-04-18 | 545.75d | start no earlier than 2012-04-18 |  |  | 100% | No BL | Overdue | Project Management |
| 222 | 2.2.6.9 | Manage Project Scope, Schedule, Issues & Risks 9 | 1d | 2012-04-25 | 2012-04-25 | 540.75d | start no earlier than 2012-04-25 |  |  | 100% | No BL | Overdue | Project Management |
| 223 | 2.2.6.10 | Manage Project Scope, Schedule, Issues & Risks 10 | 1d | 2012-05-02 | 2012-05-02 | 535.75d | start no earlier than 2012-05-02 |  |  | 100% | No BL | Overdue | Project Management |
| 224 | 2.2.6.11 | Manage Project Scope, Schedule, Issues & Risks 11 | 1d | 2012-05-09 | 2012-05-09 | 530.75d | start no earlier than 2012-05-09 |  |  | 100% | No BL | Overdue | Project Management |
| 225 | 2.2.6.12 | Manage Project Scope, Schedule, Issues & Risks 12 | 1d | 2012-05-16 | 2012-05-16 | 525.75d | start no earlier than 2012-05-16 |  |  | 100% | No BL | Overdue | Project Management |
| 226 | 2.2.6.13 | Manage Project Scope, Schedule, Issues & Risks 13 | 1d | 2012-05-23 | 2012-05-23 | 520.75d | start no earlier than 2012-05-23 |  |  | 100% | No BL | Overdue | Project Management |
| 227 | 2.2.6.14 | Manage Project Scope, Schedule, Issues & Risks 14 | 1d | 2012-05-30 | 2012-05-30 | 515.75d | start no earlier than 2012-05-30 |  |  | 100% | No BL | Overdue | Project Management |
| 228 | 2.2.6.15 | Manage Project Scope, Schedule, Issues & Risks 15 | 1d | 2012-06-06 | 2012-06-06 | 510.75d | start no earlier than 2012-06-06 |  |  | 100% | No BL | Overdue | Project Management |
| 229 | 2.2.6.16 | Manage Project Scope, Schedule, Issues & Risks 16 | 1d | 2012-06-13 | 2012-06-13 | 505.75d | start no earlier than 2012-06-13 |  |  | 100% | No BL | Overdue | Project Management |
| 230 | 2.2.6.17 | Manage Project Scope, Schedule, Issues & Risks 17 | 1d | 2012-06-20 | 2012-06-20 | 500.75d | start no earlier than 2012-06-20 |  |  | 100% | No BL | Overdue | Project Management |
| 231 | 2.2.6.18 | Manage Project Scope, Schedule, Issues & Risks 18 | 1d | 2012-06-27 | 2012-06-27 | 495.75d | start no earlier than 2012-06-27 |  |  | 100% | No BL | Overdue | Project Management |
| 232 | 2.2.6.19 | Manage Project Scope, Schedule, Issues & Risks 19 | 1d | 2012-07-04 | 2012-07-04 | 490.75d | start no earlier than 2012-07-04 |  |  | 100% | No BL | Overdue | Project Management |
| 233 | 2.2.6.20 | Manage Project Scope, Schedule, Issues & Risks 20 | 1d | 2012-07-11 | 2012-07-11 | 485.75d | start no earlier than 2012-07-11 |  |  | 100% | No BL | Overdue | Project Management |
| 234 | 2.2.6.21 | Manage Project Scope, Schedule, Issues & Risks 21 | 1d | 2012-07-18 | 2012-07-18 | 480.75d | start no earlier than 2012-07-18 |  |  | 100% | No BL | Overdue | Project Management |
| 235 | 2.2.6.22 | Manage Project Scope, Schedule, Issues & Risks 22 | 1d | 2012-07-25 | 2012-07-25 | 475.75d | start no earlier than 2012-07-25 |  |  | 100% | No BL | Overdue | Project Management |
| 236 | 2.2.6.23 | Manage Project Scope, Schedule, Issues & Risks 23 | 1d | 2012-08-01 | 2012-08-01 | 470.75d | start no earlier than 2012-08-01 |  |  | 100% | No BL | Overdue | Project Management |
| 237 | 2.2.6.24 | Manage Project Scope, Schedule, Issues & Risks 24 | 1d | 2012-08-08 | 2012-08-08 | 465.75d | start no earlier than 2012-08-08 |  |  | 100% | No BL | Overdue | Project Management |
| 238 | 2.2.6.25 | Manage Project Scope, Schedule, Issues & Risks 25 | 1d | 2012-08-15 | 2012-08-15 | 460.75d | start no earlier than 2012-08-15 |  |  | 100% | No BL | Overdue | Project Management |
| 239 | 2.2.6.26 | Manage Project Scope, Schedule, Issues & Risks 26 | 1d | 2012-08-22 | 2012-08-22 | 455.75d | start no earlier than 2012-08-22 |  |  | 100% | No BL | Overdue | Project Management |
| 240 | 2.2.6.27 | Manage Project Scope, Schedule, Issues & Risks 27 | 1d | 2012-08-29 | 2012-08-29 | 450.75d | start no earlier than 2012-08-29 |  |  | 100% | No BL | Overdue | Project Management |
| 241 | 2.2.6.28 | Manage Project Scope, Schedule, Issues & Risks 28 | 1d | 2012-09-05 | 2012-09-05 | 445.75d | start no earlier than 2012-09-05 |  |  | 100% | No BL | Overdue | Project Management |
| 242 | 2.2.6.29 | Manage Project Scope, Schedule, Issues & Risks 29 | 1d | 2012-09-12 | 2012-09-12 | 440.75d | start no earlier than 2012-09-12 |  |  | 100% | No BL | Overdue | Project Management |
| 243 | 2.2.6.30 | Manage Project Scope, Schedule, Issues & Risks 30 | 1d | 2012-09-19 | 2012-09-19 | 435.75d | start no earlier than 2012-09-19 |  |  | 100% | No BL | Overdue | Project Management |
| 244 | 2.2.6.31 | Manage Project Scope, Schedule, Issues & Risks 31 | 1d | 2012-09-26 | 2012-09-26 | 430.75d | start no earlier than 2012-09-26 |  |  | 100% | No BL | Overdue | Project Management |
| 245 | 2.2.6.32 | Manage Project Scope, Schedule, Issues & Risks 32 | 1d | 2012-10-03 | 2012-10-03 | 425.75d | start no earlier than 2012-10-03 |  |  | 100% | No BL | Overdue | Project Management |
| 246 | 2.2.6.33 | Manage Project Scope, Schedule, Issues & Risks 33 | 1d | 2012-10-10 | 2012-10-10 | 420.75d | start no earlier than 2012-10-10 |  |  | 100% | No BL | Overdue | Project Management |
| 247 | 2.2.6.34 | Manage Project Scope, Schedule, Issues & Risks 34 | 1d | 2012-10-17 | 2012-10-17 | 415.75d | start no earlier than 2012-10-17 |  |  | 100% | No BL | Overdue | Project Management |
| 248 | 2.2.6.35 | Manage Project Scope, Schedule, Issues & Risks 35 | 1d | 2012-10-24 | 2012-10-24 | 410.75d | start no earlier than 2012-10-24 |  |  | 100% | No BL | Overdue | Project Management |
| 249 | 2.2.6.36 | Manage Project Scope, Schedule, Issues & Risks 36 | 1d | 2012-10-31 | 2012-10-31 | 405.75d | start no earlier than 2012-10-31 |  |  | 100% | No BL | Overdue | Project Management |
| 250 | 2.2.6.37 | Manage Project Scope, Schedule, Issues & Risks 37 | 1d | 2012-11-07 | 2012-11-07 | 400.75d | start no earlier than 2012-11-07 |  |  | 100% | No BL | Overdue | Project Management |
| 251 | 2.2.6.38 | Manage Project Scope, Schedule, Issues & Risks 38 | 1d | 2012-11-14 | 2012-11-14 | 395.75d | start no earlier than 2012-11-14 |  |  | 100% | No BL | Overdue | Project Management |
| 252 | 2.2.6.39 | Manage Project Scope, Schedule, Issues & Risks 39 | 1d | 2012-11-21 | 2012-11-21 | 390.75d | start no earlier than 2012-11-21 |  |  | 100% | No BL | Overdue | Project Management |
| 253 | 2.2.6.40 | Manage Project Scope, Schedule, Issues & Risks 40 | 1d | 2012-12-05 | 2012-12-05 | 384.75d | start no earlier than 2012-12-05 |  |  | 100% | No BL | Overdue | Project Management |
| 254 | 2.2.6.41 | Manage Project Scope, Schedule, Issues & Risks 41 | 1d | 2012-12-12 | 2012-12-12 | 379.75d | start no earlier than 2012-12-12 |  |  | 100% | No BL | Overdue | Project Management |
| 255 | 2.2.6.42 | Manage Project Scope, Schedule, Issues & Risks 42 | 1d | 2012-12-19 | 2012-12-19 | 374.75d | start no earlier than 2012-12-19 |  |  | 100% | No BL | Overdue | Project Management |
| 256 | 2.2.6.43 | Manage Project Scope, Schedule, Issues & Risks 43 | 1d | 2013-01-09 | 2013-01-09 | 369.75d | start no earlier than 2013-01-09 |  |  | 100% | No BL | Overdue | Project Management |
| 257 | 2.2.6.44 | Manage Project Scope, Schedule, Issues & Risks 44 | 1d | 2013-01-16 | 2013-01-16 | 364.75d | start no earlier than 2013-01-16 |  |  | 100% | No BL | Overdue | Project Management |
| 258 | 2.2.6.45 | Manage Project Scope, Schedule, Issues & Risks 45 | 1d | 2013-01-23 | 2013-01-23 | 359.75d | start no earlier than 2013-01-23 |  |  | 100% | No BL | Overdue | Project Management |
| 259 | 2.2.6.46 | Manage Project Scope, Schedule, Issues & Risks 46 | 1d | 2013-01-30 | 2013-01-30 | 354.75d | start no earlier than 2013-01-30 |  |  | 100% | No BL | Overdue | Project Management |
| 260 | 2.2.6.47 | Manage Project Scope, Schedule, Issues & Risks 47 | 1d | 2013-02-06 | 2013-02-06 | 349.75d | start no earlier than 2013-02-06 |  |  | 100% | No BL | Overdue | Project Management |
| 261 | 2.2.6.48 | Manage Project Scope, Schedule, Issues & Risks 48 | 1d | 2013-02-13 | 2013-02-13 | 344.75d | start no earlier than 2013-02-13 |  |  | 100% | No BL | Overdue | Project Management |
| 262 | 2.2.6.49 | Manage Project Scope, Schedule, Issues & Risks 49 | 1d | 2013-02-20 | 2013-02-20 | 339.75d | start no earlier than 2013-02-20 |  |  | 100% | No BL | Overdue | Project Management |
| 263 | 2.2.6.50 | Manage Project Scope, Schedule, Issues & Risks 50 | 1d | 2013-02-27 | 2013-02-27 | 334.75d | start no earlier than 2013-02-27 |  |  | 100% | No BL | Overdue | Project Management |
| 264 | 2.2.6.51 | Manage Project Scope, Schedule, Issues & Risks 51 | 1d | 2013-03-06 | 2013-03-06 | 329.75d | start no earlier than 2013-03-06 |  |  | 100% | No BL | Overdue | Project Management |
| 265 | 2.2.6.52 | Manage Project Scope, Schedule, Issues & Risks 52 | 1d | 2013-03-13 | 2013-03-13 | 324.75d | start no earlier than 2013-03-13 |  |  | 100% | No BL | Overdue | Project Management |
| 266 | 2.2.6.53 | Manage Project Scope, Schedule, Issues & Risks 53 | 1d | 2013-03-20 | 2013-03-20 | 319.75d | start no earlier than 2013-03-20 |  |  | 100% | No BL | Overdue | Project Management |
| 267 | 2.2.6.54 | Manage Project Scope, Schedule, Issues & Risks 54 | 1d | 2013-03-27 | 2013-03-27 | 314.75d | start no earlier than 2013-03-27 |  |  | 100% | No BL | Overdue | Project Management |
| 268 | 2.2.6.55 | Manage Project Scope, Schedule, Issues & Risks 55 | 1d | 2013-04-03 | 2013-04-03 | 309.75d | start no earlier than 2013-04-03 |  |  | 100% | No BL | Overdue | Project Management |
| 269 | 2.2.6.56 | Manage Project Scope, Schedule, Issues & Risks 56 | 1d | 2013-04-10 | 2013-04-10 | 304.75d | start no earlier than 2013-04-10 |  |  | 100% | No BL | Overdue | Project Management |
| 270 | 2.2.7 | Manage Delivery as an Integrated Portfolio | 1d | 2013-04-24 | 2013-04-25 | 294d | start no earlier than 2012-01-23 | Sabre PM; EY PM | 16h | 100% | No BL | Overdue | Project Management |
| 271 | 2.2.8 | Manage Project Budget And Invoicing | 1d | 2013-04-25 | 2013-04-26 | 293d | start no earlier than 2012-01-23 | Sabre PM; EY PM | 16h | 100% | No BL | Overdue | Project Management |
| 272 | 2.2.9 | Perform Project Metrics Tracking | 1d | 2013-04-26 | 2013-04-29 | 292d | start no earlier than 2012-01-23 | Sabre PM; EY PM | 16h | 100% | No BL | Overdue | Project Management |

| ID | WBS | Task | Type | Duration | Start | Finish | Predecessors | Total slack | Constraint | Resources | Work | Expected % Complete | Project Status Indicators | Overdue Flag | Life Cycle | Milestone ID |
| --- | --- | --- | --- | --- | --- | --- | --- | --- | --- | --- | --- | --- | --- | --- | --- | --- |
| 273 | 2.2.10 | **Perform Project Status Reporting** |  | 278d | 2012-02-29 | 2013-04-10 |  | 304.75d |  | Sabre PM; EY PM; EY Cargo | 6672h | 100% | No BL | Overdue | Project Management |  |
| 274 | 2.2.10.1 | Perform Project Status Reporting 1 |  | 1d | 2012-02-29 | 2012-02-29 |  | 581.75d | start no earlier than 2012-02-29 |  |  | 100% | No BL | Overdue | Project Management |  |
| 275 | 2.2.10.2 | Perform Project Status Reporting 2 |  | 1d | 2012-03-07 | 2012-03-07 |  | 576.75d | start no earlier than 2012-03-07 |  |  | 100% | No BL | Overdue | Project Management |  |
| 276 | 2.2.10.3 | Perform Project Status Reporting 3 |  | 1d | 2012-03-14 | 2012-03-14 |  | 570.75d | start no earlier than 2012-03-14 |  |  | 100% | No BL | Overdue | Project Management |  |
| 277 | 2.2.10.4 | Perform Project Status Reporting 4 |  | 1d | 2012-03-21 | 2012-03-21 |  | 565.75d | start no earlier than 2012-03-21 |  |  | 100% | No BL | Overdue | Project Management |  |
| 278 | 2.2.10.5 | Perform Project Status Reporting 5 |  | 1d | 2012-03-28 | 2012-03-28 |  | 560.75d | start no earlier than 2012-03-28 |  |  | 100% | No BL | Overdue | Project Management |  |
| 279 | 2.2.10.6 | Perform Project Status Reporting 6 |  | 1d | 2012-04-04 | 2012-04-04 |  | 555.75d | start no earlier than 2012-04-04 |  |  | 100% | No BL | Overdue | Project Management |  |
| 280 | 2.2.10.7 | Perform Project Status Reporting 7 |  | 1d | 2012-04-11 | 2012-04-11 |  | 550.75d | start no earlier than 2012-04-11 |  |  | 100% | No BL | Overdue | Project Management |  |
| 281 | 2.2.10.8 | Perform Project Status Reporting 8 |  | 1d | 2012-04-18 | 2012-04-18 |  | 545.75d | start no earlier than 2012-04-18 |  |  | 100% | No BL | Overdue | Project Management |  |
| 282 | 2.2.10.9 | Perform Project Status Reporting 9 |  | 1d | 2012-04-25 | 2012-04-25 |  | 540.75d | start no earlier than 2012-04-25 |  |  | 100% | No BL | Overdue | Project Management |  |
| 283 | 2.2.10.10 | Perform Project Status Reporting 10 |  | 1d | 2012-05-02 | 2012-05-02 |  | 535.75d | start no earlier than 2012-05-02 |  |  | 100% | No BL | Overdue | Project Management |  |
| 284 | 2.2.10.11 | Perform Project Status Reporting 11 |  | 1d | 2012-05-09 | 2012-05-09 |  | 530.75d | start no earlier than 2012-05-09 |  |  | 100% | No BL | Overdue | Project Management |  |
| 285 | 2.2.10.12 | Perform Project Status Reporting 12 |  | 1d | 2012-05-16 | 2012-05-16 |  | 525.75d | start no earlier than 2012-05-16 |  |  | 100% | No BL | Overdue | Project Management |  |
| 286 | 2.2.10.13 | Perform Project Status Reporting 13 |  | 1d | 2012-05-23 | 2012-05-23 |  | 520.75d | start no earlier than 2012-05-23 |  |  | 100% | No BL | Overdue | Project Management |  |
| 287 | 2.2.10.14 | Perform Project Status Reporting 14 |  | 1d | 2012-05-30 | 2012-05-30 |  | 515.75d | start no earlier than 2012-05-30 |  |  | 100% | No BL | Overdue | Project Management |  |
| 288 | 2.2.10.15 | Perform Project Status Reporting 15 |  | 1d | 2012-06-06 | 2012-06-06 |  | 510.75d | start no earlier than 2012-06-06 |  |  | 100% | No BL | Overdue | Project Management |  |
| 289 | 2.2.10.16 | Perform Project Status Reporting 16 |  | 1d | 2012-06-13 | 2012-06-13 |  | 505.75d | start no earlier than 2012-06-13 |  |  | 100% | No BL | Overdue | Project Management |  |
| 290 | 2.2.10.17 | Perform Project Status Reporting 17 |  | 1d | 2012-06-20 | 2012-06-20 |  | 500.75d | start no earlier than 2012-06-20 |  |  | 100% | No BL | Overdue | Project Management |  |
| 291 | 2.2.10.18 | Perform Project Status Reporting 18 |  | 1d | 2012-06-27 | 2012-06-27 |  | 495.75d | start no earlier than 2012-06-27 |  |  | 100% | No BL | Overdue | Project Management |  |
| 292 | 2.2.10.19 | Perform Project Status Reporting 19 |  | 1d | 2012-07-04 | 2012-07-04 |  | 490.75d | start no earlier than 2012-07-04 |  |  | 100% | No BL | Overdue | Project Management |  |
| 293 | 2.2.10.20 | Perform Project Status Reporting 20 |  | 1d | 2012-07-11 | 2012-07-11 |  | 485.75d | start no earlier than 2012-07-11 |  |  | 100% | No BL | Overdue | Project Management |  |
| 294 | 2.2.10.21 | Perform Project Status Reporting 21 |  | 1d | 2012-07-18 | 2012-07-18 |  | 480.75d | start no earlier than 2012-07-18 |  |  | 100% | No BL | Overdue | Project Management |  |
| 295 | 2.2.10.22 | Perform Project Status Reporting 22 |  | 1d | 2012-07-25 | 2012-07-25 |  | 475.75d | start no earlier than 2012-07-25 |  |  | 100% | No BL | Overdue | Project Management |  |
| 296 | 2.2.10.23 | Perform Project Status Reporting 23 |  | 1d | 2012-08-01 | 2012-08-01 |  | 470.75d | start no earlier than 2012-08-01 |  |  | 100% | No BL | Overdue | Project Management |  |
| 297 | 2.2.10.24 | Perform Project Status Reporting 24 |  | 1d | 2012-08-08 | 2012-08-08 |  | 465.75d | start no earlier than 2012-08-08 |  |  | 100% | No BL | Overdue | Project Management |  |
| 298 | 2.2.10.25 | Perform Project Status Reporting 25 |  | 1d | 2012-08-15 | 2012-08-15 |  | 460.75d | start no earlier than 2012-08-15 |  |  | 100% | No BL | Overdue | Project Management |  |
| 299 | 2.2.10.26 | Perform Project Status Reporting 26 |  | 1d | 2012-08-22 | 2012-08-22 |  | 455.75d | start no earlier than 2012-08-22 |  |  | 100% | No BL | Overdue | Project Management |  |
| 300 | 2.2.10.27 | Perform Project Status Reporting 27 |  | 1d | 2012-08-29 | 2012-08-29 |  | 450.75d | start no earlier than 2012-08-29 |  |  | 100% | No BL | Overdue | Project Management |  |
| 301 | 2.2.10.28 | Perform Project Status Reporting 28 |  | 1d | 2012-09-05 | 2012-09-05 |  | 445.75d | start no earlier than 2012-09-05 |  |  | 100% | No BL | Overdue | Project Management |  |
| 302 | 2.2.10.29 | Perform Project Status Reporting 29 |  | 1d | 2012-09-12 | 2012-09-12 |  | 440.75d | start no earlier than 2012-09-12 |  |  | 100% | No BL | Overdue | Project Management |  |
| 303 | 2.2.10.30 | Perform Project Status Reporting 30 |  | 1d | 2012-09-19 | 2012-09-19 |  | 435.75d | start no earlier than 2012-09-19 |  |  | 100% | No BL | Overdue | Project Management |  |
| 304 | 2.2.10.31 | Perform Project Status Reporting 31 |  | 1d | 2012-09-26 | 2012-09-26 |  | 430.75d | start no earlier than 2012-09-26 |  |  | 100% | No BL | Overdue | Project Management |  |
| 305 | 2.2.10.32 | Perform Project Status Reporting 32 |  | 1d | 2012-10-03 | 2012-10-03 |  | 425.75d | start no earlier than 2012-10-03 |  |  | 100% | No BL | Overdue | Project Management |  |
| 306 | 2.2.10.33 | Perform Project Status Reporting 33 |  | 1d | 2012-10-10 | 2012-10-10 |  | 420.75d | start no earlier than 2012-10-10 |  |  | 100% | No BL | Overdue | Project Management |  |
| 307 | 2.2.10.34 | Perform Project Status Reporting 34 |  | 1d | 2012-10-17 | 2012-10-17 |  | 415.75d | start no earlier than 2012-10-17 |  |  | 100% | No BL | Overdue | Project Management |  |
| 308 | 2.2.10.35 | Perform Project Status Reporting 35 |  | 1d | 2012-10-24 | 2012-10-24 |  | 410.75d | start no earlier than 2012-10-24 |  |  | 100% | No BL | Overdue | Project Management |  |
| 309 | 2.2.10.36 | Perform Project Status Reporting 36 |  | 1d | 2012-10-31 | 2012-10-31 |  | 405.75d | start no earlier than 2012-10-31 |  |  | 100% | No BL | Overdue | Project Management |  |
| 310 | 2.2.10.37 | Perform Project Status Reporting 37 |  | 1d | 2012-11-07 | 2012-11-07 |  | 400.75d | start no earlier than 2012-11-07 |  |  | 100% | No BL | Overdue | Project Management |  |
| 311 | 2.2.10.38 | Perform Project Status Reporting 38 |  | 1d | 2012-11-14 | 2012-11-14 |  | 395.75d | start no earlier than 2012-11-14 |  |  | 100% | No BL | Overdue | Project Management |  |
| 312 | 2.2.10.39 | Perform Project Status Reporting 39 |  | 1d | 2012-11-21 | 2012-11-21 |  | 390.75d | start no earlier than 2012-11-21 |  |  | 100% | No BL | Overdue | Project Management |  |
| 313 | 2.2.10.40 | Perform Project Status Reporting 40 |  | 1d | 2012-12-05 | 2012-12-05 |  | 384.75d | start no earlier than 2012-12-05 |  |  | 100% | No BL | Overdue | Project Management |  |
| 314 | 2.2.10.41 | Perform Project Status Reporting 41 |  | 1d | 2012-12-12 | 2012-12-12 |  | 379.75d | start no earlier than 2012-12-12 |  |  | 100% | No BL | Overdue | Project Management |  |
| 315 | 2.2.10.42 | Perform Project Status Reporting 42 |  | 1d | 2012-12-19 | 2012-12-19 |  | 374.75d | start no earlier than 2012-12-19 |  |  | 100% | No BL | Overdue | Project Management |  |
| 316 | 2.2.10.43 | Perform Project Status Reporting 43 |  | 1d | 2013-01-09 | 2013-01-09 |  | 369.75d | start no earlier than 2013-01-09 |  |  | 100% | No BL | Overdue | Project Management |  |
| 317 | 2.2.10.44 | Perform Project Status Reporting 44 |  | 1d | 2013-01-16 | 2013-01-16 |  | 364.75d | start no earlier than 2013-01-16 |  |  | 100% | No BL | Overdue | Project Management |  |
| 318 | 2.2.10.45 | Perform Project Status Reporting 45 |  | 1d | 2013-01-23 | 2013-01-23 |  | 359.75d | start no earlier than 2013-01-23 |  |  | 100% | No BL | Overdue | Project Management |  |
| 319 | 2.2.10.46 | Perform Project Status Reporting 46 |  | 1d | 2013-01-30 | 2013-01-30 |  | 354.75d | start no earlier than 2013-01-30 |  |  | 100% | No BL | Overdue | Project Management |  |
| 320 | 2.2.10.47 | Perform Project Status Reporting 47 |  | 1d | 2013-02-06 | 2013-02-06 |  | 349.75d | start no earlier than 2013-02-06 |  |  | 100% | No BL | Overdue | Project Management |  |
| 321 | 2.2.10.48 | Perform Project Status Reporting 48 |  | 1d | 2013-02-13 | 2013-02-13 |  | 344.75d | start no earlier than 2013-02-13 |  |  | 100% | No BL | Overdue | Project Management |  |
| 322 | 2.2.10.49 | Perform Project Status Reporting 49 |  | 1d | 2013-02-20 | 2013-02-20 |  | 339.75d | start no earlier than 2013-02-20 |  |  | 100% | No BL | Overdue | Project Management |  |
| 323 | 2.2.10.50 | Perform Project Status Reporting 50 |  | 1d | 2013-02-27 | 2013-02-27 |  | 334.75d | start no earlier than 2013-02-27 |  |  | 100% | No BL | Overdue | Project Management |  |
| 324 | 2.2.10.51 | Perform Project Status Reporting 51 |  | 1d | 2013-03-06 | 2013-03-06 |  | 329.75d | start no earlier than 2013-03-06 |  |  | 100% | No BL | Overdue | Project Management |  |
| 325 | 2.2.10.52 | Perform Project Status Reporting 52 |  | 1d | 2013-03-13 | 2013-03-13 |  | 324.75d | start no earlier than 2013-03-13 |  |  | 100% | No BL | Overdue | Project Management |  |
| 326 | 2.2.10.53 | Perform Project Status Reporting 53 |  | 1d | 2013-03-20 | 2013-03-20 |  | 319.75d | start no earlier than 2013-03-20 |  |  | 100% | No BL | Overdue | Project Management |  |
| 327 | 2.2.10.54 | Perform Project Status Reporting 54 |  | 1d | 2013-03-27 | 2013-03-27 |  | 314.75d | start no earlier than 2013-03-27 |  |  | 100% | No BL | Overdue | Project Management |  |
| 328 | 2.2.10.55 | Perform Project Status Reporting 55 |  | 1d | 2013-04-03 | 2013-04-03 |  | 309.75d | start no earlier than 2013-04-03 |  |  | 100% | No BL | Overdue | Project Management |  |
| 329 | 2.2.10.56 | Perform Project Status Reporting 56 |  | 1d | 2013-04-10 | 2013-04-10 |  | 304.75d | start no earlier than 2013-04-10 |  |  | 100% | No BL | Overdue | Project Management |  |
| 330 | 2.2.11 | Perform Project Status Reporting |  | 1d | 2013-04-29 | 2013-04-30 |  | 291d | start no earlier than 2012-01-23 | Sabre PM; EY PM | 16h | 100% | No BL | Overdue | Project Management |  |
| 331 | 2.2.12 | Perform Project Steering |  | 1d | 2013-04-30 | 2013-05-01 |  | 290d | start no earlier than 2012-01-23 | Stakeholders; Sabre PM; EY PM | 24h | 100% | No BL | Overdue | Project Management |  |
| 332 | 2.2.13 | Manage Project Stakeholder Communications |  | 1d | 2013-05-01 | 2013-05-02 |  | 289d | start no earlier than 2012-01-23 | Sabre PM; EY PM | 16h | 100% | No BL | Overdue | Project Management |  |
| 333 | 2.3 | Project Closure | milestone | 0d | 2014-05-16 | 2014-05-16 | 202, 203 | 18d |  | Sabre PM; EY PM |  | 100% | No BL | Overdue | Project Management | S88160 |
