# Implementation and Support Lifecycle - Project Schedule Template

Schedule from MS Project, 2012-01-02 to 2012-07-30, status date 2012-01-02.
Sabre Airline Solutions
Legend: / - Core Task (Regular, Italic, Black) / - Key Milestone (Bold, Italic, Green) / - Other Milestone (Regular, Italic, Green)

## Calendars

- Standard: Mon-Fri 08:00-12:00, 13:00-17:00; Sat-Sun off.

## Schedule

| ID | WBS | Task | Type | Duration | Start | Finish | Predecessors | Total slack | Expected % Complete | Project Status Indicators |
| --- | --- | --- | --- | --- | --- | --- | --- | --- | --- | --- |
| 1 | 1 | Begin Project | milestone | 0d | 2012-01-02 | 2012-01-02 |  | 0d | 0% | No BL |
| 2 | 2 | **Project Initiation Phase** |  | 25d? | 2012-01-02 | 2012-02-03 |  | 0d | 0% | No BL |
| 3 | 2.1 | **Transition to Delivery** |  | 7d? | 2012-01-02 | 2012-01-10 |  | 0d | 0% | No BL |
| 4 | 2.1.1 | **Identify Project Leadership for Transition** |  | 2d? | 2012-01-02 | 2012-01-03 |  | 0d | 0% | No BL |
| 5 | 2.1.1.1 | Assign the Project Manager |  | 1d? | 2012-01-02 | 2012-01-02 | 1 | 0d | 0% | No BL |
| 6 | 2.1.1.2 | Identify Project Leadership Roles and Individuals |  | 1d? | 2012-01-03 | 2012-01-03 | 5 | 0d | 0% | No BL |
| 7 | 2.1.1.3 | Address Global Leadership Considerations |  | 1d? | 2012-01-03 | 2012-01-03 | 5 | 0d | 0% | No BL |
| 8 | 2.1.2 | **Consolidate and Review Project Documentation** |  | 3d? | 2012-01-03 | 2012-01-05 |  | 0d | 0% | No BL |
| 9 | 2.1.2.1 | Gather Key Project Documentation |  | 1d? | 2012-01-03 | 2012-01-03 | 5 | 0d | 0% | No BL |
| 10 | 2.1.2.2 | Validate Project Documentation is Correct and Consistent |  | 1d? | 2012-01-04 | 2012-01-04 | 9, 6, 7 | 0d | 0% | No BL |
| 11 | 2.1.2.3 | Establish an On-Line Project Notebook in Sabre Project Sector |  | 1d? | 2012-01-05 | 2012-01-05 | 10 | 0d | 0% | No BL |
| 12 | 2.1.2.4 | Validate Correct Versions of Project Documentation are Archived |  | 1d? | 2012-01-05 | 2012-01-05 | 10 | 0d | 0% | No BL |
| 13 | 2.1.3 | **Perform Delivery Transition** |  | 3d? | 2012-01-06 | 2012-01-10 |  | 0d | 0% | No BL |
| 14 | 2.1.3.1 | Identify all Stakeholders |  | 1d? | 2012-01-06 | 2012-01-06 | 12, 11 | 0d | 0% | No BL |
| 15 | 2.1.3.2 | Plan and Perform the Delivery Transition Workshop |  | 1d? | 2012-01-09 | 2012-01-09 | 14 | 0d | 0% | No BL |
| 16 | 2.1.3.3 | Communicate to Stakeholders |  | 1d? | 2012-01-10 | 2012-01-10 | 15 | 0d | 0% | No BL |
| 17 | 2.2 | **Perform Project Set-Up** |  | 8d? | 2012-01-06 | 2012-01-17 |  | 0d | 0% | No BL |
| 18 | 2.2.1 | **Perform Project Set-Up Activities** |  | 5d? | 2012-01-06 | 2012-01-12 |  | 0d | 0% | No BL |
| 19 | 2.2.1.1 | Establish Project/Accounting Codes in Central Systems |  | 1d? | 2012-01-06 | 2012-01-06 | 12 | 2d | 0% | No BL |
| 20 | 2.2.1.2 | Validate and Communicate Invoice and Labor Processes |  | 1d? | 2012-01-11 | 2012-01-11 | 19, 16 | 0d | 0% | No BL |
| 21 | 2.2.1.3 | Create Project Definition Document |  | 1d? | 2012-01-06 | 2012-01-06 | 12 | 3d | 0% | No BL |
| 22 | 2.2.1.4 | Create Project Processes & Procedures Document |  | 1d? | 2012-01-06 | 2012-01-06 | 12 | 3d | 0% | No BL |
| 23 | 2.2.1.5 | Create Integrated Project Schedule |  | 1d? | 2012-01-06 | 2012-01-06 | 12 | 3d | 0% | No BL |
| 24 | 2.2.1.6 | Validate Project Documents with Stakeholders |  | 1d? | 2012-01-12 | 2012-01-12 | 21, 22, 23, 20 | 0d | 0% | No BL |
| 25 | 2.2.1.7 | Establish Initial Customer Access to Community Portal |  | 1d? | 2012-01-06 | 2012-01-06 | 12 | 4d | 0% | No BL |

| ID | WBS | Task | Type | Duration | Start | Finish | Predecessors | Total slack | Expected % Complete | Project Status Indicators |
| --- | --- | --- | --- | --- | --- | --- | --- | --- | --- | --- |
| 26 | 2.2.2 | **Staff the Project** |  | 3d? | 2012-01-13 | 2012-01-17 |  | 0d | 0% | No BL |
| 27 | 2.2.2.1 | Identify/Validate Skills and Resource Needs |  | 1d? | 2012-01-13 | 2012-01-13 | 23, 24, 25 | 0d | 0% | No BL |
| 28 | 2.2.2.2 | Negotiate Resource Commitments |  | 1d? | 2012-01-16 | 2012-01-16 | 27 | 0d | 0% | No BL |
| 29 | 2.2.2.3 | Assign Staff to Project |  | 1d? | 2012-01-17 | 2012-01-17 | 28 | 0d | 0% | No BL |
| 30 | 2.3 | **Perform Project Kick-Off** |  | 4d? | 2012-01-18 | 2012-01-23 |  | 0d | 0% | No BL |
| 31 | 2.3.1 | **Plan and Perform Internal Project Kick-Off** |  | 2d? | 2012-01-18 | 2012-01-19 |  | 0d | 0% | No BL |
| 32 | 2.3.1.1 | Plan and Perform Internal Project Kick-Off |  | 1d? | 2012-01-18 | 2012-01-18 | 29 | 0d | 0% | No BL |
| 33 | 2.3.1.2 | Communicate to Internal Stakeholders |  | 1d? | 2012-01-19 | 2012-01-19 | 32 | 0d | 0% | No BL |
| 34 | 2.3.2 | **Plan and Perform Customer Project Kick-Off** |  | 2d? | 2012-01-20 | 2012-01-23 |  | 0d | 0% | No BL |
| 35 | 2.3.2.1 | Plan and Perform Customer Project Kick-Off |  | 1d? | 2012-01-20 | 2012-01-20 | 33 | 0d | 0% | No BL |
| 36 | 2.3.2.2 | Communicate to Stakeholders |  | 1d? | 2012-01-23 | 2012-01-23 | 35 | 0d | 0% | No BL |
| 37 | 2.4 | **Establish Value Measurement** |  | 4d? | 2012-01-24 | 2012-01-27 |  | 0d | 0% | No BL |
| 38 | 2.4.1 | **Establish Value Measurement Metrics and Approach** |  | 4d? | 2012-01-24 | 2012-01-27 |  | 0d | 0% | No BL |
| 39 | 2.4.1.1 | Validate Customer Value Expectations |  | 1d? | 2012-01-24 | 2012-01-24 | 36, 29 | 0d | 0% | No BL |
| 40 | 2.4.1.2 | Validate Value Measures |  | 1d? | 2012-01-25 | 2012-01-25 | 39 | 0d | 0% | No BL |
| 41 | 2.4.1.3 | Define Value Measurement Approach and On-going Process |  | 1d? | 2012-01-26 | 2012-01-26 | 40 | 0d | 0% | No BL |
| 42 | 2.4.1.4 | Communicate to Stakeholders |  | 1d? | 2012-01-27 | 2012-01-27 | 41 | 0d | 0% | No BL |
| 43 | 2.5 | **Perform End of Phase Review** |  | 5d? | 2012-01-30 | 2012-02-03 |  | 0d | 0% | No BL |
| 44 | 2.5.1 | Prepare for Project Initiation End-of-Phase Review |  | 1d? | 2012-01-30 | 2012-01-30 | 36, 42 | 0d | 0% | No BL |
| 45 | 2.5.2 | Capture Learnings from the Project Initiation Phase |  | 1d? | 2012-01-31 | 2012-01-31 | 44 | 0d | 0% | No BL |
| 46 | 2.5.3 | Perform Project Initiation End-of-Phase Review |  | 1d? | 2012-02-01 | 2012-02-01 | 45 | 0d | 0% | No BL |
| 47 | 2.5.4 | Address Action Items and Recommendations |  | 1d? | 2012-02-02 | 2012-02-02 | 46 | 0d | 0% | No BL |
| 48 | 2.5.5 | Communicate Project Initiation End-of-Phase Review Results |  | 1d? | 2012-02-03 | 2012-02-03 | 47 | 0d | 0% | No BL |
| 49 | 3 | Project Initiation Phase Complete | milestone | 0d | 2012-02-03 | 2012-02-03 | 48 | 0d | 0% | No BL |

| ID | WBS | Task | Type | Duration | Start | Finish | Predecessors | Total slack | Free slack | Expected % Complete | Project Status Indicators |
| --- | --- | --- | --- | --- | --- | --- | --- | --- | --- | --- | --- |
| 50 | 4 | **Interactive Pilot Phase** |  | 39d? | 2012-02-06 | 2012-03-29 |  | 0d |  | 0% | No BL |
| 51 | 4.1 | **Perform Interactive Pilot Assessment** |  | 6d? | 2012-02-06 | 2012-02-13 |  | 0d |  | 0% | No BL |
| 52 | 4.1.1 | **Perform Data Collection** |  | 5d? | 2012-02-06 | 2012-02-10 |  | 1d |  | 0% | No BL |
| 53 | 4.1.1.1 | Identify Customer Data Collection Points of Contact |  | 1d? | 2012-02-06 | 2012-02-06 | 49 | 1d | 0d | 0% | No BL |
| 54 | 4.1.1.2 | Identify Types of Data to Collect |  | 1d? | 2012-02-06 | 2012-02-06 | 49 | 1d | 0d | 0% | No BL |
| 55 | 4.1.1.3 | Submit Data Collection Materials to Customer Points of Contact |  | 1d? | 2012-02-07 | 2012-02-07 | 54, 53 | 1d | 0d | 0% | No BL |
| 56 | 4.1.1.4 | Support Customer During Data Collection Process |  | 1d? | 2012-02-08 | 2012-02-08 | 55 | 1d | 0d | 0% | No BL |
| 57 | 4.1.1.5 | Analyze Data Collection Results and Address Gaps |  | 1d? | 2012-02-09 | 2012-02-09 | 56 | 1d | 0d | 0% | No BL |
| 58 | 4.1.1.6 | Communicate Collected Data |  | 1d? | 2012-02-10 | 2012-02-10 | 57 | 1d | 0d | 0% | No BL |
| 59 | 4.1.1.7 | Sabre/<Airline> Data Collectors Complete | milestone | 0d | 2012-02-10 | 2012-02-10 | 58 | 1d |  | 0% | No BL |
| 60 | 4.1.2 | **Plan and Perform Interactive Pilot Assessment** |  | 6d? | 2012-02-06 | 2012-02-13 |  | 0d |  | 0% | No BL |
| 61 | 4.1.2.1 | Identify Participants and Stakeholders |  | 1d? | 2012-02-06 | 2012-02-06 | 49 | 0d |  | 0% | No BL |
| 62 | 4.1.2.2 | Plan the Interactive Pilot Assessment |  | 1d? | 2012-02-07 | 2012-02-07 | 61 | 0d |  | 0% | No BL |
| 63 | 4.1.2.3 | Perform High-Level Business Process Assessment |  | 1d? | 2012-02-08 | 2012-02-08 | 62 | 0d |  | 0% | No BL |
| 64 | 4.1.2.4 | Perform High-Level Organizational Assessment |  | 1d? | 2012-02-08 | 2012-02-08 | 62 | 0d |  | 0% | No BL |
| 65 | 4.1.2.5 | Perform High-Level Technical Assessment |  | 1d? | 2012-02-08 | 2012-02-08 | 62 | 0d |  | 0% | No BL |
| 66 | 4.1.2.6 | Identify and Define Interfaces and Data Sources |  | 1d? | 2012-02-08 | 2012-02-08 | 62 | 0d |  | 0% | No BL |
| 67 | 4.1.2.7 | Assess Solution Fit and Gaps |  | 1d? | 2012-02-09 | 2012-02-09 | 63, 64, 65, 66 | 0d |  | 0% | No BL |
| 68 | 4.1.2.8 | Document Customer Needs and High-Level Recommendations |  | 1d? | 2012-02-10 | 2012-02-10 | 67 | 0d |  | 0% | No BL |
| 69 | 4.1.2.9 | <Airline> Business Requirement Signoff Complete | milestone | 0d | 2012-02-10 | 2012-02-10 | 68 | 0d |  | 0% | No BL |
| 70 | 4.1.2.10 | Communicate to Stakeholders |  | 1d? | 2012-02-13 | 2012-02-13 | 69 | 0d |  | 0% | No BL |
| 71 | 4.2 | **Plan Interactive Pilot Workshops** |  | 9d? | 2012-02-14 | 2012-02-24 |  | 0d |  | 0% | No BL |
| 72 | 4.2.1 | **Plan and Schedule Interactive Pilot Workshops** |  | 3d? | 2012-02-14 | 2012-02-16 |  | 0d |  | 0% | No BL |
| 73 | 4.2.1.1 | Create Interactive Pilot Workshop Plan |  | 1d? | 2012-02-14 | 2012-02-14 | 70, 59 | 0d |  | 0% | No BL |
| 74 | 4.2.1.2 | Identify Participants and Stakeholders |  | 1d? | 2012-02-15 | 2012-02-15 | 73 | 0d |  | 0% | No BL |
| 75 | 4.2.1.3 | Schedule the Interactive Pilot Workshops |  | 1d? | 2012-02-16 | 2012-02-16 | 74 | 0d |  | 0% | No BL |
| 76 | 4.2.1.4 | Define the Environment and Parameters for IP Workshops |  | 1d? | 2012-02-16 | 2012-02-16 | 74 | 0d |  | 0% | No BL |

| ID | WBS | Task | Duration | Start | Finish | Predecessors | Total slack | Expected % Complete | Project Status Indicators |
| --- | --- | --- | --- | --- | --- | --- | --- | --- | --- |
| 77 | 4.2.2 | **Prepare Interactive Pilot Workshop Components** | 6d? | 2012-02-17 | 2012-02-24 |  | 0d | 0% | No BL |
| 78 | 4.2.2.1 | Establish and Validate the IP Workshop Environment | 1d? | 2012-02-17 | 2012-02-17 | 76, 75 | 0d | 0% | No BL |
| 79 | 4.2.2.2 | Implement Initial Interfaces | 1d? | 2012-02-20 | 2012-02-20 | 78 | 0d | 0% | No BL |
| 80 | 4.2.2.3 | Load Interactive Pilot Workshop Data | 1d? | 2012-02-21 | 2012-02-21 | 79 | 0d | 0% | No BL |
| 81 | 4.2.2.4 | Configure the Solution | 1d? | 2012-02-22 | 2012-02-22 | 80 | 0d | 0% | No BL |
| 82 | 4.2.2.5 | Support the Customer's Initial Baselining/Benchmarking of Value Measurement KPIs | 1d? | 2012-02-23 | 2012-02-23 | 81 | 0d | 0% | No BL |
| 83 | 4.2.2.6 | Create/Update the Business Process Scenarios | 1d? | 2012-02-23 | 2012-02-23 | 81 | 0d | 0% | No BL |
| 84 | 4.2.2.7 | Update the Business Process Structure | 1d? | 2012-02-24 | 2012-02-24 | 83, 82 | 0d | 0% | No BL |
| 85 | 4.3 | **Conduct Initial Training** | 7d? | 2012-02-27 | 2012-03-06 |  | 0d | 0% | No BL |
| 86 | 4.3.1 | **Conduct Initial Training (Key User / Train the Trainer)** | 7d? | 2012-02-27 | 2012-03-06 |  | 0d | 0% | No BL |
| 87 | 4.3.1.1 | Define Training Objectives and Approach | 1d? | 2012-02-27 | 2012-02-27 | 84 | 0d | 0% | No BL |
| 88 | 4.3.1.2 | Plan the Training | 1d? | 2012-02-28 | 2012-02-28 | 87 | 0d | 0% | No BL |
| 89 | 4.3.1.3 | Communicate the Training Plan and Objectives to Participants | 1d? | 2012-02-29 | 2012-02-29 | 88 | 0d | 0% | No BL |
| 90 | 4.3.1.4 | Update Training Materials | 1d? | 2012-03-01 | 2012-03-01 | 89 | 0d | 0% | No BL |
| 91 | 4.3.1.5 | Prepare the Training Environment | 1d? | 2012-03-02 | 2012-03-02 | 90 | 0d | 0% | No BL |
| 92 | 4.3.1.6 | Perform Training on the Solution | 1d? | 2012-03-05 | 2012-03-05 | 91 | 0d | 0% | No BL |
| 93 | 4.3.1.7 | Perform Training on the Interactive Pilot Workshop Approach | 1d? | 2012-03-06 | 2012-03-06 | 92 | 0d | 0% | No BL |
| 94 | 4.4 | **Perform Interactive Pilot Workshops** | 9d? | 2012-03-07 | 2012-03-19 |  | 0d | 0% | No BL |
| 95 | 4.4.1 | **Perform Interactive Pilot Workshops** | 4d? | 2012-03-07 | 2012-03-12 |  | 0d | 0% | No BL |
| 96 | 4.4.1.1 | Execute Interactive Pilot Scenarios (per the Plan) | 1d? | 2012-03-07 | 2012-03-07 | 93 | 0d | 0% | No BL |
| 97 | 4.4.1.2 | Identify Gaps / Alignment Opportunities | 1d? | 2012-03-08 | 2012-03-08 | 96 | 0d | 0% | No BL |
| 98 | 4.4.1.3 | Optimize the Interactive Pilot Workshop Environment and Application (as Needed) | 1d? | 2012-03-09 | 2012-03-09 | 97 | 0d | 0% | No BL |
| 99 | 4.4.1.4 | Recommend Changes and Improvements | 1d? | 2012-03-12 | 2012-03-12 | 98 | 0d | 0% | No BL |
| 100 | 4.4.2 | **Finalize Interactive Pilot Workshops** | 5d? | 2012-03-13 | 2012-03-19 |  | 0d | 0% | No BL |
| 101 | 4.4.2.1 | Prioritize Changes and Obtain Approval to Estimate | 1d? | 2012-03-13 | 2012-03-13 | 99 | 0d | 0% | No BL |
| 102 | 4.4.2.2 | Create High-Level User Stories | 1d? | 2012-03-14 | 2012-03-14 | 101 | 0d | 0% | No BL |
| 103 | 4.4.2.3 | Estimate Requested Changes | 1d? | 2012-03-15 | 2012-03-15 | 102 | 0d | 0% | No BL |
| 104 | 4.4.2.4 | Process any Change Requests | 1d? | 2012-03-16 | 2012-03-16 | 103 | 0d | 0% | No BL |
| 105 | 4.4.2.5 | Finalize Recommendations and Communicate to Stakeholders | 1d? | 2012-03-19 | 2012-03-19 | 104 | 0d | 0% | No BL |

| ID | WBS | Task | Type | Duration | Start | Finish | Predecessors | Total slack | Expected % Complete | Project Status Indicators |
| --- | --- | --- | --- | --- | --- | --- | --- | --- | --- | --- |
| 106 | 4.5 | **Perform End-of-Phase Review** |  | 8d? | 2012-03-20 | 2012-03-29 |  | 0d | 0% | No BL |
| 107 | 4.5.1 | **Perform the Interactive Pilot End-of-Phase Review** |  | 8d? | 2012-03-20 | 2012-03-29 |  | 0d | 0% | No BL |
| 108 | 4.5.1.1 | Prepare for the Interactive Pilot End-of-Phase Review |  | 1d? | 2012-03-20 | 2012-03-20 | 105 | 0d | 0% | No BL |
| 109 | 4.5.1.2 | Capture Learnings from the Interactive Pilot Phase |  | 1d? | 2012-03-21 | 2012-03-21 | 108 | 0d | 0% | No BL |
| 110 | 4.5.1.3 | Conduct Interactive Pilot End-of-Phase Review |  | 1d? | 2012-03-22 | 2012-03-22 | 109 | 0d | 0% | No BL |
| 111 | 4.5.1.4 | Address Interactive Pilot End-of-Phase Review Action Items and Recommendations |  | 1d? | 2012-03-23 | 2012-03-23 | 110 | 0d | 0% | No BL |
| 112 | 4.5.1.5 | Communicate Interactive Pilot End-of-Phase Review Results to Stakeholders |  | 1d? | 2012-03-26 | 2012-03-26 | 111 | 0d | 0% | No BL |
| 113 | 4.5.1.6 | Prepare for Steering Committee Meeting |  | 1d? | 2012-03-27 | 2012-03-27 | 112 | 0d | 0% | No BL |
| 114 | 4.5.1.7 | Conduct Steering Committee Meeting |  | 1d? | 2012-03-28 | 2012-03-28 | 113 | 0d | 0% | No BL |
| 115 | 4.5.1.8 | Communicate Steering Results to Stakeholders and Address Action Items and Recommendations |  | 1d? | 2012-03-29 | 2012-03-29 | 114 | 0d | 0% | No BL |
| 116 | 5 | Interactive Pilot Phase Complete | milestone | 0d | 2012-03-29 | 2012-03-29 | 115 | 0d | 0% | No BL |
| 117 | 6 | **Solution Adoption Phase** |  | 47d? | 2012-03-30 | 2012-06-04 |  | 0d | 0% | No BL |
| 118 | 6.1 | **Support Solution Definition and Design** |  | 6d? | 2012-03-30 | 2012-04-06 |  | 0d | 0% | No BL |
| 119 | 6.1.1 | **Support Detailed Solution Definition** |  | 4d? | 2012-03-30 | 2012-04-04 |  | 0d | 0% | No BL |
| 120 | 6.1.1.1 | Identify Participants and Stakeholders |  | 1d? | 2012-03-30 | 2012-03-30 | 116 | 0d | 0% | No BL |
| 121 | 6.1.1.2 | Plan Detailed Solution Definition (Business and Technical) |  | 1d? | 2012-04-02 | 2012-04-02 | 120 | 0d | 0% | No BL |
| 122 | 6.1.1.3 | Define Detailed Business Solution |  | 1d? | 2012-04-03 | 2012-04-03 | 121 | 0d | 0% | No BL |
| 123 | 6.1.1.4 | Define Detailed Technical Solution |  | 1d? | 2012-04-03 | 2012-04-03 | 121 | 0d | 0% | No BL |
| 124 | 6.1.1.5 | Document Global/Geographical Considerations |  | 1d? | 2012-04-03 | 2012-04-03 | 121 | 0d | 0% | No BL |
| 125 | 6.1.1.6 | Communicate to Stakeholders |  | 1d? | 2012-04-04 | 2012-04-04 | 122, 123, 124 | 0d | 0% | No BL |
| 126 | 6.1.2 | **Support Detailed Solution Design** |  | 2d? | 2012-04-05 | 2012-04-06 |  | 0d | 0% | No BL |
| 127 | 6.1.2.1 | Support Customer's Business Process and Organizational Design |  | 1d? | 2012-04-05 | 2012-04-05 | 125 | 0d | 0% | No BL |
| 128 | 6.1.2.2 | Support Features/Functions Design |  | 1d? | 2012-04-05 | 2012-04-05 | 125 | 0d | 0% | No BL |
| 129 | 6.1.2.3 | Support Usability/Human Factors Design |  | 1d? | 2012-04-05 | 2012-04-05 | 125 | 0d | 0% | No BL |
| 130 | 6.1.2.4 | Support Application Architecture Design |  | 1d? | 2012-04-05 | 2012-04-05 | 125 | 0d | 0% | No BL |
| 131 | 6.1.2.5 | Support Data Integration Design |  | 1d? | 2012-04-05 | 2012-04-05 | 125 | 0d | 0% | No BL |
| 132 | 6.1.2.6 | Evaluate Cost and Financial Implications of Design Decisions |  | 1d? | 2012-04-06 | 2012-04-06 | 127, 128, 129, 130, 131 | 0d | 0% | No BL |
| 133 | 6.1.2.7 | Ensure Design Integration Across the Portfolio |  | 1d? | 2012-04-06 | 2012-04-06 | 127, 128, 129, 130, 131 | 0d | 0% | No BL |
| 134 | 6.1.2.8 | Sabre Design Complete | milestone | 0d | 2012-04-06 | 2012-04-06 | 133 | 0d | 0% | No BL |

| ID | WBS | Task | Type | Duration | Start | Finish | Predecessors | Total slack | Expected % Complete | Project Status Indicators |
| --- | --- | --- | --- | --- | --- | --- | --- | --- | --- | --- |
| 135 | 6.2 | **Support Solution Build-Out** |  | 24d? | 2012-04-09 | 2012-05-10 |  | 0d | 0% | No BL |
| 136 | 6.2.1 | **Support Iteration and Release Planning** |  | 8d? | 2012-04-09 | 2012-04-18 |  | 0d | 0% | No BL |
| 137 | 6.2.1.1 | Review Lists of Enhancements/Changes |  | 1d? | 2012-04-09 | 2012-04-09 | 132, 134 | 0d | 0% | No BL |
| 138 | 6.2.1.2 | Understand Delivery Commitments Across Customers |  | 1d? | 2012-04-10 | 2012-04-10 | 137 | 0d | 0% | No BL |
| 139 | 6.2.1.3 | Understand Dependencies Between Solution Areas |  | 1d? | 2012-04-10 | 2012-04-10 | 137 | 0d | 0% | No BL |
| 140 | 6.2.1.4 | Balance Customer Needs Across the Solution Areas |  | 1d? | 2012-04-11 | 2012-04-11 | 138, 139 | 0d | 0% | No BL |
| 141 | 6.2.1.5 | Negotiate Customer Expectations/Commitments (as Needed) |  | 1d? | 2012-04-12 | 2012-04-12 | 140 | 0d | 0% | No BL |
| 142 | 6.2.1.6 | Address Priority Interrupts (Severity 1s) |  | 1d? | 2012-04-13 | 2012-04-13 | 141 | 0d | 0% | No BL |
| 143 | 6.2.1.7 | Participate in Release and Iteration Planning |  | 1d? | 2012-04-13 | 2012-04-13 | 141 | 0d | 0% | No BL |
| 144 | 6.2.1.8 | Support Prioritization and Optimization of Development Queues |  | 1d? | 2012-04-16 | 2012-04-16 | 143, 142 | 0d | 0% | No BL |
| 145 | 6.2.1.9 | Validate offline file requirements |  | 1d? | 2012-04-17 | 2012-04-17 | 144 | 0d | 0% | No BL |
| 146 | 6.2.1.10 | Communicate Plans and Status to Customer |  | 1d? | 2012-04-18 | 2012-04-18 | 145 | 0d | 0% | No BL |
| 147 | 6.2.2 | **Support Iteration Development/Testing (e.g., Unit Testing)** |  | 5d? | 2012-04-19 | 2012-04-25 |  | 0d | 0% | No BL |
| 148 | 6.2.2.1 | Participate in Iteration Retrospectives |  | 1d? | 2012-04-19 | 2012-04-19 | 146 | 0d | 0% | No BL |
| 149 | 6.2.2.2 | Trace Work Order Commitments to Requirements and User Stories |  | 1d? | 2012-04-20 | 2012-04-20 | 148 | 0d | 0% | No BL |
| 150 | 6.2.2.3 | Create/Update/Validate Acceptance Criteria for User Stories (Before Coding) |  | 1d? | 2012-04-23 | 2012-04-23 | 149 | 0d | 0% | No BL |
| 151 | 6.2.2.4 | Support Definition/Creation of Test Scenarios/Cases (Before Coding) |  | 1d? | 2012-04-24 | 2012-04-24 | 150 | 0d | 0% | No BL |
| 152 | 6.2.2.5 | <Airline> Agent roles & permissions complete (i.e. EPRs) | milestone | 0d | 2012-04-24 | 2012-04-24 | 151 | 0d | 0% | No BL |
| 153 | 6.2.2.6 | Support the Development Process |  | 1d? | 2012-04-25 | 2012-04-25 | 152 | 0d | 0% | No BL |
| 154 | 6.2.2.7 | Support the Build Process |  | 1d? | 2012-04-25 | 2012-04-25 | 151 | 0d | 0% | No BL |
| 155 | 6.2.2.8 | Support the Validation of Build Contents and Addressing Gaps |  | 1d? | 2012-04-25 | 2012-04-25 | 151 | 0d | 0% | No BL |
| 156 | 6.2.2.9 | Trace User Stories/Designs to Developed Solution |  | 1d? | 2012-04-25 | 2012-04-25 | 151 | 0d | 0% | No BL |
| 157 | 6.2.2.10 | Provide Supporting Information for Defect / Service Incident Reproduction |  | 1d? | 2012-04-25 | 2012-04-25 | 151 | 0d | 0% | No BL |
| 158 | 6.2.2.11 | Support Validation that the Solution (and User Stories) Meets Acceptance Criteria |  | 1d? | 2012-04-25 | 2012-04-25 | 151 | 0d | 0% | No BL |
| 159 | 6.2.2.12 | Validate Resolution of Defects / Service Incidents |  | 1d? | 2012-04-25 | 2012-04-25 | 151 | 0d | 0% | No BL |
| 160 | 6.2.2.13 | Validate Progress of Build Quality |  | 1d? | 2012-04-25 | 2012-04-25 | 151 | 0d | 0% | No BL |
| 161 | 6.2.2.14 | Sabre Code & Unit Test Complete | milestone | 0d | 2012-04-25 | 2012-04-25 | 160, 153, 154, 155, 156, 157, 158, 159 | 0d | 0% | No BL |
| 162 | 6.2.2.15 | Sabre end to end Test Complete | milestone | 0d | 2012-04-25 | 2012-04-25 | 161 | 0d | 0% | No BL |

| ID | WBS | Task | Type | Duration | Start | Finish | Predecessors | Total slack | Expected % Complete | Project Status Indicators |
| --- | --- | --- | --- | --- | --- | --- | --- | --- | --- | --- |
| 163 | 6.2.3 | **Support On-Site Customer Collaboration (OCC)** |  | 8d? | 2012-04-26 | 2012-05-07 |  | 0d | 0% | No BL |
| 164 | 6.2.3.1 | Plan and Prepare for On-Site Customer Collaboration (including Validation) |  | 1d? | 2012-04-26 | 2012-04-26 | 162 | 0d | 0% | No BL |
| 165 | 6.2.3.2 | Establish OCC Expectations and Completion Criteria |  | 1d? | 2012-04-27 | 2012-04-27 | 164 | 0d | 0% | No BL |
| 166 | 6.2.3.3 | Establish the OCC Environment |  | 1d? | 2012-04-27 | 2012-04-27 | 164 | 0d | 0% | No BL |
| 167 | 6.2.3.4 | Monitor/Validate OCC Release Commitments and Schedule |  | 1d? | 2012-04-27 | 2012-04-27 | 164 | 0d | 0% | No BL |
| 168 | 6.2.3.5 | Optimize Constraints |  | 1d? | 2012-04-30 | 2012-04-30 | 167, 165, 166 | 0d | 0% | No BL |
| 169 | 6.2.3.6 | Support Release into the OCC Environment |  | 1d? | 2012-05-01 | 2012-05-01 | 168 | 0d | 0% | No BL |
| 170 | 6.2.3.7 | Validate All Solution Components are Loaded into the OCC Environment |  | 1d? | 2012-05-02 | 2012-05-02 | 169 | 0d | 0% | No BL |
| 171 | 6.2.3.8 | Support OCC Validation |  | 1d? | 2012-05-03 | 2012-05-03 | 170 | 0d | 0% | No BL |
| 172 | 6.2.3.9 | Performance Tune the Solution |  | 1d? | 2012-05-04 | 2012-05-04 | 171 | 0d | 0% | No BL |
| 173 | 6.2.3.10 | Address Any Gaps/Issues |  | 1d? | 2012-05-07 | 2012-05-07 | 172 | 0d | 0% | No BL |
| 174 | 6.2.3.11 | Perform Revised Benchmarking of Value Measurement KPIs (if Required) |  | 1d? | 2012-05-04 | 2012-05-04 | 171 | 0d | 0% | No BL |
| 175 | 6.2.3.12 | Communicate to Stakeholders |  | 1d? | 2012-05-07 | 2012-05-07 | 174 | 0d | 0% | No BL |
| 176 | 6.2.4 | **Support Business Process Improvements** |  | 3d? | 2012-05-08 | 2012-05-10 |  | 0d | 0% | No BL |
| 177 | 6.2.4.1 | Support the Customer's Business Process and Organizational Improvements |  | 1d? | 2012-05-08 | 2012-05-08 | 173, 175 | 0d | 0% | No BL |
| 178 | 6.2.4.2 | Validate Interactive Pilot Gaps are Addressed/Resolved |  | 1d? | 2012-05-09 | 2012-05-09 | 177 | 0d | 0% | No BL |
| 179 | 6.2.4.3 | Validate Process Improvements Support Value Measurement KPIs |  | 1d? | 2012-05-10 | 2012-05-10 | 178 | 0d | 0% | No BL |
| 180 | 6.3 | **Support Solution Validation and Installation** |  | 9d? | 2012-05-11 | 2012-05-23 |  | 0d | 0% | No BL |
| 181 | 6.3.1 | **Plan and Perform the Installation (For Each Environment As Needed: Training, Validation, etc.)** |  | 9d? | 2012-05-11 | 2012-05-23 |  | 0d | 0% | No BL |
| 182 | 6.3.1.1 | Support the Installation Build Process |  | 1d? | 2012-05-11 | 2012-05-11 | 179 | 0d | 0% | No BL |
| 183 | 6.3.1.2 | Validate Installation Build Contents and Address Gaps |  | 1d? | 2012-05-14 | 2012-05-14 | 182 | 0d | 0% | No BL |
| 184 | 6.3.1.3 | Validate Installation Scripts |  | 1d? | 2012-05-14 | 2012-05-14 | 182 | 0d | 0% | No BL |
| 185 | 6.3.1.4 | Ensure Accuracy/Completeness of Training and Admin Guides |  | 1d? | 2012-05-14 | 2012-05-14 | 182 | 0d | 0% | No BL |
| 186 | 6.3.1.5 | Ensure Accuracy/Completeness of Release Notes |  | 1d? | 2012-05-14 | 2012-05-14 | 182 | 0d | 0% | No BL |
| 187 | 6.3.1.6 | Finalize the Installation Plan |  | 1d? | 2012-05-14 | 2012-05-14 | 182 | 0d | 0% | No BL |
| 188 | 6.3.1.7 | Finalize Data Collection and Data Validation |  | 1d? | 2012-05-14 | 2012-05-14 | 182 | 0d | 0% | No BL |
| 189 | 6.3.1.8 | Sabre Data Migration Complete | milestone | 0d | 2012-05-14 | 2012-05-14 | 188 | 0d | 0% | No BL |
| 190 | 6.3.1.9 | Communicate the Release |  | 1d? | 2012-05-15 | 2012-05-15 | 183, 184, 185, 186, 187, 189 | 0d | 0% | No BL |
| 191 | 6.3.1.10 | <Airline> infrastructure Ready | milestone | 0d | 2012-05-15 | 2012-05-15 | 190 | 0d | 0% | No BL |
| 192 | 6.3.1.11 | Validate Readiness for Release/Installation |  | 1d? | 2012-05-16 | 2012-05-16 | 191 | 0d | 0% | No BL |
| 193 | 6.3.1.12 | Install and Configure Hardware and System Software |  | 1d? | 2012-05-17 | 2012-05-17 | 192 | 0d | 0% | No BL |
| 194 | 6.3.1.13 | Install Database and Load Data |  | 1d? | 2012-05-18 | 2012-05-18 | 193 | 0d | 0% | No BL |
| 195 | 6.3.1.14 | Install and Configure Application Components (Sabre and Third-Party) |  | 1d? | 2012-05-21 | 2012-05-21 | 194 | 0d | 0% | No BL |
| 196 | 6.3.1.15 | Validate Installation and Configuration |  | 1d? | 2012-05-22 | 2012-05-22 | 195 | 0d | 0% | No BL |
| 197 | 6.3.1.16 | Performance Tune the Solution |  | 1d? | 2012-05-23 | 2012-05-23 | 196 | 0d | 0% | No BL |
| 198 | 6.3.1.17 | Create Customer Validation Plan |  | 1d? | 2012-05-17 | 2012-05-17 | 192 | 4d | 0% | No BL |
| 199 | 6.3.1.18 | Create End-User Training Plan |  | 1d? | 2012-05-17 | 2012-05-17 | 192 | 4d | 0% | No BL |
| 200 | 6.3.1.19 | Notify Customer Care of Customer Transition Timeline |  | 1d? | 2012-05-17 | 2012-05-17 | 192 | 4d | 0% | No BL |
| 201 | 6.3.1.20 | Update Cutover Plan |  | 1d? | 2012-05-17 | 2012-05-17 | 192 | 4d | 0% | No BL |

| ID | WBS | Task | Type | Duration | Start | Finish | Predecessors | Total slack | Expected % Complete | Project Status Indicators |
| --- | --- | --- | --- | --- | --- | --- | --- | --- | --- | --- |
| 202 | 6.4 | **Perform End of Phase Review** |  | 8d? | 2012-05-24 | 2012-06-04 |  | 0d | 0% | No BL |
| 203 | 6.4.1 | **Perform the Solution Adoption End-of-Phase Review** |  | 8d? | 2012-05-24 | 2012-06-04 |  | 0d | 0% | No BL |
| 204 | 6.4.1.1 | Prepare for the Solution Adoption End-of-Phase Review |  | 1d? | 2012-05-24 | 2012-05-24 | 198, 199, 200, 201, 197 | 0d | 0% | No BL |
| 205 | 6.4.1.2 | Capture Learnings from the Solution Adoption Phase |  | 1d? | 2012-05-25 | 2012-05-25 | 204 | 0d | 0% | No BL |
| 206 | 6.4.1.3 | Conduct the Solution Adoption End-of-Phase Review |  | 1d? | 2012-05-28 | 2012-05-28 | 205 | 0d | 0% | No BL |
| 207 | 6.4.1.4 | Address the Solution Adoption End-of-Phase Review Action Items and Recommendations |  | 1d? | 2012-05-29 | 2012-05-29 | 206 | 0d | 0% | No BL |
| 208 | 6.4.1.5 | Communicate the Solution Adoption End-of-Phase Review Results to Stakeholders |  | 1d? | 2012-05-30 | 2012-05-30 | 207 | 0d | 0% | No BL |
| 209 | 6.4.1.6 | Prepare for Steering Committee Meeting |  | 1d? | 2012-05-31 | 2012-05-31 | 208 | 0d | 0% | No BL |
| 210 | 6.4.1.7 | Conduct Steering Committee Meeting |  | 1d? | 2012-06-01 | 2012-06-01 | 209 | 0d | 0% | No BL |
| 211 | 6.4.1.8 | Communicate Steering Results to Stakeholders and Address Action Items and Recommendations |  | 1d? | 2012-06-04 | 2012-06-04 | 210 | 0d | 0% | No BL |
| 212 | 7 | Solution Adoption Phase Complete | milestone | 0d | 2012-06-04 | 2012-06-04 | 211 | 0d | 0% | No BL |
| 213 | 8 | **Project Transition Phase** |  | 40d? | 2012-06-05 | 2012-07-30 |  | 0d | 0% | No BL |
| 214 | 8.1 | **Perform Customer Validation and Training** |  | 10d? | 2012-06-05 | 2012-06-18 |  | 0d | 0% | No BL |
| 215 | 8.1.1 | **Support Customer Validation** |  | 6d? | 2012-06-05 | 2012-06-12 |  | 0d | 0% | No BL |
| 216 | 8.1.1.1 | Finalize Customer Validation Plan |  | 1d? | 2012-06-05 | 2012-06-05 | 212 | 0d | 0% | No BL |
| 217 | 8.1.1.2 | Support Customer Finalization of Scenarios and Expected Results |  | 1d? | 2012-06-06 | 2012-06-06 | 216 | 0d | 0% | No BL |
| 218 | 8.1.1.3 | Support Customer Finalization of Data Sets |  | 1d? | 2012-06-06 | 2012-06-06 | 216 | 0d | 0% | No BL |
| 219 | 8.1.1.4 | Support Establishing the Customer Validation Environment |  | 1d? | 2012-06-06 | 2012-06-06 | 216 | 0d | 0% | No BL |
| 220 | 8.1.1.5 | Support offline file requirements |  | 1d? | 2012-06-06 | 2012-06-06 | 216 | 0d | 0% | No BL |
| 221 | 8.1.1.6 | Support Customer Validation of the Solution |  | 1d? | 2012-06-07 | 2012-06-07 | 217, 218, 219, 220 | 0d | 0% | No BL |
| 222 | 8.1.1.7 | Identify Cutover-Critcal Service Incidents |  | 1d? | 2012-06-08 | 2012-06-08 | 221 | 0d | 0% | No BL |
| 223 | 8.1.1.8 | Support Resolution of Incidents |  | 1d? | 2012-06-11 | 2012-06-11 | 222 | 0d | 0% | No BL |
| 224 | 8.1.1.9 | Finalize Validation and Communicate Results |  | 1d? | 2012-06-12 | 2012-06-12 | 223 | 0d | 0% | No BL |
| 225 | 8.1.1.10 | <Airline> end to end Test Complete | milestone | 0d | 2012-06-12 | 2012-06-12 | 224 | 0d | 0% | No BL |

| ID | WBS | Task | Type | Duration | Start | Finish | Predecessors | Total slack | Expected % Complete | Project Status Indicators |
| --- | --- | --- | --- | --- | --- | --- | --- | --- | --- | --- |
| 226 | 8.1.2 | **Perform End-User Training** |  | 4d? | 2012-06-13 | 2012-06-18 |  | 0d | 0% | No BL |
| 227 | 8.1.2.1 | Finalize Training Plan and Communicate |  | 1d? | 2012-06-13 | 2012-06-13 | 225 | 0d | 0% | No BL |
| 228 | 8.1.2.2 | Schedule Training |  | 1d? | 2012-06-14 | 2012-06-14 | 227 | 0d | 0% | No BL |
| 229 | 8.1.2.3 | Finalize Training Guides |  | 1d? | 2012-06-14 | 2012-06-14 | 227 | 0d | 0% | No BL |
| 230 | 8.1.2.4 | Prepare Training Environment |  | 1d? | 2012-06-14 | 2012-06-14 | 227 | 0d | 0% | No BL |
| 231 | 8.1.2.5 | Perform End-User Training |  | 1d? | 2012-06-15 | 2012-06-15 | 228, 229, 230 | 0d | 0% | No BL |
| 232 | 8.1.2.6 | Assess Training Success and Address Any Training Gaps |  | 1d? | 2012-06-18 | 2012-06-18 | 231 | 0d | 0% | No BL |
| 233 | 8.1.2.7 | <Airline> Training Complete | milestone | 0d | 2012-06-18 | 2012-06-18 | 232 | 0d | 0% | No BL |
| 234 | 8.2 | **Perform Production Cutover and Support** |  | 15d | 2012-06-19 | 2012-07-09 |  | 0d | 0% | No BL |
| 235 | 8.2.1 | **Plan Production Cutover** |  | 8d | 2012-06-19 | 2012-06-28 |  | 0d | 0% | No BL |
| 236 | 8.2.1.1 | Engage Customer Care in Cutover Planning |  | 1d | 2012-06-19 | 2012-06-19 | 233 | 0d | 0% | No BL |
| 237 | 8.2.1.2 | Sabre/<Airline> Implementation Planning Complete | milestone | 0d | 2012-06-19 | 2012-06-19 | 236 | 0d | 0% | No BL |
| 238 | 8.2.1.3 | Finalize Contingency Plans |  | 1d | 2012-06-20 | 2012-06-20 | 237 | 0d | 0% | No BL |
| 239 | 8.2.1.4 | Communicate Cutover Plans to All Stakeholders |  | 1d | 2012-06-21 | 2012-06-21 | 238 | 0d | 0% | No BL |
| 240 | 8.2.1.5 | Perform Dress Rehearsal |  | 1d | 2012-06-22 | 2012-06-22 | 239 | 0d | 0% | No BL |
| 241 | 8.2.1.6 | Assess and Address Dress Rehearsal Results |  | 1d | 2012-06-25 | 2012-06-25 | 240 | 0d | 0% | No BL |
| 242 | 8.2.1.7 | Communicate Dress Rehearsal Results to Stakeholders |  | 1d | 2012-06-26 | 2012-06-26 | 241 | 0d | 0% | No BL |
| 243 | 8.2.1.8 | Plan the Command Center |  | 1d | 2012-06-27 | 2012-06-27 | 242 | 0d | 0% | No BL |
| 244 | 8.2.1.9 | Establish the Command Center |  | 1d | 2012-06-28 | 2012-06-28 | 243 | 0d | 0% | No BL |
| 245 | 8.2.2 | **Perform Production Cutover** |  | 3d | 2012-06-29 | 2012-07-03 |  | 0d | 0% | No BL |
| 246 | 8.2.2.1 | Perform Final Go-Live Migration (as Needed) |  | 1d | 2012-06-29 | 2012-06-29 | 239, 244 | 0d | 0% | No BL |
| 247 | 8.2.2.2 | Sabre/<Airline> Go-No-Go for implementation, and Communicate | milestone | 0d | 2012-06-29 | 2012-06-29 | 246 | 0d | 0% | No BL |
| 248 | 8.2.2.3 | Perform Cutover (Go Live) |  | 1d | 2012-07-02 | 2012-07-02 | 247 | 0d | 0% | No BL |
| 249 | 8.2.2.4 | Transition to New Business Processes |  | 1d | 2012-07-03 | 2012-07-03 | 248 | 0d | 0% | No BL |
| 250 | 8.2.2.5 | Sabre Release to <Airline> PROD Complete | milestone | 0d | 2012-07-03 | 2012-07-03 | 249 | 0d | 0% | No BL |

| ID | WBS | Task | Duration | Start | Finish | Predecessors | Total slack | Free slack | Expected % Complete | Project Status Indicators |
| --- | --- | --- | --- | --- | --- | --- | --- | --- | --- | --- |
| 251 | 8.2.3 | **Perform Post-Cutover Period Customer Support** | 4d | 2012-07-04 | 2012-07-09 |  | 0d |  | 0% | No BL |
| 252 | 8.2.3.1 | Activate Support | 1d | 2012-07-04 | 2012-07-04 | 250 | 0d |  | 0% | No BL |
| 253 | 8.2.3.2 | Activate Service Level Agreements | 1d | 2012-07-05 | 2012-07-05 | 252 | 1d | 0d | 0% | No BL |
| 254 | 8.2.3.3 | Support Customer During Post-Cutover Period | 1d | 2012-07-06 | 2012-07-06 | 253 | 1d | 0d | 0% | No BL |
| 255 | 8.2.3.4 | Monitor Application/Integration/Data Processing Results | 1d | 2012-07-06 | 2012-07-06 | 253 | 1d | 0d | 0% | No BL |
| 256 | 8.2.3.5 | Monitor Business Process Results | 1d | 2012-07-06 | 2012-07-06 | 253 | 1d | 0d | 0% | No BL |
| 257 | 8.2.3.6 | Monitor Utilization/Skills/Capabilities | 1d | 2012-07-06 | 2012-07-06 | 253 | 1d | 0d | 0% | No BL |
| 258 | 8.2.3.7 | Communicate Findings As Needed | 1d | 2012-07-09 | 2012-07-09 | 254, 255, 256, 257 | 1d |  | 0% | No BL |
| 259 | 8.3 | **Transition to Customer Care** | 9d | 2012-07-05 | 2012-07-17 |  | 0d |  | 0% | No BL |
| 260 | 8.3.1 | **Plan Customer Care Transition** | 4d | 2012-07-05 | 2012-07-10 |  | 0d |  | 0% | No BL |
| 261 | 8.3.1.1 | Validate Set-Up in Customer Support Systems | 1d | 2012-07-05 | 2012-07-05 | 252 | 0d |  | 0% | No BL |
| 262 | 8.3.1.2 | Validate Maintenance PR Set-Up and Maintenance Invoicing | 1d | 2012-07-05 | 2012-07-05 | 252 | 0d |  | 0% | No BL |
| 263 | 8.3.1.3 | Determine Timelines for Post-Cutover Transition Period | 1d | 2012-07-05 | 2012-07-05 | 252 | 0d |  | 0% | No BL |
| 264 | 8.3.1.4 | Identify Key Support Personnel, Customer Personnel and Escalation Information | 1d | 2012-07-05 | 2012-07-05 | 252 | 0d |  | 0% | No BL |
| 265 | 8.3.1.5 | Address Global Support Considerations | 1d | 2012-07-05 | 2012-07-05 | 252 | 0d |  | 0% | No BL |
| 266 | 8.3.1.6 | Identify Command Center Transition Needs at Sabre and Customer | 1d | 2012-07-05 | 2012-07-05 | 252 | 0d |  | 0% | No BL |
| 267 | 8.3.1.7 | Consolidate and Review Support-Related Documentation | 1d | 2012-07-05 | 2012-07-05 | 252 | 0d |  | 0% | No BL |
| 268 | 8.3.1.8 | Plan the Customer Care Transition Activities | 1d | 2012-07-06 | 2012-07-06 | 261, 262, 263, 264, 265, 266, 267 | 0d |  | 0% | No BL |
| 269 | 8.3.1.9 | Perform/Validate Pre-Registration on Customer Care Systems | 1d | 2012-07-09 | 2012-07-09 | 268 | 0d |  | 0% | No BL |
| 270 | 8.3.1.10 | Review Customer Expectations and Commitments including Key Customer Issues | 1d | 2012-07-09 | 2012-07-09 | 268 | 0d |  | 0% | No BL |
| 271 | 8.3.1.11 | Plan the Internal Transition Workshop | 1d | 2012-07-09 | 2012-07-09 | 268 | 0d |  | 0% | No BL |
| 272 | 8.3.1.12 | Distribute Transition Support Information to Customer and Support Desks | 1d | 2012-07-10 | 2012-07-10 | 269, 270, 271 | 0d |  | 0% | No BL |
| 273 | 8.3.2 | **Perform Customer Care Transition** | 5d | 2012-07-11 | 2012-07-17 |  | 0d |  | 0% | No BL |
| 274 | 8.3.2.1 | Perform Internal Transition Workshop | 1d | 2012-07-11 | 2012-07-11 | 258, 272 | 0d |  | 0% | No BL |
| 275 | 8.3.2.2 | Perform Command Center Transition Activities | 1d | 2012-07-12 | 2012-07-12 | 274 | 0d |  | 0% | No BL |
| 276 | 8.3.2.3 | Update Internal Systems As Needed | 1d | 2012-07-12 | 2012-07-12 | 274 | 0d |  | 0% | No BL |
| 277 | 8.3.2.4 | Welcome Customer and Notify of Transition and Support Procedures | 1d | 2012-07-12 | 2012-07-12 | 274 | 0d |  | 0% | No BL |
| 278 | 8.3.2.5 | Review Open Service Requests | 1d | 2012-07-12 | 2012-07-12 | 274 | 0d |  | 0% | No BL |
| 279 | 8.3.2.6 | Perform Transition From Project Manager to Customer Care | 1d | 2012-07-13 | 2012-07-13 | 275, 276, 277, 278 | 0d |  | 0% | No BL |
| 280 | 8.3.2.7 | Perform Post-Implementation Survey | 1d | 2012-07-16 | 2012-07-16 | 279 | 0d |  | 0% | No BL |
| 281 | 8.3.2.8 | Validate Completion of all Transition Steps | 1d | 2012-07-16 | 2012-07-16 | 279 | 0d |  | 0% | No BL |
| 282 | 8.3.2.9 | Communicate Transition Completion Status to Stakeholders | 1d | 2012-07-17 | 2012-07-17 | 280, 281 | 0d |  | 0% | No BL |

| ID | WBS | Task | Type | Duration | Start | Finish | Predecessors | Total slack | Free slack | Expected % Complete | Project Status Indicators |
| --- | --- | --- | --- | --- | --- | --- | --- | --- | --- | --- | --- |
| 283 | 8.4 | **Perform Project Close-Out and Review** |  | 9d | 2012-07-18 | 2012-07-30 |  | 0d |  | 0% | No BL |
| 284 | 8.4.1 | **Perform Project Close-Out** |  | 4d | 2012-07-18 | 2012-07-23 |  | 0d |  | 0% | No BL |
| 285 | 8.4.1.1 | Review All Project Closure Related Steps |  | 1d | 2012-07-18 | 2012-07-18 | 282 | 0d |  | 0% | No BL |
| 286 | 8.4.1.2 | Close Delivery Project Codes |  | 1d | 2012-07-19 | 2012-07-19 | 285 | 0d |  | 0% | No BL |
| 287 | 8.4.1.3 | Validate Final Invoicing and Revenue Recognition |  | 1d | 2012-07-19 | 2012-07-19 | 285 | 0d |  | 0% | No BL |
| 288 | 8.4.1.4 | Finalize Customer Acceptance (if required) |  | 1d | 2012-07-19 | 2012-07-19 | 285 | 0d |  | 0% | No BL |
| 289 | 8.4.1.5 | Close Down the Command Center |  | 1d | 2012-07-19 | 2012-07-19 | 285 | 0d |  | 0% | No BL |
| 290 | 8.4.1.6 | Update Value Measurement |  | 1d | 2012-07-19 | 2012-07-19 | 285 | 0d |  | 0% | No BL |
| 291 | 8.4.1.7 | Conduct Final Executive Steering Meeting |  | 1d | 2012-07-20 | 2012-07-20 | 286, 287, 288, 289, 290 | 0d |  | 0% | No BL |
| 292 | 8.4.1.8 | Review final budget actuals with Lisa Verdick for deal sheet reconciliation |  | 1d | 2012-07-23 | 2012-07-23 | 291 | 0d |  | 0% | No BL |
| 293 | 8.4.1.9 | Archive Project Documentation |  | 1d | 2012-07-23 | 2012-07-23 | 291 | 0d |  | 0% | No BL |
| 294 | 8.4.1.10 | Recognize and Celebrate Project Success |  | 1d | 2012-07-23 | 2012-07-23 | 291 | 0d |  | 0% | No BL |
| 295 | 8.4.2 | **Perform Post-Project Review** |  | 6d | 2012-07-23 | 2012-07-30 |  | 0d |  | 0% | No BL |
| 296 | 8.4.2.1 | Identify Internal and External Participants |  | 1d | 2012-07-23 | 2012-07-23 | 291 | 0d |  | 0% | No BL |
| 297 | 8.4.2.2 | Conduct Internal Post-Project Review |  | 1d | 2012-07-24 | 2012-07-24 | 293, 294, 296, 292 | 0d |  | 0% | No BL |
| 298 | 8.4.2.3 | Conduct Customer Post-Project Review |  | 1d | 2012-07-25 | 2012-07-25 | 297 | 0d |  | 0% | No BL |
| 299 | 8.4.2.4 | Summarize Post-Project Review Findings |  | 1d | 2012-07-26 | 2012-07-26 | 298 | 0d |  | 0% | No BL |
| 300 | 8.4.2.5 | Archive Post-Project Review and Lessons Learned |  | 1d | 2012-07-27 | 2012-07-27 | 299 | 0d |  | 0% | No BL |
| 301 | 8.4.2.6 | Communicate Findings to Stakeholders |  | 1d | 2012-07-30 | 2012-07-30 | 300 | 0d |  | 0% | No BL |
| 302 | 9 | Project Transition Phase Complete | milestone | 0d | 2012-07-30 | 2012-07-30 | 301 | 0d |  | 0% | No BL |
| 303 | 10 | **Project Management** |  | 5d? | 2012-01-03 | 2012-01-09 |  | 145d |  | 0% | No BL |
| 304 | 10.1 | **Perform Project Planning** |  | 4d? | 2012-01-03 | 2012-01-06 |  | 145d |  | 0% | No BL |
| 305 | 10.1.1 | **Plan the Project** |  | 4d? | 2012-01-03 | 2012-01-06 |  | 145d |  | 0% | No BL |
| 306 | 10.1.1.1 | Update/Finalize the Issues Management Plan |  | 1d? | 2012-01-03 | 2012-01-03 | 5 | 145d | 0d | 0% | No BL |
| 307 | 10.1.1.2 | Update/Finalize the Change Management Plan (Scope/Schedule Mgmt) |  | 1d? | 2012-01-03 | 2012-01-03 | 5 | 145d | 0d | 0% | No BL |
| 308 | 10.1.1.3 | Update/Finalize the Communication Plan |  | 1d? | 2012-01-03 | 2012-01-03 | 5 | 145d | 0d | 0% | No BL |
| 309 | 10.1.1.4 | Update/Finalize the Risk Management Plan |  | 1d? | 2012-01-03 | 2012-01-03 | 5 | 145d | 0d | 0% | No BL |
| 310 | 10.1.1.5 | Update/Finalize the Quality Management Plan |  | 1d? | 2012-01-03 | 2012-01-03 | 5 | 145d | 0d | 0% | No BL |
| 311 | 10.1.1.6 | Update/Finalize the Budget and Invoicing Information |  | 1d? | 2012-01-03 | 2012-01-03 | 5 | 145d | 0d | 0% | No BL |
| 312 | 10.1.1.7 | Update/Finalize the Integrated Delivery Plan |  | 1d? | 2012-01-03 | 2012-01-03 | 5 | 145d | 0d | 0% | No BL |
| 313 | 10.1.1.8 | Update/Finalize Project Reporting and Metrics (internal and external) |  | 1d? | 2012-01-03 | 2012-01-03 | 5 | 145d | 0d | 0% | No BL |
| 314 | 10.1.1.9 | Update/Finalize the Integrated Project Schedule |  | 1d? | 2012-01-03 | 2012-01-03 | 5 | 145d | 0d | 0% | No BL |
| 315 | 10.1.1.10 | Integrate All Plans into a Comprehensive Project Notebook |  | 1d? | 2012-01-04 | 2012-01-04 | 306, 307, 308, 309, 310, 311, 312, 313, 314 | 145d | 0d | 0% | No BL |
| 316 | 10.1.1.11 | Update the Stakeholders List |  | 1d? | 2012-01-05 | 2012-01-05 | 315 | 145d | 0d | 0% | No BL |
| 317 | 10.1.1.12 | Communicate Project Plans to Stakeholders |  | 1d? | 2012-01-06 | 2012-01-06 | 316 | 145d | 0d | 0% | No BL |

| ID | WBS | Task | Type | Duration | Start | Finish | Predecessors | Total slack | Free slack | Expected % Complete | Project Status Indicators |
| --- | --- | --- | --- | --- | --- | --- | --- | --- | --- | --- | --- |
| 318 | 10.2 | **Perform Project Management** |  | 1d? | 2012-01-09 | 2012-01-09 |  | 145d |  | 0% | No BL |
| 319 | 10.2.1 | **Manage the Project** |  | 1d? | 2012-01-09 | 2012-01-09 |  | 145d |  | 0% | No BL |
| 320 | 10.2.1.1 | Manage Project Scope |  | 1d? | 2012-01-09 | 2012-01-09 | 317 | 145d | 0d | 0% | No BL |
| 321 | 10.2.1.2 | Manage the Project Schedule |  | 1d? | 2012-01-09 | 2012-01-09 | 317 | 145d | 0d | 0% | No BL |
| 322 | 10.2.1.3 | Manage Project Issues |  | 1d? | 2012-01-09 | 2012-01-09 | 317 | 145d | 0d | 0% | No BL |
| 323 | 10.2.1.4 | Manage Project Risks |  | 1d? | 2012-01-09 | 2012-01-09 | 317 | 145d | 0d | 0% | No BL |
| 324 | 10.2.1.5 | Manage Project Quality |  | 1d? | 2012-01-09 | 2012-01-09 | 317 | 145d | 0d | 0% | No BL |
| 325 | 10.2.1.6 | Manage Delivery as an Integrated Portfolio |  | 1d? | 2012-01-09 | 2012-01-09 | 317 | 145d | 0d | 0% | No BL |
| 326 | 10.2.1.7 | Manage Project Budget and Invoicing |  | 1d? | 2012-01-09 | 2012-01-09 | 317 | 145d | 0d | 0% | No BL |
| 327 | 10.2.1.8 | Perform Project Metrics Tracking |  | 1d? | 2012-01-09 | 2012-01-09 | 317 | 145d | 0d | 0% | No BL |
| 328 | 10.2.1.9 | Perform Project Status Reporting |  | 1d? | 2012-01-09 | 2012-01-09 | 317 | 145d | 0d | 0% | No BL |
| 329 | 10.2.1.10 | Perform Project Steering |  | 1d? | 2012-01-09 | 2012-01-09 | 317 | 145d | 0d | 0% | No BL |
| 330 | 10.2.1.11 | Manage Project Stakeholder Communications |  | 1d? | 2012-01-09 | 2012-01-09 | 317 | 145d | 0d | 0% | No BL |
| 331 | 11 | Project Management Complete | milestone | 0d | 2012-01-09 | 2012-01-09 | 320, 321, 322, 323, 324, 325, 326, 327, 328, 329, 330 | 145d |  | 0% | No BL |
| 332 | 12 | End the Implementation and Support Lifecycle - Project Schedule Template | milestone | 0d | 2012-07-30 | 2012-07-30 | 331, 302 | 0d |  | 0% | No BL |
