# NewOffice-IT-Mphasis

Schedule from MS Project, 2012-10-22 to 2012-12-14, status date 2012-11-05, costs in $, A marks actual dates.

## Calendars

- NewOffice-IT-Mphasis: Mon-Fri 08:00-12:00, 13:00-17:00; Sat-Sun off.

## Resources

| Resource | Unit | Rate |
| --- | --- | --- |
| Sharan |  | 10 |
| Hoysala |  | 20 |
| Rajnikant |  | 30 |
| Radhakrisna |  | 40 |
| Karthik |  | 50 |
| Sandhya |  | 60 |
| Ravi |  | 70 |
| Srivinas |  | 80 |
| V Srinivas |  | 90 |
| Sukumar |  | 100 |
| Developer |  | 110 |
| Network Engineer |  | 120 |
| Switches | Units | 1000 |
| Routers | Units | 1500 |
| Servers | Units | 900 |
| Cables | Meters | 2 |
| Installation Charges |  |  |
| Local Travel |  |  |
| International Travel |  |  |
| Material Movment Cost |  |  |
| Engineering Budget |  |  |
| Cables Budget | Meters |  |
| SCM |  | 130 |
| Tyco | Nos | 15 |
| Cisco | Nos | 25 |
| Cabling Vendor |  |  |
| PM |  | 140 |
| Project Budget Cost |  |  |

## Schedule

| ID | WBS | Task | Type | Duration | Start | Finish | Predecessors | Complete | Remaining | Baseline start | Baseline finish | Baseline duration | Total slack | Free slack | Constraint | Deadline | Resources | Work | Actual work | Cost | Baseline cost | Actual cost |
| --- | --- | --- | --- | --- | --- | --- | --- | --- | --- | --- | --- | --- | --- | --- | --- | --- | --- | --- | --- | --- | --- | --- |
| 1 | 1 | **NewOffice-IT-Mphasis-Project** |  | 40d | 2012-10-22 A | 2012-12-14 |  | 21% | 31.45d | 2012-10-22 | 2012-12-14 | 40d | 0d |  |  |  |  | 687h | 123h | 61,241 | 61,392 | 15,658 |
| 2 | 1.1 | **Phase1 (Planning Phase)** |  | 14.62d | 2012-10-22 A | 2012-11-09 |  | 61% | 5.64d | 2012-10-22 | 2012-11-06 | 12d | 25.38d |  |  |  |  | 161h | 97h | 6,610 | 6,720 | 4,050 |
| 3 | 1.1.1 | **Floor Design** |  | 8.62d | 2012-10-22 A | 2012-11-01 A |  | 100% |  | 2012-10-22 | 2012-10-31 | 8d |  |  |  |  |  | 97h | 97h | 4,050 | 4,160 | 4,050 |
| 4 | 1.1.1.1 | **Furniture Layout Design** |  | 4d | 2012-10-22 A | 2012-10-25 A |  | 100% |  | 2012-10-22 | 2012-10-25 | 4d |  |  |  |  |  | 29h | 29h | 1,450 | 1,600 | 1,450 |
| 5 | 1.1.1.1.1 | Identify # of WS required |  | 2d | 2012-10-22 A | 2012-10-23 A |  | 100% |  | 2012-10-22 | 2012-10-23 | 2d |  |  |  | 2012-10-26 | Karthik | 18h | 18h | 900 | 800 | 900 |
| 6 | 1.1.1.1.2 | Identify WS size |  | 2d | 2012-10-24 A | 2012-10-25 A | 5 | 100% |  | 2012-10-24 | 2012-10-25 | 2d |  |  |  |  | Karthik | 11h | 11h | 550 | 800 | 550 |
| 7 | 1.1.1.2 | **Data Raceway** |  | 4.12d | 2012-10-26 A | 2012-11-01 A |  | 100% |  | 2012-10-26 | 2012-10-31 | 4d |  |  |  |  |  | 32h | 32h | 2,240 | 2,240 | 2,240 |
| 8 | 1.1.1.2.1 | Identify raceway type |  | 2d | 2012-10-26 A | 2012-10-29 A | 4 | 100% |  | 2012-10-26 | 2012-10-29 | 2d |  |  |  |  | Ravi | 16h | 16h | 1,120 | 1,120 | 1,120 |
| 9 | 1.1.1.2.2 | Identify path |  | 2.12d | 2012-10-30 A | 2012-11-01 A | 8 | 100% |  | 2012-10-30 | 2012-10-31 | 2d |  |  |  |  | Ravi | 16h | 16h | 1,120 | 1,120 | 1,120 |
| 10 | 1.1.1.3 | **Hubroom Layout** |  | 4.62d | 2012-10-26 A | 2012-11-01 A |  | 100% |  | 2012-10-26 | 2012-10-31 | 4d |  |  |  |  |  | 36h | 36h | 360 | 320 | 360 |
| 11 | 1.1.1.3.1 | Calculate # of rack required |  | 2d | 2012-10-26 A | 2012-10-29 A | 4 | 100% |  | 2012-10-26 | 2012-10-29 | 2d |  |  |  |  | Sharan | 15h | 15h | 150 | 160 | 150 |
| 12 | 1.1.1.3.2 | Calculate the hub room size |  | 2.62d | 2012-10-30 A | 2012-11-01 A | 11 | 100% |  | 2012-10-30 | 2012-10-31 | 2d |  |  |  |  | Sharan | 21h | 21h | 210 | 160 | 210 |
| 13 | 1.1.2 | **Network Design** |  | 10.62d | 2012-10-26 | 2012-11-09 |  |  |  | 2012-10-26 | 2012-11-06 | 8d | 6d |  |  |  |  | 64h |  | 2,560 | 2,560 |  |
| 14 | 1.1.2.1 | **Cabling Design** |  | 6d | 2012-11-01 | 2012-11-09 |  |  |  | 2012-11-01 | 2012-11-06 | 4d | 25.38d |  |  |  |  | 32h |  | 1,920 | 1,920 |  |
| 15 | 1.1.2.1.1 | Prepare BOM |  | 2d | 2012-11-01 | 2012-11-05 | 7, 10 |  |  | 2012-11-01 | 2012-11-02 | 2d | 25.38d | 0d |  |  | Sandhya | 16h |  | 960 | 960 |  |
| 16 | 1.1.2.1.2 | Take BOM approval |  | 2d | 2012-11-05 | 2012-11-09 | 15 |  |  | 2012-11-05 | 2012-11-06 | 2d | 25.38d |  |  |  | Sandhya | 16h |  | 960 | 960 |  |
| 17 | 1.1.2.2 | **LAN Design** |  | 4d | 2012-10-26 | 2012-10-31 |  |  |  | 2012-10-26 | 2012-10-31 | 4d | 6d |  |  |  |  | 32h |  | 640 | 640 |  |
| 18 | 1.1.2.2.1 | Prepare BOM of LAN Devices |  | 2d | 2012-10-26 | 2012-10-29 | 4 |  |  | 2012-10-26 | 2012-10-29 | 2d | 6d | 0d |  |  | Hoysala | 16h |  | 320 | 320 |  |
| 19 | 1.1.2.2.2 | Take approval of BOM of LAN devices |  | 2d | 2012-10-30 | 2012-10-31 | 18 |  |  | 2012-10-30 | 2012-10-31 | 2d | 6d | 0d |  |  | Hoysala | 16h |  | 320 | 320 |  |
| 20 | 1.1.2.3 | Floor Design Complete | milestone | 0d | 2012-10-31 | 2012-10-31 | 19 |  |  | 2012-10-31 | 2012-10-31 | 0d | 6d | 0d |  |  |  |  |  |  |  |  |
| 21 | 1.2 | **Phase2 (Procurement)** |  | 10d | 2012-11-01 | 2012-11-14 |  |  |  | 2012-11-01 | 2012-11-14 | 10d | 6d |  |  |  |  | 160h |  | 14,682 | 14,682 |  |
| 22 | 1.2.1 | **Quote** |  | 2d | 2012-11-01 | 2012-11-02 |  |  |  | 2012-11-01 | 2012-11-02 | 2d | 6d |  |  |  |  | 32h |  | 3,520 | 3,520 |  |
| 23 | 1.2.1.1 | Passive Cabling Quote |  | 2d | 2012-11-01 | 2012-11-02 | 20 |  |  | 2012-11-01 | 2012-11-02 | 2d | 6d | 0d | start no earlier than 2012-10-31 |  | V Srinivas | 16h |  | 1,440 | 1,440 |  |
| 24 | 1.2.1.2 | Active Device Quote |  | 2d | 2012-11-01 | 2012-11-02 | 20 |  |  | 2012-11-01 | 2012-11-02 | 2d | 8d | 0d |  |  | SCM | 16h |  | 2,080 | 2,080 |  |

| ID | WBS | Task | Type | Duration | Start | Finish | Predecessors | Complete | Remaining | Baseline start | Baseline finish | Baseline duration | Total slack | Free slack | Constraint | Resources | Work | Actual work | Cost | Baseline cost | Actual cost |
| --- | --- | --- | --- | --- | --- | --- | --- | --- | --- | --- | --- | --- | --- | --- | --- | --- | --- | --- | --- | --- | --- |
| 25 | 1.2.2 | **Vendor Finalization** |  | 2d | 2012-11-05 | 2012-11-06 |  |  |  | 2012-11-05 | 2012-11-06 | 2d | 6d |  |  |  | 32h |  | 3,200 | 3,200 |  |
| 26 | 1.2.2.1 | Passive Cabling VF |  | 2d | 2012-11-05 | 2012-11-06 | 23 |  |  | 2012-11-05 | 2012-11-06 | 2d | 6d | 0d | start no earlier than 2012-11-05 | Ravi | 16h |  | 1,120 | 1,120 |  |
| 27 | 1.2.2.2 | Active Device VF |  | 2d | 2012-11-05 | 2012-11-06 | 24 |  |  | 2012-11-05 | 2012-11-06 | 2d | 8d | 0d |  | SCM | 16h |  | 2,080 | 2,080 |  |
| 28 | 1.2.3 | **Order Material** |  | 4d | 2012-11-07 | 2012-11-12 |  |  |  | 2012-11-07 | 2012-11-12 | 4d | 6d |  |  |  | 64h |  | 4,480 | 4,480 |  |
| 29 | 1.2.3.1 | **Passive Cabling Order** |  | 4d | 2012-11-07 | 2012-11-12 |  |  |  | 2012-11-07 | 2012-11-12 | 4d | 6d |  |  |  | 32h |  | 3,040 | 3,040 |  |
| 30 | 1.2.3.1.1 | Raise procurment request of PD |  | 2d | 2012-11-07 | 2012-11-08 | 26 |  |  | 2012-11-07 | 2012-11-08 | 2d | 6d | 0d |  | Sandhya | 16h |  | 960 | 960 |  |
| 31 | 1.2.3.1.2 | Relase PO of PD |  | 2d | 2012-11-09 | 2012-11-12 | 30 |  |  | 2012-11-09 | 2012-11-12 | 2d | 6d | 0d |  | SCM | 16h |  | 2,080 | 2,080 |  |
| 32 | 1.2.3.2 | **Active Device Order** |  | 4d | 2012-11-07 | 2012-11-12 |  |  |  | 2012-11-07 | 2012-11-12 | 4d | 8d |  |  |  | 32h |  | 1,440 | 1,440 |  |
| 33 | 1.2.3.2.1 | Raise procurment request of AD |  | 2d | 2012-11-07 | 2012-11-08 | 27 |  |  | 2012-11-07 | 2012-11-08 | 2d | 8d | 0d |  | Hoysala | 16h |  | 320 | 320 |  |
| 34 | 1.2.3.2.2 | Raise purpose order of AD |  | 2d | 2012-11-09 | 2012-11-12 | 33 |  |  | 2012-11-09 | 2012-11-12 | 2d | 8d | 0d | start no earlier than 2012-11-09 | Ravi | 16h |  | 1,120 | 1,120 |  |
| 35 | 1.2.4 | **Delivery Material** |  | 2d | 2012-11-13 | 2012-11-14 |  |  |  | 2012-11-13 | 2012-11-14 | 2d | 6d |  |  |  | 32h |  | 3,482 | 3,482 |  |
| 36 | 1.2.4.1 | Passive Cabling Delivery of AD |  | 2d | 2012-11-13 | 2012-11-14 | 31 |  |  | 2012-11-13 | 2012-11-14 | 2d | 6d | 0d | start no earlier than 2012-11-13 | Tyco [1 Nos]; Sandhya; Material Movment Cost [0.1%] | 16h |  | 1,126 | 1,126 |  |
| 37 | 1.2.4.2 | Active Device Delivery of AD |  | 2d | 2012-11-13 | 2012-11-14 | 34 |  |  | 2012-11-13 | 2012-11-14 | 2d | 8d | 0d |  | Cisco [1 Nos]; SCM; Material Movment Cost [0.1%] | 16h |  | 2,356 | 2,356 |  |
| 38 | 1.2.5 | Procurement complete | milestone | 0d | 2012-11-14 | 2012-11-14 | 37 |  |  | 2012-11-14 | 2012-11-14 | 0d | 22d |  |  |  |  |  |  |  |  |
| 39 | 1.3 | **Phase3 (Implementation)** |  | 6.8d | 2012-11-15 A | 2012-11-23 |  |  | 6.8d | 2012-11-15 | 2012-11-22 | 6d | 5.2d | 0d |  |  | 96h |  | 18,241 | 18,342 | 9,900 |
| 40 | 1.3.1 | Cabling Setup |  | 2d | 2012-11-15 A | 2012-11-16 | 36 |  | 2d | 2012-11-15 | 2012-11-16 | 2d | 6d | 0d |  | Cabling Vendor [0.1%]; Ravi; Cables [100 Meters]; Installation Charges [0.1%] | 16h |  | 2,721 | 2,822 | 1,100 |
| 41 | 1.3.2 | LAN Setup |  | 2d | 2012-11-19 A | 2012-11-21 | 37, 40 |  | 2d | 2012-11-19 | 2012-11-20 | 2d | 5.2d | 0d |  | Network Engineer; Routers [2 Units]; Servers [2 Units]; Switches [4 Units] | 16h |  | 10,720 | 10,720 | 8,800 |
| 42 | 1.3.3 | Testing |  | 2d | 2012-11-21 | 2012-11-23 | 41 |  |  | 2012-11-21 | 2012-11-22 | 2d | 5.2d | 0d |  | Rajnikant; Srivinas; Sukumar; V Srinivas | 64h |  | 4,800 | 4,800 |  |
| 43 | 1.3.4 | Implementation Complete | milestone | 0d | 2012-11-23 | 2012-11-23 | 42 |  |  | 2012-11-22 | 2012-11-22 | 0d | 5.2d | 0d |  |  |  |  |  |  |  |
| 44 | 1.4 | **Phase4** |  | 4d | 2012-11-23 | 2012-11-29 |  |  |  | 2012-11-23 | 2012-11-28 | 4d | 11.2d |  |  |  | 96h |  | 7,360 | 7,360 |  |
| 45 | 1.4.1 | UAT |  | 2d | 2012-11-23 | 2012-11-27 | 43 |  |  | 2012-11-23 | 2012-11-26 | 2d | 11.2d | 0d | start no earlier than 2012-11-23 | Rajnikant; Karthik; Sukumar; V Srinivas | 64h |  | 4,320 | 4,320 |  |
| 46 | 1.4.2 | Troubleshoot |  | 2d | 2012-11-27 | 2012-11-29 | 45 |  |  | 2012-11-27 | 2012-11-28 | 2d | 11.2d |  |  | Ravi; Network Engineer | 32h |  | 3,040 | 3,040 |  |
| 47 | 1.5 | **Phase5 (Develop Ticketing System)** |  | 15.2d | 2012-11-23 A | 2012-12-14 |  | 12% | 13.36d | 2012-11-23 | 2012-12-14 | 16d | 0d |  |  |  | 154h | 26h | 11,788 | 11,728 | 1,708 |
| 48 | 1.5.1 | **Develop Complaint Entry Screen** |  | 6d | 2012-11-23 | 2012-12-03 |  |  |  | 2012-11-23 | 2012-11-30 | 6d | 5.2d |  |  |  | 48h |  | 4,320 | 4,320 |  |
| 49 | 1.5.1.1 | Develop DB for Complaint Screen |  | 3d | 2012-11-23 | 2012-11-28 | 39 |  |  | 2012-11-23 | 2012-11-27 | 3d | 5.2d | 0d |  | Srivinas | 24h |  | 3,600 | 3,600 |  |
| 50 | 1.5.1.2 | Develop UI for Complaint Screen |  | 3d | 2012-11-28 | 2012-12-03 | 49 |  |  | 2012-11-28 | 2012-11-30 | 3d | 5.2d | 0d |  | Rajnikant | 24h |  | 720 | 720 |  |

| ID | WBS | Task | Duration | Start | Finish | Predecessors | Complete | Baseline start | Baseline finish | Baseline duration | Total slack | Free slack | Constraint | Resources | Work | Actual work | Cost | Baseline cost | Actual cost |
| --- | --- | --- | --- | --- | --- | --- | --- | --- | --- | --- | --- | --- | --- | --- | --- | --- | --- | --- | --- |
| 51 | 1.5.2 | **Develop Alerts Workflow** | 4d | 2012-12-03 | 2012-12-07 |  |  | 2012-12-03 | 2012-12-06 | 4d | 5.2d |  |  |  | 32h |  | 2,080 | 2,080 |  |
| 52 | 1.5.2.1 | Design Workflow | 2d | 2012-12-03 | 2012-12-05 | 50 |  | 2012-12-03 | 2012-12-04 | 2d | 5.2d | 0d |  | V Srinivas | 16h |  | 1,440 | 1,440 |  |
| 53 | 1.5.2.2 | Implement Workflow | 2d | 2012-12-05 | 2012-12-07 | 52 |  | 2012-12-05 | 2012-12-06 | 2d | 5.2d |  |  | Radhakrisna | 16h |  | 640 | 640 |  |
| 54 | 1.5.3 | **Devleop Severity Definition Screen** | 4d | 2012-12-03 | 2012-12-07 |  |  | 2012-12-03 | 2012-12-06 | 4d | 5.2d |  |  |  | 24h |  | 1,280 | 1,280 |  |
| 55 | 1.5.3.1 | Develop DB for Severity | 1d | 2012-12-03 | 2012-12-04 | 50 |  | 2012-12-03 | 2012-12-03 | 1d | 8.2d |  |  | Sukumar | 8h |  | 800 | 800 |  |
| 56 | 1.5.3.2 | Implement Severity Screen | 2d | 2012-12-05 | 2012-12-07 | 52 |  | 2012-12-05 | 2012-12-06 | 2d | 5.2d |  | start no earlier than 2012-12-05 | Rajnikant | 16h |  | 480 | 480 |  |
| 57 | 1.5.4 | FT of System | 1.95d | 2012-12-07 A | 2012-12-11 A | 54 | 100% | 2012-12-07 | 2012-12-10 | 2d |  |  |  | Srivinas | 16h | 16h | 1,408 | 1,408 | 1,408 |
| 58 | 1.5.5 | UAT | 3d | 2012-12-11 | 2012-12-14 | 57 |  | 2012-12-11 | 2012-12-13 | 3d | 0.25d |  |  | Karthik; International Travel [0.1%] | 24h |  | 2,400 | 2,400 |  |
| 59 | 1.5.6 | Production Golive | 0.25d | 2012-12-14 A | 2012-12-14 A | 58 | 100% | 2012-12-14 | 2012-12-14 | 1d |  |  |  | Rajnikant | 10h | 10h | 300 | 240 | 300 |
| 60 | 1.6 | **Project Management** | 29.12d | 2012-10-22 | 2012-11-30 |  |  | 2012-10-22 | 2012-11-30 | 29.12d | 10.88d |  |  |  | 20h |  | 2,560 | 2,560 |  |
| 61 | 1.6.1 | **Status Meeting with Management** | 25.12d | 2012-10-22 | 2012-11-26 |  |  | 2012-10-22 | 2012-11-26 | 25.12d | 14.88d |  |  |  | 2h |  | 280 | 280 |  |
| 62 | 1.6.1.1 | Status Meeting with Management 1 | 1h | 2012-10-22 | 2012-10-22 |  |  | 2012-10-22 | 2012-10-22 | 1h | 39.88d |  | start no earlier than 2012-10-22 | PM | 1h |  | 140 | 140 |  |
| 63 | 1.6.1.2 | Status Meeting with Management 2 | 1h | 2012-11-26 | 2012-11-26 |  |  | 2012-11-26 | 2012-11-26 | 1h | 14.88d |  | start no earlier than 2012-11-26 | PM | 1h |  | 140 | 140 |  |
| 64 | 1.6.2 | **Review Project Plan & Risks** | 25.12d | 2012-10-26 | 2012-11-30 |  |  | 2012-10-26 | 2012-11-30 | 25.12d | 10.88d |  |  |  | 18h |  | 2,280 | 2,280 |  |
| 65 | 1.6.2.1 | Review Project Plan & Risks 1 | 1h | 2012-10-26 | 2012-10-26 |  |  | 2012-10-26 | 2012-10-26 | 1h | 35.88d |  | start no earlier than 2012-10-26 | Network Engineer [200%]; PM | 3h |  | 380 | 380 |  |
| 66 | 1.6.2.2 | Review Project Plan & Risks 2 | 1h | 2012-11-02 | 2012-11-02 |  |  | 2012-11-02 | 2012-11-02 | 1h | 30.88d |  | start no earlier than 2012-11-02 | Network Engineer [200%]; PM | 3h |  | 380 | 380 |  |
| 67 | 1.6.2.3 | Review Project Plan & Risks 3 | 1h | 2012-11-09 | 2012-11-09 |  |  | 2012-11-09 | 2012-11-09 | 1h | 25.88d |  | start no earlier than 2012-11-09 | Network Engineer [200%]; PM | 3h |  | 380 | 380 |  |
| 68 | 1.6.2.4 | Review Project Plan & Risks 4 | 1h | 2012-11-16 | 2012-11-16 |  |  | 2012-11-16 | 2012-11-16 | 1h | 20.88d |  | start no earlier than 2012-11-16 | Network Engineer [200%]; PM | 3h |  | 380 | 380 |  |
| 69 | 1.6.2.5 | Review Project Plan & Risks 5 | 1h | 2012-11-23 | 2012-11-23 |  |  | 2012-11-23 | 2012-11-23 | 1h | 15.88d |  | start no earlier than 2012-11-23 | Network Engineer [200%]; PM | 3h |  | 380 | 380 |  |
| 70 | 1.6.2.6 | Review Project Plan & Risks 6 | 1h | 2012-11-30 | 2012-11-30 |  |  | 2012-11-30 | 2012-11-30 | 1h | 10.88d |  | start no earlier than 2012-11-30 | Network Engineer [200%]; PM | 3h |  | 380 | 380 |  |
