# Project-2010

Schedule from MS Project, 2012-03-20 to 2012-06-15, costs in $, A marks actual dates.
Aurovision

## Calendars

- TamilNadu Location Calendar: Mon-Fri 08:00-12:00, 13:00-17:00; Sat-Sun off. Exceptions (off unless hours are given): 2012-04-13 (Tamil New Year), 2012-05-01 (May Day).

## Resources

| Resource | Unit | Rate |
| --- | --- | --- |
| Uday |  | 1 |
| Uday2 |  | 2 |
| Sachin |  | 3 |
| Kathir |  | 4 |
| Jaiprakash |  | 5 |
| Tulasi |  | 6 |
| Pranan |  | 7 |
| Vinay |  | 8 |
| Veeramani |  | 9 |
| Unni |  | 10 |
| Kamakshi |  | 11 |
| Craine |  | 12 |
| Cement | Bags | 10 |
| Paint | Liters | 15 |
| Brick | Units | 0.1 |
| Sand | Trucks | 100 |
| Water | Gallons | 0.1 |
| Steel | Tons | 200 |
| Printing Machine |  | 15 |
| Wood | Cubic | 20 |
| Travel |  |  |
| Food |  |  |
| GuestHouse |  |  |
| Designer |  | 20 |
| Liasoning Fees |  |  |
| Field Boy |  | 21 |
| JCB Machine |  | 22 |
| HandTools |  | 23 |
| Veermani |  | 24 |
| Prananathan |  | 25 |
| H1 |  | 26 |

## Schedule

| ID | WBS | Task | Type | Duration | Start | Finish | Predecessors | Complete | Remaining | Baseline start | Baseline finish | Baseline duration | Total slack | Free slack | Constraint | Resources | Work | Actual work | Cost | Actual cost | Text1 |
| --- | --- | --- | --- | --- | --- | --- | --- | --- | --- | --- | --- | --- | --- | --- | --- | --- | --- | --- | --- | --- | --- |
| 1 | 1 | **Sweet Home Construction** |  | 62d | 2012-03-20 A | 2012-06-15 |  | 1% | 61.48d | 2012-03-20 | 2012-06-15 | 62d | 0d |  |  |  | 2344h | 50h | 26,452 | 783.33 |  |
| 2 | 1.1 | **Project Management** |  | 26d | 2012-03-26 A | 2012-05-02 |  | 8% | 23.99d | 2012-03-26 | 2012-04-30 | 25d | 32d |  |  |  | 312h | 50h | 3,976 | 783.33 | Uday |
| 3 | 1.1.1 | Architecture | milestone | 5d | 2012-03-26 A | 2012-03-30 |  | 42% | 2.92d | 2012-03-26 | 2012-03-29 | 4d | 3.5d | 0d |  | Uday; Designer; H1 | 120h | 50h | 1,880 | 783.33 | Uday |
| 4 | 1.1.2 | Approval/Liasoning |  | 10d | 2012-03-30 | 2012-04-12 | 3FS-1d |  |  | 2012-03-29 | 2012-04-11 | 10d | 32d | 0d |  | Field Boy; Liasoning Fees | 80h |  | 1,680 |  | Uday |
| 5 | 1.1.3 | Inspection/ Review |  | 2d | 2012-04-16 | 2012-04-17 | 4 |  |  | 2012-04-12 | 2012-04-16 | 2d | 32d | 0d |  | Designer; Uday | 32h |  | 336 |  | Uday |
| 6 | 1.1.4 | Contract/Procurment Mgmt |  | 10d | 2012-04-18 | 2012-05-02 | 5 |  |  | 2012-04-17 | 2012-04-30 | 10d | 32d |  |  | Uday | 80h |  | 80 |  | Uday |
| 7 | 1.2 | **Design** |  | 5d | 2012-03-26 | 2012-03-30 |  |  |  | 2012-03-26 | 2012-03-30 | 5d | 2d |  |  |  | 80h |  | 240 |  | Uday |
| 8 | 1.2.1 | Civil Design |  | 5d | 2012-03-26 | 2012-03-30 | 3SS |  |  | 2012-03-26 | 2012-03-30 | 5d | 41d | 0d |  | Sachin | 40h |  | 120 |  | Sachin |
| 9 | 1.2.2 | Elec Design |  | 3d | 2012-03-26 | 2012-03-28 | 3SS |  |  | 2012-03-26 | 2012-03-28 | 3d | 2d | 0d |  | Sachin | 24h |  | 72 |  | Sachin |
| 10 | 1.2.3 | Int Design |  | 2d | 2012-03-26 | 2012-03-27 | 3SS |  |  | 2012-03-26 | 2012-03-27 | 2d | 56d |  |  | Sachin | 16h |  | 48 |  | Sachin |
| 11 | 1.3 | **Cricket Ground** |  | 7d | 2012-03-20 | 2012-03-28 |  |  |  | 2012-03-20 | 2012-03-28 | 7d | 55d |  |  |  | 72h |  | 264 |  | Jaiprakash |
| 12 | 1.3.1 | Preparing Pitch |  | 4d | 2012-03-20 | 2012-03-26 | 8SF |  |  | 2012-03-20 | 2012-03-26 | 4d | 58d | 0d | start no earlier than 2012-03-20 | Uday2 | 32h |  | 64 |  |  |
| 13 | 1.3.2 | Putting Boundary Limit |  | 2d | 2012-03-20 | 2012-03-21 | 12SS |  |  | 2012-03-20 | 2012-03-21 | 2d | 60d |  |  | Jaiprakash | 16h |  | 80 |  |  |
| 14 | 1.3.3 | Dugg outs |  | 3d | 2012-03-26 | 2012-03-28 |  |  |  | 2012-03-26 | 2012-03-28 | 3d | 55d |  |  | Jaiprakash | 24h |  | 120 |  |  |
| 15 | 1.4 | **Swimming Pool** |  | 9d | 2012-04-02 | 2012-04-12 |  |  |  | 2012-04-02 | 2012-04-12 | 9d | 44d |  |  |  | 72h |  | 360 |  | Kathir |
| 16 | 1.4.1 | Digging |  | 8h | 2012-04-02 | 2012-04-02 | 8 |  |  | 2012-04-02 | 2012-04-02 | 8h | 44d | 0d | start no earlier than 2012-04-02 | Jaiprakash | 8h |  | 40 |  |  |
| 17 | 1.4.2 | Construction |  | 7d | 2012-04-03 | 2012-04-11 | 16 |  |  | 2012-04-03 | 2012-04-11 | 7d | 44d | 0d | start no earlier than 2012-04-03 | Jaiprakash | 56h |  | 280 |  |  |
| 18 | 1.4.3 | Water Filling |  | 1d | 2012-04-12 | 2012-04-12 | 17 |  |  | 2012-04-12 | 2012-04-12 | 1d | 44d |  | start no earlier than 2012-04-12 | Jaiprakash | 8h |  | 40 |  |  |
| 19 | 1.5 | **Garden** |  | 12d | 2012-04-02 | 2012-04-18 |  |  |  | 2012-04-02 | 2012-04-18 | 12d | 41d |  |  |  | 96h |  | 576 |  | Tulasi |
| 20 | 1.5.1 | Layout |  | 2d | 2012-04-02 | 2012-04-03 | 8 |  |  | 2012-04-02 | 2012-04-03 | 2d | 41d | 0d |  | Tulasi | 16h |  | 96 |  |  |
| 21 | 1.5.2 | Leveling |  | 2d | 2012-04-04 | 2012-04-05 | 20 |  |  | 2012-04-04 | 2012-04-05 | 2d | 41d | 0d |  | Tulasi | 16h |  | 96 |  |  |
| 22 | 1.5.3 | Digging |  | 1d | 2012-04-06 | 2012-04-06 | 21 |  |  | 2012-04-06 | 2012-04-06 | 1d | 41d | 0d |  | Tulasi | 8h |  | 48 |  |  |
| 23 | 1.5.4 | Planting |  | 7d | 2012-04-09 | 2012-04-18 | 22 |  |  | 2012-04-09 | 2012-04-18 | 7d | 41d |  |  | Tulasi | 56h |  | 336 |  |  |
| 24 | 1.6 | **Parking Lots** |  | 42d | 2012-04-02 | 2012-05-31 |  |  |  | 2012-04-02 | 2012-05-30 | 41d | 11d |  |  |  | 120h |  | 320 |  | Uday2 |
| 25 | 1.6.1 | Layout |  | 2d | 2012-04-02 | 2012-04-03 | 8 |  |  | 2012-04-02 | 2012-04-03 | 2d | 51d |  | start no earlier than 2012-04-02 | Pranan | 16h |  | 112 |  |  |
| 26 | 1.6.2 | Construction |  | 10d | 2012-05-18 | 2012-05-31 | 27 |  |  | 2012-05-17 | 2012-05-30 | 10d | 11d |  |  | Uday2 | 80h |  | 160 |  |  |
| 27 | 1.6.3 | Marking |  | 3d | 2012-05-15 | 2012-05-17 | 28 |  |  | 2012-05-14 | 2012-05-16 | 3d | 11d | 0d |  | Uday2 | 24h |  | 48 |  |  |

Notes:
- 3: fasdf asdfd asdsdf asdf asdfasd f asdsf asd f asdf asd f asdfd sadfas df asd f sad f sdf sdf asdf asdf a sdf sad f asd f sdd f asdf asdf asdffa

| ID | WBS | Task | Duration | Start | Finish | Predecessors | Baseline start | Baseline finish | Baseline duration | Total slack | Free slack | Constraint | Resources | Work | Cost | Text1 |
| --- | --- | --- | --- | --- | --- | --- | --- | --- | --- | --- | --- | --- | --- | --- | --- | --- |
| 28 | 1.7 | **Plumbing & Water supply** | 29d | 2012-04-02 | 2012-05-14 |  | 2012-03-30 | 2012-05-11 | 29d | 11d | 0d |  |  | 360h | 2,928 | Vinay |
| 29 | 1.7.1 | **Layout Design** | 16d | 2012-04-02 | 2012-04-24 |  | 2012-03-30 | 2012-04-23 | 16d | 11d |  |  | Vinay | 256h | 2,096 |  |
| 30 | 1.7.1.1 | Making Layout- Ist Draft | 2d | 2012-04-02 | 2012-04-03 | 3 | 2012-03-30 | 2012-04-02 | 2d | 11d | 0d | start no earlier than 2012-03-30 | Kamakshi | 16h | 176 |  |
| 31 | 1.7.1.2 | Review 1st Draft | 5d | 2012-04-04 | 2012-04-10 | 30 | 2012-04-03 | 2012-04-09 | 5d | 11d | 0d |  | Vinay | 40h | 320 |  |
| 32 | 1.7.1.3 | Incorporate Changes | 5d | 2012-04-11 | 2012-04-18 | 31 | 2012-04-10 | 2012-04-17 | 5d | 11d | 0d |  | Vinay | 40h | 320 |  |
| 33 | 1.7.1.4 | Extra Review & Change Incorpation | 4d | 2012-04-19 | 2012-04-24 | 32 | 2012-04-18 | 2012-04-23 | 4d | 11d | 0d |  | Vinay | 32h | 256 |  |
| 34 | 1.7.2 | Construction | 10d | 2012-04-25 | 2012-05-09 | 33 | 2012-04-24 | 2012-05-08 | 10d | 11d | 0d |  | Vinay | 80h | 640 |  |
| 35 | 1.7.3 | Fitting | 3d | 2012-05-10 | 2012-05-14 | 34 | 2012-05-09 | 2012-05-11 | 3d | 11d |  |  | Vinay | 24h | 192 |  |
| 36 | 1.8 | **Power Connection/ Elec Appliances** | 12d | 2012-03-29 | 2012-04-16 |  | 2012-03-29 | 2012-04-16 | 12d | 43d |  |  |  | 96h | 960 | Unni |
| 37 | 1.8.1 | Electricity Approval | 3d | 2012-03-29 | 2012-04-02 | 9 | 2012-03-29 | 2012-04-02 | 3d | 43d | 0d |  | Unni | 24h | 240 |  |
| 38 | 1.8.2 | Layout Design- Power | 2d | 2012-04-03 | 2012-04-04 | 37 | 2012-04-03 | 2012-04-04 | 2d | 43d | 0d |  | Unni | 16h | 160 |  |
| 39 | 1.8.3 | Wiring | 2d | 2012-04-05 | 2012-04-06 | 38 | 2012-04-05 | 2012-04-06 | 2d | 43d | 0d |  | Unni | 16h | 160 |  |
| 40 | 1.8.4 | Fitting | 5d | 2012-04-09 | 2012-04-16 | 39 | 2012-04-09 | 2012-04-16 | 5d | 43d |  |  | Unni | 40h | 400 |  |
| 41 | 1.9 | **Security Systems** | 55d | 2012-03-29 | 2012-06-15 |  | 2012-03-29 | 2012-06-15 | 55d | 0d |  |  |  | 544h | 1,448 | Uday2 |
| 42 | 1.9.1 | Layout Security | 3d | 2012-03-29 | 2012-04-02 | 9 | 2012-03-29 | 2012-04-02 | 3d | 32d | 0d |  | Uday2 | 24h | 48 |  |
| 43 | 1.9.2 | Fire Alarms | 20d | 2012-04-03 | 2012-05-02 | 42 | 2012-04-03 | 2012-05-02 | 20d | 32d |  |  | Uday2 | 160h | 320 |  |
| 44 | 1.9.3 | CCTV | 15d | 2012-04-02 | 2012-04-23 | 9 | 2012-04-02 | 2012-04-23 | 15d | 0d |  | start no earlier than 2012-04-02 | Sachin | 120h | 360 |  |
| 45 | 1.9.4 | Recording Systems | 30d | 2012-04-24 | 2012-06-15 | 44 | 2012-04-24 | 2012-06-15 | 30d | 0d |  | start no earlier than 2012-04-24 | Sachin | 240h | 720 |  |
| 46 | 1.10 | **Interior** | 7d | 2012-05-10 | 2012-05-18 |  | 2012-05-09 | 2012-05-17 | 7d | 20d |  |  |  | 56h | 616 | Kamakshi |
| 47 | 1.10.1 | Modular Kitchen | 7d | 2012-05-10 | 2012-05-18 | 34 | 2012-05-09 | 2012-05-17 | 7d | 20d |  |  | Kamakshi | 56h | 616 |  |
| 48 | 1.11 | **Construction** | 30d | 2012-04-02 | 2012-05-15 |  | 2012-03-30 | 2012-05-14 | 30d | 3.5d |  |  |  | 352h | 10,164 | Veermani |
| 49 | 1.11.1 | **Foundation** | 14d | 2012-04-02 | 2012-04-20 |  | 2012-03-30 | 2012-04-19 | 14d | 3.5d |  |  |  | 224h | 7,092 |  |
| 50 | 1.11.1.1 | Exacavation | 5d | 2012-04-02 | 2012-04-06 | 3 | 2012-03-30 | 2012-04-05 | 5d | 3.5d | 0d |  | Veeramani; Vinay; JCB Machine | 120h | 1,560 |  |
| 51 | 1.11.1.2 | Steel work | 3d | 2012-04-09 | 2012-04-11 | 50 | 2012-04-06 | 2012-04-10 | 3d | 3.5d | 0d | start no earlier than 2012-04-06 | Steel [20 Tons]; Pranan | 24h | 4,168 |  |
| 52 | 1.11.1.3 | Shuttering | 4d | 2012-04-12 | 2012-04-18 | 51 | 2012-04-11 | 2012-04-17 | 4d | 3.5d | 0d | start no earlier than 2012-04-11 | Wood [1 Cubic]; Pranan; HandTools | 64h | 980 |  |
| 53 | 1.11.1.4 | RCC | 2d | 2012-04-19 | 2012-04-20 | 52 | 2012-04-18 | 2012-04-19 | 2d | 3.5d | 0d |  | Veermani | 16h | 384 |  |
| 54 | 1.11.2 | Slabs | 1d | 2012-04-23 | 2012-04-23 | 53 | 2012-04-20 | 2012-04-20 | 1d | 3.5d | 0d |  | Veermani | 8h | 192 |  |
| 55 | 1.11.3 | Brick Work | 15d | 2012-04-24 | 2012-05-15 | 54 | 2012-04-23 | 2012-05-14 | 15d | 3.5d | 0d |  | Veermani | 120h | 2,880 |  |

| ID | WBS | Task | Duration | Start | Finish | Predecessors | Baseline start | Baseline finish | Baseline duration | Total slack | Free slack | Resources | Work | Cost | Text1 |
| --- | --- | --- | --- | --- | --- | --- | --- | --- | --- | --- | --- | --- | --- | --- | --- |
| 56 | 1.12 | **Wood & Glass work** | 9d | 2012-05-16 | 2012-05-28 |  | 2012-05-15 | 2012-05-25 | 9d | 3.5d |  |  | 72h | 1,800 | Prananathan |
| 57 | 1.12.1 | Making Furniture | 5d | 2012-05-16 | 2012-05-22 | 55 | 2012-05-15 | 2012-05-21 | 5d | 3.5d | 0d | Prananathan | 40h | 1,000 |  |
| 58 | 1.12.2 | Making Doors/Windows | 3d | 2012-05-23 | 2012-05-25 | 57 | 2012-05-22 | 2012-05-24 | 3d | 3.5d | 0d | Prananathan | 24h | 600 |  |
| 59 | 1.12.3 | Fitting | 1d | 2012-05-28 | 2012-05-28 | 58 | 2012-05-25 | 2012-05-25 | 1d | 3.5d | 0d | Prananathan | 8h | 200 |  |
| 60 | 1.13 | **Painting** | 10.5d | 2012-05-29 | 2012-06-12 |  | 2012-05-28 | 2012-06-11 | 10.5d | 3.5d |  |  | 112h | 2,800 | Prananathan |
| 61 | 1.13.1 | Wood Paiting | 3.5d | 2012-05-29 | 2012-06-01 | 59 | 2012-05-28 | 2012-05-31 | 3.5d | 3.5d | 0d | Prananathan [200%] | 56h | 1,400 |  |
| 62 | 1.13.2 | Wall Painting | 2d | 2012-06-01 | 2012-06-05 | 61 | 2012-05-31 | 2012-06-04 | 2d | 3.5d | 0d | Prananathan | 16h | 400 |  |
| 63 | 1.13.3 | External Painting | 3d | 2012-06-05 | 2012-06-08 | 62 | 2012-06-04 | 2012-06-07 | 3d | 3.5d | 0d | Prananathan | 24h | 600 |  |
| 64 | 1.13.4 | Roof Painting | 2d | 2012-06-08 | 2012-06-12 | 63 | 2012-06-07 | 2012-06-11 | 2d | 3.5d |  | Prananathan | 16h | 400 |  |
